# Finish Line

Schedule from MS Project, 2005-01-24 to 2005-03-28, A marks actual dates.
GSC GameWorld

## Calendars

- Стандартный: Mon-Fri 10:00-13:00, 14:00-19:00; Sat 11:00-13:00, 14:00-20:00; Sun off.

## Resources

| Resource |
| --- |
| Руслан, Рома |
| Руслан, Коан |
| Чугай, Рома |
| Змей, Рома |
| Джим, Угрюмый |
| Сидорович, Маст Дай |
| Чугай, Лестат |
| Rainbow, |
| Rainbow, Ефимов Владимир |
| Веня |
| Rainbow |
| Рома |
| Рома, Змей |
| Коан, Руслан |
| Маст Дай, Сидорович |
| Лестат, Чугай |
| Dima |
| Partizan |
| Sidorovich |
| Mustdie |
| Змей |
| Сидорович |
| Shyshkin |
| Вова |
| Шишкин |
| Руслан |
| PROF |
| Угрюмый |
| Andy |

## Schedule

| ID | WBS | Task | Duration | Start | Finish | Predecessors | Total slack | Free slack | Resources | Work |
| --- | --- | --- | --- | --- | --- | --- | --- | --- | --- | --- |
| 2 | 1 | **01_Escape** | 9d? | 2005-01-24 | 2005-02-02 |  | 46d |  | Руслан, Рома | 112h |
| 3 | 1.1 | **LevelDesign** | 9d? | 2005-01-24 | 2005-02-02 |  | 46d |  |  |  |
| 4 | 1.1.1 | **Stage 1** | 9d? | 2005-01-24 | 2005-02-02 |  | 46d |  |  |  |
| 5 | 1.1.1.1 | List of Changes | 2d | 2005-01-24 | 2005-01-25 |  | 46d | 0d |  |  |
| 6 | 1.1.1.2 | Changed Geometry | 1d? | 2005-01-26 | 2005-01-26 | 5 | 46d | 0d |  |  |
| 7 | 1.1.1.3 | Check List 1 | 1d? | 2005-01-27 | 2005-01-27 | 6 | 46d | 0d |  |  |
| 8 | 1.1.1.4 | Check List 2 | 1d? | 2005-01-28 | 2005-01-28 | 7 | 46d | 0d |  |  |
| 9 | 1.1.1.5 | Check List 3 | 1d? | 2005-01-29 | 2005-01-29 | 8 | 46d | 0d |  |  |
| 10 | 1.1.1.6 | Check List 4 | 1d? | 2005-01-31 | 2005-01-31 | 9 | 46d | 0d |  |  |
| 11 | 1.1.1.7 | Render Geometry | 1d? | 2005-02-01 | 2005-02-01 | 10 | 46d | 0d |  |  |
| 12 | 1.1.1.8 | Grass | 1d? | 2005-02-02 | 2005-02-02 | 11 | 46d |  |  |  |
| 14 | 1.2 | **GameDesign** | 3d? | 2005-01-24 | 2005-01-26 |  | 52d |  |  |  |
| 15 | 1.2.1 | AI Maps/Graphs | 1d? | 2005-01-24 | 2005-01-24 |  | 54d |  |  |  |
| 16 | 1.2.2 | **Secrets** | 3d? | 2005-01-24 | 2005-01-26 |  | 52d |  |  |  |
| 17 | 1.2.2.1 | **Stage 1** | 3d? | 2005-01-24 | 2005-01-26 |  | 52d |  |  |  |
| 18 | 1.2.2.1.1 | Design | 1d? | 2005-01-24 | 2005-01-24 |  | 52d | 0d |  |  |
| 19 | 1.2.2.1.2 | Implementation | 1d? | 2005-01-25 | 2005-01-25 | 18 | 52d | 0d |  |  |
| 20 | 1.2.2.1.3 | Tuning | 1d? | 2005-01-26 | 2005-01-26 | 19 | 52d |  |  |  |
| 21 | 1.2.3 | **Smartterrains** | 3d? | 2005-01-24 | 2005-01-26 |  | 52d |  |  |  |
| 22 | 1.2.3.1 | **Stage 1** | 3d? | 2005-01-24 | 2005-01-26 |  | 52d |  |  |  |
| 23 | 1.2.3.1.1 | Design | 1d? | 2005-01-24 | 2005-01-24 |  | 52d | 0d |  |  |
| 24 | 1.2.3.1.2 | Implementation | 1d? | 2005-01-25 | 2005-01-25 | 23 | 52d | 0d |  |  |
| 25 | 1.2.3.1.3 | Tuning | 1d? | 2005-01-26 | 2005-01-26 | 24 | 52d |  |  |  |
| 26 | 1.2.4 | **Monsters/Spawns** | 3d? | 2005-01-24 | 2005-01-26 |  | 52d |  |  |  |
| 27 | 1.2.4.1 | **Stage 1** | 3d? | 2005-01-24 | 2005-01-26 |  | 52d |  |  |  |
| 28 | 1.2.4.1.1 | Design | 1d? | 2005-01-24 | 2005-01-24 |  | 52d | 0d |  |  |
| 29 | 1.2.4.1.2 | Implementation | 1d? | 2005-01-25 | 2005-01-25 | 28 | 52d | 0d |  |  |
| 30 | 1.2.4.1.3 | Tuning | 1d? | 2005-01-26 | 2005-01-26 | 29 | 52d |  |  |  |

| ID | WBS | Task | Duration | Start | Finish | Predecessors | Total slack | Free slack | Resources | Work |
| --- | --- | --- | --- | --- | --- | --- | --- | --- | --- | --- |
| 31 | 1.2.5 | **Stalkers/Spawns** | 3d? | 2005-01-24 | 2005-01-26 |  | 52d |  |  |  |
| 32 | 1.2.5.1 | **Stage 1** | 3d? | 2005-01-24 | 2005-01-26 |  | 52d |  |  |  |
| 33 | 1.2.5.1.1 | Design | 1d? | 2005-01-24 | 2005-01-24 |  | 52d | 0d |  |  |
| 34 | 1.2.5.1.2 | Implementation | 1d? | 2005-01-25 | 2005-01-25 | 33 | 52d | 0d |  |  |
| 35 | 1.2.5.1.3 | Tuning | 1d? | 2005-01-26 | 2005-01-26 | 34 | 52d |  |  |  |
| 36 | 1.2.6 | **Anomalies/Spawns** | 3d? | 2005-01-24 | 2005-01-26 |  | 52d |  |  |  |
| 37 | 1.2.6.1 | **Stage 1** | 3d? | 2005-01-24 | 2005-01-26 |  | 52d |  |  |  |
| 38 | 1.2.6.1.1 | Design | 1d? | 2005-01-24 | 2005-01-24 |  | 52d | 0d |  |  |
| 39 | 1.2.6.1.2 | Implementation | 1d? | 2005-01-25 | 2005-01-25 | 38 | 52d | 0d |  |  |
| 40 | 1.2.6.1.3 | Tuning | 1d? | 2005-01-26 | 2005-01-26 | 39 | 52d |  |  |  |
| 41 | 1.2.7 | **Physicks** | 3d? | 2005-01-24 | 2005-01-26 |  | 52d |  |  |  |
| 42 | 1.2.7.1 | **Stage 1** | 3d? | 2005-01-24 | 2005-01-26 |  | 52d |  |  |  |
| 43 | 1.2.7.1.1 | Design | 1d? | 2005-01-24 | 2005-01-24 |  | 52d | 0d |  |  |
| 44 | 1.2.7.1.2 | Implementation | 1d? | 2005-01-25 | 2005-01-25 | 43 | 52d | 0d |  |  |
| 45 | 1.2.7.1.3 | Tuning | 1d? | 2005-01-26 | 2005-01-26 | 44 | 52d |  |  |  |
| 47 | 1.3 | **Scripts** | 3d? | 2005-01-24 | 2005-01-26 |  | 52d |  |  | 40h |
| 48 | 1.3.1 | Сценарий (текст) | 1d? | 2005-01-24 | 2005-01-24 |  | 54d |  |  |  |
| 49 | 1.3.2 | **Сцена 1 - Плоть рядом с аномалией** | 3d? | 2005-01-24 | 2005-01-26 |  | 52d |  |  | 16h |
| 50 | 1.3.2.1 | Постановка задач | 1d? | 2005-01-24 | 2005-01-24 |  | 52d | 0d |  |  |
| 51 | 1.3.2.2 | **Реализация** | 1d? | 2005-01-25 | 2005-01-25 | 50 | 52d |  |  | 8h |
| 52 | 1.3.2.2.1 | Доработка X в движке | 1d? | 2005-01-25 | 2005-01-25 |  | 52d | 0d | Dima | 8h |
| 53 | 1.3.2.3 | **Тестирование** | 1d? | 2005-01-26 | 2005-01-26 | 52 | 52d |  |  | 8h |
| 54 | 1.3.2.3.1 | Проверить расстановку AI нод вокруг дерева | 1d? | 2005-01-26 | 2005-01-26 |  | 52d |  | Partizan | 8h |
| 55 | 1.3.3 | **Сцена 2 - Кабаны играют в футбол** | 3d? | 2005-01-24 | 2005-01-26 |  | 52d |  |  | 24h |
| 56 | 1.3.3.1 | Постановка задач | 1d? | 2005-01-24 | 2005-01-24 |  | 52d | 0d |  |  |

Notes:
- 56: Два кабана по очереди пинают труп, стараясь не выходить далеко за пределы указанной на уровне зоны. При появлении игрока атакуют его.

| ID | WBS | Task | Duration | Start | Finish | Predecessors | Total slack | Free slack | Resources | Work |
| --- | --- | --- | --- | --- | --- | --- | --- | --- | --- | --- |
| 57 | 1.3.3.2 | **Реализация** | 1d? | 2005-01-25 | 2005-01-25 | 56 | 52d |  |  | 16h |
| 58 | 1.3.3.2.1 | Написать схему mob_kicker | 1d? | 2005-01-25 | 2005-01-25 |  | 52d | 0d | Сидорович | 8h |
| 59 | 1.3.3.2.2 | Установить и настроить схему на Escape | 1d? | 2005-01-25 | 2005-01-25 |  | 53d |  | Mustdie | 8h |
| 60 | 1.3.3.3 | **Тестирование** | 1d? | 2005-01-26 | 2005-01-26 | 58 | 52d |  |  | 8h |
| 61 | 1.3.3.3.1 | Отсутствие визуальных дефектов | 1d? | 2005-01-26 | 2005-01-26 |  | 52d |  | Partizan | 8h |
| 63 | 2 | **02_Garbage** | 11d? | 2005-01-24 | 2005-02-04 |  | 44d |  | Руслан, Коан | 88h |
| 64 | 2.1 | **LevelDesign** | 11d? | 2005-01-24 | 2005-02-04 |  | 44d |  |  |  |
| 65 | 2.1.1 | **Stage 1** | 11d? | 2005-01-24 | 2005-02-04 |  | 44d |  |  |  |
| 66 | 2.1.1.1 | List of Changes | 2d | 2005-01-24 | 2005-01-25 |  | 44d | 0d |  |  |
| 67 | 2.1.1.2 | Changed Geometry | 1d? | 2005-01-26 | 2005-01-26 | 66 | 44d | 0d |  |  |
| 68 | 2.1.1.3 | Check List 1 | 1d? | 2005-01-27 | 2005-01-27 | 67 | 44d | 0d |  |  |
| 69 | 2.1.1.4 | Check List 2 | 1d? | 2005-01-28 | 2005-01-28 | 68 | 44d | 0d |  |  |
| 70 | 2.1.1.5 | Check List 3 | 1d? | 2005-01-29 | 2005-01-29 | 69 | 44d | 0d |  |  |
| 71 | 2.1.1.6 | Check List 4 | 1d? | 2005-01-31 | 2005-01-31 | 70 | 44d | 0d |  |  |
| 72 | 2.1.1.7 | Render Geometry | 1d? | 2005-02-01 | 2005-02-01 | 71 | 44d | 0d |  |  |
| 73 | 2.1.1.8 | Grass | 1d? | 2005-02-02 | 2005-02-02 | 72 | 44d | 0d |  |  |
| 74 | 2.1.1.9 | AI Maps | 1d? | 2005-02-03 | 2005-02-03 | 73 | 44d | 0d |  |  |
| 75 | 2.1.1.10 | Graphs | 1d? | 2005-02-04 | 2005-02-04 | 74 | 44d |  |  |  |
| 77 | 2.2 | **GameDesign** | 3d? | 2005-01-24 | 2005-01-26 |  | 52d |  |  |  |
| 78 | 2.2.1 | **Secrets** | 3d? | 2005-01-24 | 2005-01-26 |  | 52d |  |  |  |
| 79 | 2.2.1.1 | **Stage 1** | 3d? | 2005-01-24 | 2005-01-26 |  | 52d |  |  |  |
| 80 | 2.2.1.1.1 | Design | 1d? | 2005-01-24 | 2005-01-24 |  | 52d | 0d |  |  |
| 81 | 2.2.1.1.2 | Implementation | 1d? | 2005-01-25 | 2005-01-25 | 80 | 52d | 0d |  |  |
| 82 | 2.2.1.1.3 | Tuning | 1d? | 2005-01-26 | 2005-01-26 | 81 | 52d |  |  |  |

| ID | WBS | Task | Duration | Start | Finish | Predecessors | Total slack | Free slack |
| --- | --- | --- | --- | --- | --- | --- | --- | --- |
| 83 | 2.2.2 | **Smartterrains** | 3d? | 2005-01-24 | 2005-01-26 |  | 52d |  |
| 84 | 2.2.2.1 | **Stage 1** | 3d? | 2005-01-24 | 2005-01-26 |  | 52d |  |
| 85 | 2.2.2.1.1 | Design | 1d? | 2005-01-24 | 2005-01-24 |  | 52d | 0d |
| 86 | 2.2.2.1.2 | Implementation | 1d? | 2005-01-25 | 2005-01-25 | 85 | 52d | 0d |
| 87 | 2.2.2.1.3 | Tuning | 1d? | 2005-01-26 | 2005-01-26 | 86 | 52d |  |
| 88 | 2.2.3 | **Monsters/Spawns** | 3d? | 2005-01-24 | 2005-01-26 |  | 52d |  |
| 89 | 2.2.3.1 | **Stage 1** | 3d? | 2005-01-24 | 2005-01-26 |  | 52d |  |
| 90 | 2.2.3.1.1 | Design | 1d? | 2005-01-24 | 2005-01-24 |  | 52d | 0d |
| 91 | 2.2.3.1.2 | Implementation | 1d? | 2005-01-25 | 2005-01-25 | 90 | 52d | 0d |
| 92 | 2.2.3.1.3 | Tuning | 1d? | 2005-01-26 | 2005-01-26 | 91 | 52d |  |
| 93 | 2.2.4 | **Stalkers/Spawns** | 3d? | 2005-01-24 | 2005-01-26 |  | 52d |  |
| 94 | 2.2.4.1 | **Stage 1** | 3d? | 2005-01-24 | 2005-01-26 |  | 52d |  |
| 95 | 2.2.4.1.1 | Design | 1d? | 2005-01-24 | 2005-01-24 |  | 52d | 0d |
| 96 | 2.2.4.1.2 | Implementation | 1d? | 2005-01-25 | 2005-01-25 | 95 | 52d | 0d |
| 97 | 2.2.4.1.3 | Tuning | 1d? | 2005-01-26 | 2005-01-26 | 96 | 52d |  |
| 98 | 2.2.5 | **Anomalies/Spawns** | 3d? | 2005-01-24 | 2005-01-26 |  | 52d |  |
| 99 | 2.2.5.1 | **Stage 1** | 3d? | 2005-01-24 | 2005-01-26 |  | 52d |  |
| 100 | 2.2.5.1.1 | Design | 1d? | 2005-01-24 | 2005-01-24 |  | 52d | 0d |
| 101 | 2.2.5.1.2 | Implementation | 1d? | 2005-01-25 | 2005-01-25 | 100 | 52d | 0d |
| 102 | 2.2.5.1.3 | Tuning | 1d? | 2005-01-26 | 2005-01-26 | 101 | 52d |  |
| 103 | 2.2.6 | **Physicks** | 3d? | 2005-01-24 | 2005-01-26 |  | 52d |  |
| 104 | 2.2.6.1 | **Stage 1** | 3d? | 2005-01-24 | 2005-01-26 |  | 52d |  |
| 105 | 2.2.6.1.1 | Design | 1d? | 2005-01-24 | 2005-01-24 |  | 52d | 0d |
| 106 | 2.2.6.1.2 | Implementation | 1d? | 2005-01-25 | 2005-01-25 | 105 | 52d | 0d |
| 107 | 2.2.6.1.3 | Tuning | 1d? | 2005-01-26 | 2005-01-26 | 106 | 52d |  |

| ID | WBS | Task | Duration | Start | Finish | Predecessors | Total slack | Free slack |
| --- | --- | --- | --- | --- | --- | --- | --- | --- |
| 109 | 2.3 | **Scripts** | 5d? | 2005-01-24 | 2005-01-28 |  | 50d |  |
| 110 | 2.3.1 | **Script 1** | 5d? | 2005-01-24 | 2005-01-28 |  | 50d |  |
| 111 | 2.3.1.1 | Scenario(text) | 1d? | 2005-01-24 | 2005-01-24 |  | 50d | 0d |
| 112 | 2.3.1.2 | Постановка задач | 1d? | 2005-01-25 | 2005-01-25 | 111 | 50d | 0d |
| 113 | 2.3.1.3 | Implimentation | 1d? | 2005-01-26 | 2005-01-26 | 112 | 50d | 0d |
| 114 | 2.3.1.4 | Dilogs/VO/Icons/Objects/Animations | 1d? | 2005-01-27 | 2005-01-27 | 113 | 50d | 0d |
| 115 | 2.3.1.5 | Настройка | 1d? | 2005-01-28 | 2005-01-28 | 114 | 50d |  |
| 116 | 2.3.2 | **Script 2** | 5d? | 2005-01-24 | 2005-01-28 |  | 50d |  |
| 117 | 2.3.2.1 | Scenario(text) | 1d? | 2005-01-24 | 2005-01-24 |  | 50d | 0d |
| 118 | 2.3.2.2 | Постановка задач | 1d? | 2005-01-25 | 2005-01-25 | 117 | 50d | 0d |
| 119 | 2.3.2.3 | Implimentation | 1d? | 2005-01-26 | 2005-01-26 | 118 | 50d | 0d |
| 120 | 2.3.2.4 | Dilogs/VO/Icons/Objects/Animations | 1d? | 2005-01-27 | 2005-01-27 | 119 | 50d | 0d |
| 121 | 2.3.2.5 | Настройка | 1d? | 2005-01-28 | 2005-01-28 | 120 | 50d |  |
| 122 | 2.3.3 | **Script 3** | 5d? | 2005-01-24 | 2005-01-28 |  | 50d |  |
| 123 | 2.3.3.1 | Scenario(text) | 1d? | 2005-01-24 | 2005-01-24 |  | 50d | 0d |
| 124 | 2.3.3.2 | Постановка задач | 1d? | 2005-01-25 | 2005-01-25 | 123 | 50d | 0d |
| 125 | 2.3.3.3 | Implimentation | 1d? | 2005-01-26 | 2005-01-26 | 124 | 50d | 0d |
| 126 | 2.3.3.4 | Dilogs/VO/Icons/Objects/Animations | 1d? | 2005-01-27 | 2005-01-27 | 125 | 50d | 0d |
| 127 | 2.3.3.5 | Настройка | 1d? | 2005-01-28 | 2005-01-28 | 126 | 50d |  |
| 128 | 2.3.4 | **Script 4** | 5d? | 2005-01-24 | 2005-01-28 |  | 50d |  |
| 129 | 2.3.4.1 | Scenario(text) | 1d? | 2005-01-24 | 2005-01-24 |  | 50d | 0d |
| 130 | 2.3.4.2 | Постановка задач | 1d? | 2005-01-25 | 2005-01-25 | 129 | 50d | 0d |
| 131 | 2.3.4.3 | Implimentation | 1d? | 2005-01-26 | 2005-01-26 | 130 | 50d | 0d |
| 132 | 2.3.4.4 | Dilogs/VO/Icons/Objects/Animations | 1d? | 2005-01-27 | 2005-01-27 | 131 | 50d | 0d |
| 133 | 2.3.4.5 | Настройка | 1d? | 2005-01-28 | 2005-01-28 | 132 | 50d |  |

| ID | WBS | Task | Duration | Start | Finish | Predecessors | Total slack | Free slack | Resources | Work |
| --- | --- | --- | --- | --- | --- | --- | --- | --- | --- | --- |
| 134 | 2.3.5 | **Script 5** | 5d? | 2005-01-24 | 2005-01-28 |  | 50d |  |  |  |
| 135 | 2.3.5.1 | Scenario(text) | 1d? | 2005-01-24 | 2005-01-24 |  | 50d | 0d |  |  |
| 136 | 2.3.5.2 | Постановка задач | 1d? | 2005-01-25 | 2005-01-25 | 135 | 50d | 0d |  |  |
| 137 | 2.3.5.3 | Implimentation | 1d? | 2005-01-26 | 2005-01-26 | 136 | 50d | 0d |  |  |
| 138 | 2.3.5.4 | Dilogs/VO/Icons/Objects/Animations | 1d? | 2005-01-27 | 2005-01-27 | 137 | 50d | 0d |  |  |
| 139 | 2.3.5.5 | Настройка | 1d? | 2005-01-28 | 2005-01-28 | 138 | 50d |  |  |  |
| 141 | 3 | **03_Agroprom** | 11d? | 2005-01-24 | 2005-02-04 |  | 44d |  | Чугай, Рома | 88h |
| 142 | 3.1 | **LevelDesign** | 11d? | 2005-01-24 | 2005-02-04 |  | 44d |  |  |  |
| 143 | 3.1.1 | **Stage 1** | 11d? | 2005-01-24 | 2005-02-04 |  | 44d |  |  |  |
| 144 | 3.1.1.1 | List of Changes | 2d | 2005-01-24 | 2005-01-25 |  | 44d | 0d |  |  |
| 145 | 3.1.1.2 | Changed Geometry | 1d? | 2005-01-26 | 2005-01-26 | 144 | 44d | 0d |  |  |
| 146 | 3.1.1.3 | Check List 1 | 1d? | 2005-01-27 | 2005-01-27 | 145 | 44d | 0d |  |  |
| 147 | 3.1.1.4 | Check List 2 | 1d? | 2005-01-28 | 2005-01-28 | 146 | 44d | 0d |  |  |
| 148 | 3.1.1.5 | Check List 3 | 1d? | 2005-01-29 | 2005-01-29 | 147 | 44d | 0d |  |  |
| 149 | 3.1.1.6 | Check List 4 | 1d? | 2005-01-31 | 2005-01-31 | 148 | 44d | 0d |  |  |
| 150 | 3.1.1.7 | Render Geometry | 1d? | 2005-02-01 | 2005-02-01 | 149 | 44d | 0d |  |  |
| 151 | 3.1.1.8 | Grass | 1d? | 2005-02-02 | 2005-02-02 | 150 | 44d | 0d |  |  |
| 152 | 3.1.1.9 | AI Maps | 1d? | 2005-02-03 | 2005-02-03 | 151 | 44d | 0d |  |  |
| 153 | 3.1.1.10 | Graphs | 1d? | 2005-02-04 | 2005-02-04 | 152 | 44d |  |  |  |
| 155 | 3.2 | **GameDesign** | 3d? | 2005-01-24 | 2005-01-26 |  | 52d |  |  |  |
| 156 | 3.2.1 | **Secrets** | 3d? | 2005-01-24 | 2005-01-26 |  | 52d |  |  |  |
| 157 | 3.2.1.1 | **Stage 1** | 3d? | 2005-01-24 | 2005-01-26 |  | 52d |  |  |  |
| 158 | 3.2.1.1.1 | Design | 1d? | 2005-01-24 | 2005-01-24 |  | 52d | 0d |  |  |
| 159 | 3.2.1.1.2 | Implementation | 1d? | 2005-01-25 | 2005-01-25 | 158 | 52d | 0d |  |  |
| 160 | 3.2.1.1.3 | Tuning | 1d? | 2005-01-26 | 2005-01-26 | 159 | 52d |  |  |  |

| ID | WBS | Task | Duration | Start | Finish | Predecessors | Total slack | Free slack |
| --- | --- | --- | --- | --- | --- | --- | --- | --- |
| 161 | 3.2.2 | **Smartterrains** | 3d? | 2005-01-24 | 2005-01-26 |  | 52d |  |
| 162 | 3.2.2.1 | **Stage 1** | 3d? | 2005-01-24 | 2005-01-26 |  | 52d |  |
| 163 | 3.2.2.1.1 | Design | 1d? | 2005-01-24 | 2005-01-24 |  | 52d | 0d |
| 164 | 3.2.2.1.2 | Implementation | 1d? | 2005-01-25 | 2005-01-25 | 163 | 52d | 0d |
| 165 | 3.2.2.1.3 | Tuning | 1d? | 2005-01-26 | 2005-01-26 | 164 | 52d |  |
| 166 | 3.2.3 | **Monsters/Spawns** | 3d? | 2005-01-24 | 2005-01-26 |  | 52d |  |
| 167 | 3.2.3.1 | **Stage 1** | 3d? | 2005-01-24 | 2005-01-26 |  | 52d |  |
| 168 | 3.2.3.1.1 | Design | 1d? | 2005-01-24 | 2005-01-24 |  | 52d | 0d |
| 169 | 3.2.3.1.2 | Implementation | 1d? | 2005-01-25 | 2005-01-25 | 168 | 52d | 0d |
| 170 | 3.2.3.1.3 | Tuning | 1d? | 2005-01-26 | 2005-01-26 | 169 | 52d |  |
| 171 | 3.2.4 | **Stalkers/Spawns** | 3d? | 2005-01-24 | 2005-01-26 |  | 52d |  |
| 172 | 3.2.4.1 | **Stage 1** | 3d? | 2005-01-24 | 2005-01-26 |  | 52d |  |
| 173 | 3.2.4.1.1 | Design | 1d? | 2005-01-24 | 2005-01-24 |  | 52d | 0d |
| 174 | 3.2.4.1.2 | Implementation | 1d? | 2005-01-25 | 2005-01-25 | 173 | 52d | 0d |
| 175 | 3.2.4.1.3 | Tuning | 1d? | 2005-01-26 | 2005-01-26 | 174 | 52d |  |
| 176 | 3.2.5 | **Anomalies/Spawns** | 3d? | 2005-01-24 | 2005-01-26 |  | 52d |  |
| 177 | 3.2.5.1 | **Stage 1** | 3d? | 2005-01-24 | 2005-01-26 |  | 52d |  |
| 178 | 3.2.5.1.1 | Design | 1d? | 2005-01-24 | 2005-01-24 |  | 52d | 0d |
| 179 | 3.2.5.1.2 | Implementation | 1d? | 2005-01-25 | 2005-01-25 | 178 | 52d | 0d |
| 180 | 3.2.5.1.3 | Tuning | 1d? | 2005-01-26 | 2005-01-26 | 179 | 52d |  |
| 181 | 3.2.6 | **Physicks** | 3d? | 2005-01-24 | 2005-01-26 |  | 52d |  |
| 182 | 3.2.6.1 | **Stage 1** | 3d? | 2005-01-24 | 2005-01-26 |  | 52d |  |
| 183 | 3.2.6.1.1 | Design | 1d? | 2005-01-24 | 2005-01-24 |  | 52d | 0d |
| 184 | 3.2.6.1.2 | Implementation | 1d? | 2005-01-25 | 2005-01-25 | 183 | 52d | 0d |
| 185 | 3.2.6.1.3 | Tuning | 1d? | 2005-01-26 | 2005-01-26 | 184 | 52d |  |

| ID | WBS | Task | Duration | Start | Finish | Predecessors | Total slack | Free slack |
| --- | --- | --- | --- | --- | --- | --- | --- | --- |
| 187 | 3.3 | **Scripts** | 5d? | 2005-01-24 | 2005-01-28 |  | 50d |  |
| 188 | 3.3.1 | **Script 1** | 5d? | 2005-01-24 | 2005-01-28 |  | 50d |  |
| 189 | 3.3.1.1 | Scenario(text) | 1d? | 2005-01-24 | 2005-01-24 |  | 50d | 0d |
| 190 | 3.3.1.2 | Постановка задач | 1d? | 2005-01-25 | 2005-01-25 | 189 | 50d | 0d |
| 191 | 3.3.1.3 | Implimentation | 1d? | 2005-01-26 | 2005-01-26 | 190 | 50d | 0d |
| 192 | 3.3.1.4 | Dilogs/VO/Icons/Objects/Animations | 1d? | 2005-01-27 | 2005-01-27 | 191 | 50d | 0d |
| 193 | 3.3.1.5 | Настройка | 1d? | 2005-01-28 | 2005-01-28 | 192 | 50d |  |
| 194 | 3.3.2 | **Script 2** | 5d? | 2005-01-24 | 2005-01-28 |  | 50d |  |
| 195 | 3.3.2.1 | Scenario(text) | 1d? | 2005-01-24 | 2005-01-24 |  | 50d | 0d |
| 196 | 3.3.2.2 | Постановка задач | 1d? | 2005-01-25 | 2005-01-25 | 195 | 50d | 0d |
| 197 | 3.3.2.3 | Implimentation | 1d? | 2005-01-26 | 2005-01-26 | 196 | 50d | 0d |
| 198 | 3.3.2.4 | Dilogs/VO/Icons/Objects/Animations | 1d? | 2005-01-27 | 2005-01-27 | 197 | 50d | 0d |
| 199 | 3.3.2.5 | Настройка | 1d? | 2005-01-28 | 2005-01-28 | 198 | 50d |  |
| 200 | 3.3.3 | **Script 3** | 5d? | 2005-01-24 | 2005-01-28 |  | 50d |  |
| 201 | 3.3.3.1 | Scenario(text) | 1d? | 2005-01-24 | 2005-01-24 |  | 50d | 0d |
| 202 | 3.3.3.2 | Постановка задач | 1d? | 2005-01-25 | 2005-01-25 | 201 | 50d | 0d |
| 203 | 3.3.3.3 | Implimentation | 1d? | 2005-01-26 | 2005-01-26 | 202 | 50d | 0d |
| 204 | 3.3.3.4 | Dilogs/VO/Icons/Objects/Animations | 1d? | 2005-01-27 | 2005-01-27 | 203 | 50d | 0d |
| 205 | 3.3.3.5 | Настройка | 1d? | 2005-01-28 | 2005-01-28 | 204 | 50d |  |
| 206 | 3.3.4 | **Script 4** | 5d? | 2005-01-24 | 2005-01-28 |  | 50d |  |
| 207 | 3.3.4.1 | Scenario(text) | 1d? | 2005-01-24 | 2005-01-24 |  | 50d | 0d |
| 208 | 3.3.4.2 | Постановка задач | 1d? | 2005-01-25 | 2005-01-25 | 207 | 50d | 0d |
| 209 | 3.3.4.3 | Implimentation | 1d? | 2005-01-26 | 2005-01-26 | 208 | 50d | 0d |
| 210 | 3.3.4.4 | Dilogs/VO/Icons/Objects/Animations | 1d? | 2005-01-27 | 2005-01-27 | 209 | 50d | 0d |
| 211 | 3.3.4.5 | Настройка | 1d? | 2005-01-28 | 2005-01-28 | 210 | 50d |  |

| ID | WBS | Task | Duration | Start | Finish | Predecessors | Total slack | Free slack | Resources | Work |
| --- | --- | --- | --- | --- | --- | --- | --- | --- | --- | --- |
| 212 | 3.3.5 | **Script 5** | 5d? | 2005-01-24 | 2005-01-28 |  | 50d |  |  |  |
| 213 | 3.3.5.1 | Scenario(text) | 1d? | 2005-01-24 | 2005-01-24 |  | 50d | 0d |  |  |
| 214 | 3.3.5.2 | Постановка задач | 1d? | 2005-01-25 | 2005-01-25 | 213 | 50d | 0d |  |  |
| 215 | 3.3.5.3 | Implimentation | 1d? | 2005-01-26 | 2005-01-26 | 214 | 50d | 0d |  |  |
| 216 | 3.3.5.4 | Dilogs/VO/Icons/Objects/Animations | 1d? | 2005-01-27 | 2005-01-27 | 215 | 50d | 0d |  |  |
| 217 | 3.3.5.5 | Настройка | 1d? | 2005-01-28 | 2005-01-28 | 216 | 50d |  |  |  |
| 219 | 4 | **04_Agroprom_Underground** | 11d? | 2005-01-24 | 2005-02-04 |  | 44d |  | Чугай, Рома | 88h |
| 220 | 4.1 | **LevelDesign** | 11d? | 2005-01-24 | 2005-02-04 |  | 44d |  |  |  |
| 221 | 4.1.1 | **Stage 1** | 11d? | 2005-01-24 | 2005-02-04 |  | 44d |  |  |  |
| 222 | 4.1.1.1 | List of Changes | 2d | 2005-01-24 | 2005-01-25 |  | 44d | 0d |  |  |
| 223 | 4.1.1.2 | Changed Geometry | 1d? | 2005-01-26 | 2005-01-26 | 222 | 44d | 0d |  |  |
| 224 | 4.1.1.3 | Check List 1 | 1d? | 2005-01-27 | 2005-01-27 | 223 | 44d | 0d |  |  |
| 225 | 4.1.1.4 | Check List 2 | 1d? | 2005-01-28 | 2005-01-28 | 224 | 44d | 0d |  |  |
| 226 | 4.1.1.5 | Check List 3 | 1d? | 2005-01-29 | 2005-01-29 | 225 | 44d | 0d |  |  |
| 227 | 4.1.1.6 | Check List 4 | 1d? | 2005-01-31 | 2005-01-31 | 226 | 44d | 0d |  |  |
| 228 | 4.1.1.7 | Render Geometry | 1d? | 2005-02-01 | 2005-02-01 | 227 | 44d | 0d |  |  |
| 229 | 4.1.1.8 | Grass | 1d? | 2005-02-02 | 2005-02-02 | 228 | 44d | 0d |  |  |
| 230 | 4.1.1.9 | AI Maps | 1d? | 2005-02-03 | 2005-02-03 | 229 | 44d | 0d |  |  |
| 231 | 4.1.1.10 | Graphs | 1d? | 2005-02-04 | 2005-02-04 | 230 | 44d |  |  |  |
| 233 | 4.2 | **GameDesign** | 3d? | 2005-01-24 | 2005-01-26 |  | 52d |  |  |  |
| 234 | 4.2.1 | **Secrets** | 3d? | 2005-01-24 | 2005-01-26 |  | 52d |  |  |  |
| 235 | 4.2.1.1 | **Stage 1** | 3d? | 2005-01-24 | 2005-01-26 |  | 52d |  |  |  |
| 236 | 4.2.1.1.1 | Design | 1d? | 2005-01-24 | 2005-01-24 |  | 52d | 0d |  |  |
| 237 | 4.2.1.1.2 | Implementation | 1d? | 2005-01-25 | 2005-01-25 | 236 | 52d | 0d |  |  |
| 238 | 4.2.1.1.3 | Tuning | 1d? | 2005-01-26 | 2005-01-26 | 237 | 52d |  |  |  |

| ID | WBS | Task | Duration | Start | Finish | Predecessors | Total slack | Free slack |
| --- | --- | --- | --- | --- | --- | --- | --- | --- |
| 239 | 4.2.2 | **Smartterrains** | 3d? | 2005-01-24 | 2005-01-26 |  | 52d |  |
| 240 | 4.2.2.1 | **Stage 1** | 3d? | 2005-01-24 | 2005-01-26 |  | 52d |  |
| 241 | 4.2.2.1.1 | Design | 1d? | 2005-01-24 | 2005-01-24 |  | 52d | 0d |
| 242 | 4.2.2.1.2 | Implementation | 1d? | 2005-01-25 | 2005-01-25 | 241 | 52d | 0d |
| 243 | 4.2.2.1.3 | Tuning | 1d? | 2005-01-26 | 2005-01-26 | 242 | 52d |  |
| 244 | 4.2.3 | **Monsters/Spawns** | 3d? | 2005-01-24 | 2005-01-26 |  | 52d |  |
| 245 | 4.2.3.1 | **Stage 1** | 3d? | 2005-01-24 | 2005-01-26 |  | 52d |  |
| 246 | 4.2.3.1.1 | Design | 1d? | 2005-01-24 | 2005-01-24 |  | 52d | 0d |
| 247 | 4.2.3.1.2 | Implementation | 1d? | 2005-01-25 | 2005-01-25 | 246 | 52d | 0d |
| 248 | 4.2.3.1.3 | Tuning | 1d? | 2005-01-26 | 2005-01-26 | 247 | 52d |  |
| 249 | 4.2.4 | **Stalkers/Spawns** | 3d? | 2005-01-24 | 2005-01-26 |  | 52d |  |
| 250 | 4.2.4.1 | **Stage 1** | 3d? | 2005-01-24 | 2005-01-26 |  | 52d |  |
| 251 | 4.2.4.1.1 | Design | 1d? | 2005-01-24 | 2005-01-24 |  | 52d | 0d |
| 252 | 4.2.4.1.2 | Implementation | 1d? | 2005-01-25 | 2005-01-25 | 251 | 52d | 0d |
| 253 | 4.2.4.1.3 | Tuning | 1d? | 2005-01-26 | 2005-01-26 | 252 | 52d |  |
| 254 | 4.2.5 | **Anomalies/Spawns** | 3d? | 2005-01-24 | 2005-01-26 |  | 52d |  |
| 255 | 4.2.5.1 | **Stage 1** | 3d? | 2005-01-24 | 2005-01-26 |  | 52d |  |
| 256 | 4.2.5.1.1 | Design | 1d? | 2005-01-24 | 2005-01-24 |  | 52d | 0d |
| 257 | 4.2.5.1.2 | Implementation | 1d? | 2005-01-25 | 2005-01-25 | 256 | 52d | 0d |
| 258 | 4.2.5.1.3 | Tuning | 1d? | 2005-01-26 | 2005-01-26 | 257 | 52d |  |
| 259 | 4.2.6 | **Physicks** | 3d? | 2005-01-24 | 2005-01-26 |  | 52d |  |
| 260 | 4.2.6.1 | **Stage 1** | 3d? | 2005-01-24 | 2005-01-26 |  | 52d |  |
| 261 | 4.2.6.1.1 | Design | 1d? | 2005-01-24 | 2005-01-24 |  | 52d | 0d |
| 262 | 4.2.6.1.2 | Implementation | 1d? | 2005-01-25 | 2005-01-25 | 261 | 52d | 0d |
| 263 | 4.2.6.1.3 | Tuning | 1d? | 2005-01-26 | 2005-01-26 | 262 | 52d |  |

| ID | WBS | Task | Duration | Start | Finish | Predecessors | Total slack | Free slack |
| --- | --- | --- | --- | --- | --- | --- | --- | --- |
| 265 | 4.3 | **Scripts** | 5d? | 2005-01-24 | 2005-01-28 |  | 50d |  |
| 266 | 4.3.1 | **Script 1** | 5d? | 2005-01-24 | 2005-01-28 |  | 50d |  |
| 267 | 4.3.1.1 | Scenario(text) | 1d? | 2005-01-24 | 2005-01-24 |  | 50d | 0d |
| 268 | 4.3.1.2 | Постановка задач | 1d? | 2005-01-25 | 2005-01-25 | 267 | 50d | 0d |
| 269 | 4.3.1.3 | Implimentation | 1d? | 2005-01-26 | 2005-01-26 | 268 | 50d | 0d |
| 270 | 4.3.1.4 | Dilogs/VO/Icons/Objects/Animations | 1d? | 2005-01-27 | 2005-01-27 | 269 | 50d | 0d |
| 271 | 4.3.1.5 | Настройка | 1d? | 2005-01-28 | 2005-01-28 | 270 | 50d |  |
| 272 | 4.3.2 | **Script 2** | 5d? | 2005-01-24 | 2005-01-28 |  | 50d |  |
| 273 | 4.3.2.1 | Scenario(text) | 1d? | 2005-01-24 | 2005-01-24 |  | 50d | 0d |
| 274 | 4.3.2.2 | Постановка задач | 1d? | 2005-01-25 | 2005-01-25 | 273 | 50d | 0d |
| 275 | 4.3.2.3 | Implimentation | 1d? | 2005-01-26 | 2005-01-26 | 274 | 50d | 0d |
| 276 | 4.3.2.4 | Dilogs/VO/Icons/Objects/Animations | 1d? | 2005-01-27 | 2005-01-27 | 275 | 50d | 0d |
| 277 | 4.3.2.5 | Настройка | 1d? | 2005-01-28 | 2005-01-28 | 276 | 50d |  |
| 278 | 4.3.3 | **Script 3** | 5d? | 2005-01-24 | 2005-01-28 |  | 50d |  |
| 279 | 4.3.3.1 | Scenario(text) | 1d? | 2005-01-24 | 2005-01-24 |  | 50d | 0d |
| 280 | 4.3.3.2 | Постановка задач | 1d? | 2005-01-25 | 2005-01-25 | 279 | 50d | 0d |
| 281 | 4.3.3.3 | Implimentation | 1d? | 2005-01-26 | 2005-01-26 | 280 | 50d | 0d |
| 282 | 4.3.3.4 | Dilogs/VO/Icons/Objects/Animations | 1d? | 2005-01-27 | 2005-01-27 | 281 | 50d | 0d |
| 283 | 4.3.3.5 | Настройка | 1d? | 2005-01-28 | 2005-01-28 | 282 | 50d |  |
| 284 | 4.3.4 | **Script 4** | 5d? | 2005-01-24 | 2005-01-28 |  | 50d |  |
| 285 | 4.3.4.1 | Scenario(text) | 1d? | 2005-01-24 | 2005-01-24 |  | 50d | 0d |
| 286 | 4.3.4.2 | Постановка задач | 1d? | 2005-01-25 | 2005-01-25 | 285 | 50d | 0d |
| 287 | 4.3.4.3 | Implimentation | 1d? | 2005-01-26 | 2005-01-26 | 286 | 50d | 0d |
| 288 | 4.3.4.4 | Dilogs/VO/Icons/Objects/Animations | 1d? | 2005-01-27 | 2005-01-27 | 287 | 50d | 0d |
| 289 | 4.3.4.5 | Настройка | 1d? | 2005-01-28 | 2005-01-28 | 288 | 50d |  |

| ID | WBS | Task | Duration | Start | Finish | Predecessors | Complete | Remaining | Total slack | Free slack | Constraint | Deadline | Resources | Work | Actual work |
| --- | --- | --- | --- | --- | --- | --- | --- | --- | --- | --- | --- | --- | --- | --- | --- |
| 290 | 4.3.5 | **Script 5** | 5d? | 2005-01-24 | 2005-01-28 |  |  |  | 50d |  |  |  |  |  |  |
| 291 | 4.3.5.1 | Scenario(text) | 1d? | 2005-01-24 | 2005-01-24 |  |  |  | 50d | 0d |  |  |  |  |  |
| 292 | 4.3.5.2 | Постановка задач | 1d? | 2005-01-25 | 2005-01-25 | 291 |  |  | 50d | 0d |  |  |  |  |  |
| 293 | 4.3.5.3 | Implimentation | 1d? | 2005-01-26 | 2005-01-26 | 292 |  |  | 50d | 0d |  |  |  |  |  |
| 294 | 4.3.5.4 | Dilogs/VO/Icons/Objects/Animations | 1d? | 2005-01-27 | 2005-01-27 | 293 |  |  | 50d | 0d |  |  |  |  |  |
| 295 | 4.3.5.5 | Настройка | 1d? | 2005-01-28 | 2005-01-28 | 294 |  |  | 50d |  |  |  |  |  |  |
| 301 | 5 | **05_Dark_Valley** | 29.88d? | 2005-01-24 A | 2005-02-26 |  | 3% | 29d? | -9d | 0d |  | 2005-03-01 | Рома, Змей | 1088h | 38.02h |
| 302 | 5.1 | **LevelDesign** | 11d? | 2005-01-24 | 2005-02-04 |  |  |  | 1.88d |  |  | 2005-02-07 | Rainbow, Ефимов Владимир | 88h |  |
| 303 | 5.1.1 | **Stage 1** | 11d? | 2005-01-24 | 2005-02-04 |  |  |  | 1.88d |  |  |  |  |  |  |
| 304 | 5.1.1.1 | List of Changes | 2d | 2005-01-24 | 2005-01-25 |  |  |  | 1.88d | 0d | start no earlier than 2005-01-24 |  |  |  |  |
| 305 | 5.1.1.2 | Changed Geometry | 1d? | 2005-01-26 | 2005-01-26 | 304 |  |  | 1.88d | 0d |  |  |  |  |  |
| 306 | 5.1.1.3 | Check List 1 | 1d? | 2005-01-27 | 2005-01-27 | 305 |  |  | 1.88d | 0d |  |  |  |  |  |
| 307 | 5.1.1.4 | Check List 2 | 1d? | 2005-01-28 | 2005-01-28 | 306 |  |  | 1.88d | 0d |  |  |  |  |  |
| 308 | 5.1.1.5 | Check List 3 | 1d? | 2005-01-29 | 2005-01-29 | 307 |  |  | 1.88d | 0d |  |  |  |  |  |
| 309 | 5.1.1.6 | Check List 4 | 1d? | 2005-01-31 | 2005-01-31 | 308 |  |  | 1.88d | 0d |  |  |  |  |  |
| 310 | 5.1.1.7 | Render Geometry | 1d? | 2005-02-01 | 2005-02-01 | 309 |  |  | 1.88d | 0d |  |  |  |  |  |
| 311 | 5.1.1.8 | Grass | 1d? | 2005-02-02 | 2005-02-02 | 310 |  |  | 1.88d | 0d |  |  |  |  |  |
| 312 | 5.1.1.9 | AI Maps | 1d? | 2005-02-03 | 2005-02-03 | 311 |  |  | 1.88d | 0d |  |  |  |  |  |
| 313 | 5.1.1.10 | Graphs | 1d? | 2005-02-04 | 2005-02-04 | 312 |  |  | 1.88d |  |  |  |  |  |  |
| 315 | 5.2 | **GameDesign** | 22d? | 2005-02-01 | 2005-02-25 |  |  |  | -8.12d | 0d |  |  |  | 103h |  |
| 316 | 5.2.1 | AI Maps/Graphs | 2.88d? | 2005-02-01 | 2005-02-03 |  |  |  | 11d |  | finish no earlier than 2005-02-03 |  | Шишкин | 23h |  |
| 317 | 5.2.2 | **Secrets** | 3d? | 2005-02-21 | 2005-02-23 |  |  |  | -6.12d | 0d |  |  |  | 24h |  |
| 318 | 5.2.2.1 | **Stage 1** | 3d? | 2005-02-21 | 2005-02-23 |  |  |  | -6.12d | 0d |  |  |  | 24h |  |
| 319 | 5.2.2.1.1 | Design | 1d? | 2005-02-21 | 2005-02-21 |  |  |  | -6.12d | 0d | start no earlier than 2005-02-21 |  | Шишкин | 8h |  |
| 320 | 5.2.2.1.2 | Implementation | 1d? | 2005-02-22 | 2005-02-22 | 319 |  |  | -6.12d | 0d | start no earlier than 2005-02-15 |  | Шишкин | 8h |  |
| 321 | 5.2.2.1.3 | Tuning | 1d? | 2005-02-23 | 2005-02-23 | 320 |  |  | -6.12d | 0d |  |  | Шишкин | 8h |  |

| ID | WBS | Task | Type | Duration | Start | Finish | Predecessors | Total slack | Free slack | Constraint | Resources | Work |
| --- | --- | --- | --- | --- | --- | --- | --- | --- | --- | --- | --- | --- |
| 322 | 5.2.3 | **Smartterrains** |  | 3d? | 2005-02-14 | 2005-02-16 |  | -0.12d | 0d |  |  | 24h |
| 323 | 5.2.3.1 | **Stage 1** |  | 3d? | 2005-02-14 | 2005-02-16 |  | -0.12d | 0d |  |  | 24h |
| 324 | 5.2.3.1.1 | Design |  | 1d? | 2005-02-14 | 2005-02-14 |  | -0.12d | 0d | start no earlier than 2005-02-14 | Шишкин | 8h |
| 325 | 5.2.3.1.2 | Implementation |  | 1d? | 2005-02-15 | 2005-02-15 | 324 | -0.12d | 0d |  | Шишкин | 8h |
| 326 | 5.2.3.1.3 | Tuning |  | 1d? | 2005-02-16 | 2005-02-16 | 325 | -0.12d | 0d |  | Шишкин | 8h |
| 327 | 5.2.4 | **Monsters/Spawns** |  | 1d? | 2005-02-17 | 2005-02-17 |  | -1.12d | 0d |  |  | 16h |
| 328 | 5.2.4.1 | **Stage 1** |  | 1d? | 2005-02-17 | 2005-02-17 |  | -1.12d | 0d |  |  | 16h |
| 329 | 5.2.4.1.1 | Design |  | 1d? | 2005-02-17 | 2005-02-17 |  | -1.12d | 0d | start no earlier than 2005-02-17 | Шишкин | 8h |
| 330 | 5.2.4.1.2 | Implementation |  | 1d? | 2005-02-17 | 2005-02-17 |  | -1.12d | 0d | start no earlier than 2005-02-17 | Шишкин | 8h |
| 331 | 5.2.4.1.3 | Tuning | milestone | 0d | 2005-02-17 | 2005-02-17 | 330 | -1.12d | 0d | start no earlier than 2005-02-17 | Шишкин |  |
| 332 | 5.2.5 | **Stalkers/Spawns** |  | 1d? | 2005-02-19 | 2005-02-19 |  | -3.12d | 0d |  |  | 8h |
| 333 | 5.2.5.1 | **Stage 1** |  | 1d? | 2005-02-19 | 2005-02-19 |  | -3.12d | 0d |  |  | 8h |
| 334 | 5.2.5.1.1 | Design |  | 1d? | 2005-02-19 | 2005-02-19 |  | -3.12d | 0d | start no earlier than 2005-02-19 | Шишкин | 8h |
| 335 | 5.2.5.1.2 | Implementation | milestone | 0d | 2005-02-19 | 2005-02-19 | 334 | -3.12d | 0d | start no earlier than 2005-02-19 | Шишкин |  |
| 336 | 5.2.5.1.3 | Tuning | milestone | 0d | 2005-02-19 | 2005-02-19 | 335 | -3.12d | 0d | start no earlier than 2005-02-19 | Шишкин |  |
| 337 | 5.2.6 | **Anomalies/Spawns** |  | 1d? | 2005-02-19 | 2005-02-19 |  | -3.12d | 0d |  |  | 8h |
| 338 | 5.2.6.1 | **Stage 1** |  | 1d? | 2005-02-19 | 2005-02-19 |  | -3.12d | 0d |  |  | 8h |
| 339 | 5.2.6.1.1 | Design |  | 1d? | 2005-02-19 | 2005-02-19 |  | -3.12d | 0d | start no earlier than 2005-02-19 | Шишкин | 8h |
| 340 | 5.2.6.1.2 | Implementation | milestone | 0d | 2005-02-19 | 2005-02-19 | 339 | -3.12d | 0d | start no earlier than 2005-02-19 | Шишкин |  |
| 341 | 5.2.6.1.3 | Tuning | milestone | 0d | 2005-02-19 | 2005-02-19 | 340 | -3.12d | 0d | start no earlier than 2005-02-19 | Шишкин |  |
| 342 | 5.2.7 | **Physicks** |  | 3d? | 2005-02-23 | 2005-02-25 |  | -8.12d | 0d |  |  |  |
| 343 | 5.2.7.1 | **Stage 1** |  | 3d? | 2005-02-23 | 2005-02-25 |  | -8.12d | 0d |  |  |  |
| 344 | 5.2.7.1.1 | Design |  | 1d? | 2005-02-23 | 2005-02-23 |  | -8.12d | 0d | start no earlier than 2005-02-23 |  |  |
| 345 | 5.2.7.1.2 | Implementation |  | 1d? | 2005-02-24 | 2005-02-24 | 344 | -8.12d | 0d |  |  |  |
| 346 | 5.2.7.1.3 | Tuning |  | 1d? | 2005-02-25 | 2005-02-25 | 345 | -8.12d | 0d |  |  |  |

| ID | WBS | Task | Type | Duration | Start | Finish | Predecessors | Complete | Remaining | Total slack | Free slack | Constraint | Deadline | Resources | Work | Actual work |
| --- | --- | --- | --- | --- | --- | --- | --- | --- | --- | --- | --- | --- | --- | --- | --- | --- |
| 348 | 5.3 | **Scripts** |  | 26.88d? | 2005-01-27 A | 2005-02-26 |  | 4% | 25.88d? | -9d | 0d |  | 2005-03-01 |  | 658h | 31h |
| 349 | 5.3.1 | Сценарий (текст) |  | 3.88d | 2005-01-27 A | 2005-01-31 A |  | 100% |  |  |  |  |  | Шишкин | 31h | 31h |
| 350 | 5.3.2 | **Сцена 1 - Гулаг Бандитов.** |  | 3d? | 2005-02-04 | 2005-02-07 |  |  |  | 7.88d |  |  |  |  | 74h |  |
| 351 | 5.3.2.1 | Постановка задач | milestone | 0d | 2005-02-04 | 2005-02-04 |  |  |  | 8.88d | 0d | start no earlier than 2005-02-04 |  | Шишкин |  |  |
| 352 | 5.3.2.2 | **Реализация** |  | 2d? | 2005-02-04 | 2005-02-05 | 351 |  |  | 8.88d |  |  |  |  | 66h |  |
| 353 | 5.3.2.2.1 | Реализация |  | 1d | 2005-02-04 | 2005-02-04 | 351 |  |  | 9.88d |  | start no earlier than 2005-02-04 |  | Змей | 8h |  |
| 354 | 5.3.2.2.2 | Дополнительно требуется (анимации лидера) |  | 1.75d? | 2005-02-04 | 2005-02-05 |  |  |  | 9.12d |  | finish no earlier than 2005-02-05 |  | Вова | 14h |  |
| 355 | 5.3.2.2.3 | Дополнительно требуется (профайл Борова) |  | 1.75d? | 2005-02-04 | 2005-02-05 |  |  |  | 9.12d |  | finish no earlier than 2005-02-05 |  | Руслан | 14h |  |
| 356 | 5.3.2.2.4 | Дополнительно требуется (модель и иконка ключа от Лаборатории Х18) |  | 1.75d? | 2005-02-04 | 2005-02-05 |  |  |  | 9.12d |  | finish no earlier than 2005-02-05 |  | PROF | 14h |  |
| 357 | 5.3.2.2.5 | Расстановка |  | 2d | 2005-02-04 | 2005-02-05 |  |  |  | 8.88d | 0d | start no earlier than 2005-02-04 |  | Шишкин | 16h |  |
| 358 | 5.3.2.2.6 | Тексты, Диалоги, Задания, Отметки на карте, новости, профили персонажей (продумать) | milestone | 0d | 2005-02-05 | 2005-02-05 | 357 |  |  | 8.88d |  | start no earlier than 2005-02-04 |  | Шишкин |  |  |
| 359 | 5.3.2.3 | **Тестирование** |  | 1d | 2005-02-07 | 2005-02-07 |  |  |  | 7.88d |  |  |  |  | 8h |  |
| 360 | 5.3.2.3.1 | Тестирование |  | 1d | 2005-02-07 | 2005-02-07 |  |  |  | 7.88d |  | start no earlier than 2005-02-07 |  |  |  |  |
| 361 | 5.3.2.3.2 | Проверить расстановку AI нод вокруг дерева |  | 1d | 2005-02-07 | 2005-02-07 |  |  |  | 7.88d |  | start no earlier than 2005-02-07 |  | Partizan | 8h |  |
| 362 | 5.3.3 | **Сцена 2 - Падающий кровосос.** |  | 3d? | 2005-02-04 | 2005-02-07 |  |  |  | 7.88d |  |  |  |  | 24h |  |
| 363 | 5.3.3.1 | Постановка задач | milestone | 0d | 2005-02-04 | 2005-02-04 |  |  |  | 10.88d |  | start no earlier than 2005-02-04 |  | Шишкин |  |  |
| 364 | 5.3.3.2 | **Реализация** |  | 3d | 2005-02-04 | 2005-02-07 |  |  |  | 7.88d |  |  |  |  | 24h |  |
| 365 | 5.3.3.2.1 | Реализация |  | 1d | 2005-02-04 | 2005-02-04 |  |  |  | 9.88d |  | start no earlier than 2005-02-04 |  | Змей | 8h |  |
| 366 | 5.3.3.2.2 | Расстановка |  | 1d | 2005-02-07 | 2005-02-07 |  |  |  | 7.88d |  | start no earlier than 2005-02-07 |  | Шишкин | 8h |  |
| 367 | 5.3.3.2.3 | Тексты, Диалоги, Задания, Отметки на карте, новости, профили персонажей (продумать) |  | 1d | 2005-02-07 | 2005-02-07 |  |  |  | 7.88d |  | start no earlier than 2005-02-07 |  | Шишкин | 8h |  |
| 368 | 5.3.3.3 | **Тестирование** |  | 1d? | 2005-02-07 | 2005-02-07 |  |  |  | 7.88d |  |  |  |  |  |  |
| 369 | 5.3.3.3.1 | Тестирование |  | 1d | 2005-02-07 | 2005-02-07 |  |  |  | 7.88d |  | start no earlier than 2005-02-07 |  |  |  |  |
| 370 | 5.3.3.3.2 | Проверить расстановку AI нод вокруг дерева |  | 1d? | 2005-02-07 | 2005-02-07 |  |  |  | 7.88d |  | start no earlier than 2005-02-07 |  |  |  |  |
| 371 | 5.3.4 | **Сцена 3 - Переброска пленного.** |  | 3d? | 2005-02-05 | 2005-02-08 |  |  |  | 6.88d |  |  |  |  | 46h |  |
| 372 | 5.3.4.1 | Постановка задач | milestone | 0d | 2005-02-05 | 2005-02-05 |  |  |  | 9.88d |  | start no earlier than 2005-02-05 |  | Шишкин |  |  |

Notes:
- 349: В Темной Долине ключевые места это Лагерь Бандитов и База Монолита. Ну уровне много грузовиков смерти и трупов, в ПДА которых прописаны различные задания на убийство. Игрок при переходе с Гарбэджа натыкается на засады бандитов. В Лагерь бандитов можно попасть через трубу (она описывается или дается план новичком из драммомента, инфа в ПДА Серого, Лидер Долга). В лагере игрок может узнать пароль для прохода на территорию Базы Монолита, получить ключ в лабораторию Х18 и бандитский костюм. Если игрок убьет Борова (лидера бандитов), то активируется скрипт «Преследование игрока на Болотах бандитами в кожаных плащах». Игрок должен проникнуть на Базу Монолита (в костюме бандита мирно или с войной, убивая всех монолитовцев). Там он должен найти вход в Лабораторию Х18.
- 350: Очень много бандитов, кэмпы у костра, спящие, раненые, патрули по территории лагеря. В отдельном помещении сидит лидер группировки Боров. У Борова хранится ключ к Лаборатории Х18. Его охраняют несколько крутых бандитов в плащах с капюшонами. При убийстве Борова включается инфопоршн «Преследование игрока на Болотах бандитами в кожаных плащах». По территории лагеря расставлены часовые, на вышках снайперы.
- 362: Если игрок решит пробираться в Лагерь Бандитов через трубу, за 5 метров до выхода из нее он слышит крики «Сука, как ты сюда пробрался?», «Мочи его, ребята!» и начинается стрельба. Если игрок застыл на месте или убежал, испугавшись, что это ЕГО заметили, стрельба продолжается еще секунд 15, потом сверху падает кровосос. Если игрок все же подойдет к выходу из трубы, практически ему на голову сверху свалится мертвое тело кровососа. Слышит «Получи, тварь!». Атакующие бандиты расходятся по местам.
- 371: Скрипт срабатывает при приближении игрока к дороге. В Лагере Бандитов спавнятся три бандита и один пленный сталкер. Бандиты ведут сталкера к Базе Монолита по дороге впереди пленный, сзади три охранника с автоматами, которые время от времени «подбадривают» пленного фразами вроде: «Ну, я тебе не завидую», «Скоро ты будешь работать обедом для мутантов в темном подземелье», «Готовься к фуршету, чувак. Ты основное блюдо!». Сталкер посылает по ПДА просьбы о помощи. Если игрок расстрелял бандитов, пленный сталкер в благодарность рассказывает, что только что бандиты вспоминали пароль для входа на Базу Монолита. Пароль этот «такой-то». А пройти на Базу можно, переодевшись в костюм бандита. Если игрок не обращает внимания на это событие, по достижении определенной точки (расположенной довольно близко к Базе Монолита) пленный не выдерживает, в панике сбегает с дороги и, петляя, пытается убежать. Бандиты остаются на дороге, поднимают автоматы и расстреливают беднягу, после чего возвращаются в Лагерь.

| ID | WBS | Task | Type | Duration | Start | Finish | Predecessors | Total slack | Free slack | Constraint | Resources | Work |
| --- | --- | --- | --- | --- | --- | --- | --- | --- | --- | --- | --- | --- |
| 373 | 5.3.4.2 | **Реализация** |  | 2d? | 2005-02-05 | 2005-02-07 |  | 7.88d |  |  |  | 46h |
| 374 | 5.3.4.2.1 | Реализация |  | 1.88d | 2005-02-05 | 2005-02-07 |  | 8d |  | finish no earlier than 2005-02-07 | Змей | 15h |
| 375 | 5.3.4.2.2 | Дополнительно требуется (анимация пленника) |  | 1.88d? | 2005-02-05 | 2005-02-07 |  | 8d |  | finish no earlier than 2005-02-07 | Вова | 15h |
| 376 | 5.3.4.2.3 | Расстановка |  | 1d? | 2005-02-07 | 2005-02-07 |  | 7.88d |  | start no earlier than 2005-02-07 | Шишкин | 8h |
| 377 | 5.3.4.2.4 | Тексты, Диалоги, Задания, Отметки на карте, новости, профили персонажей (продумать) |  | 1d? | 2005-02-07 | 2005-02-07 |  | 7.88d |  | start no earlier than 2005-02-07 | Шишкин | 8h |
| 378 | 5.3.4.3 | **Тестирование** |  | 1d? | 2005-02-08 | 2005-02-08 |  | 6.88d |  |  |  |  |
| 379 | 5.3.4.3.1 | Тестирование |  | 1d? | 2005-02-08 | 2005-02-08 |  | 6.88d |  | start no earlier than 2005-02-08 |  |  |
| 380 | 5.3.4.3.2 | Проверить расстановку AI нод вокруг дерева |  | 1d? | 2005-02-08 | 2005-02-08 |  | 6.88d |  | start no earlier than 2005-02-08 |  |  |
| 381 | 5.3.5 | **Сцена 4 - Гулаг Монолита.** |  | 3.88d? | 2005-02-08 | 2005-02-11 |  | 4d |  |  |  | 76h |
| 382 | 5.3.5.1 | Постановка задач | milestone | 0d | 2005-02-08 | 2005-02-08 |  | 5d | 0d | start no earlier than 2005-02-08 | Шишкин |  |
| 383 | 5.3.5.2 | **Реализация** |  | 2.88d? | 2005-02-08 | 2005-02-10 | 382 | 5d |  |  |  | 76h |
| 384 | 5.3.5.2.1 | Реализация |  | 2.88d | 2005-02-08 | 2005-02-10 | 382 | 5d |  | finish no earlier than 2005-02-10 | Змей | 23h |
| 385 | 5.3.5.2.2 | Дополнительно требуется (модель и иконка ключа от Лаборатории Х18) |  | 2.88d? | 2005-02-08 | 2005-02-10 |  | 5d |  | finish no earlier than 2005-02-10 | PROF | 23h |
| 386 | 5.3.5.2.3 | Расстановка |  | 2.88d | 2005-02-08 | 2005-02-10 | 349 | 5d |  | finish no earlier than 2005-02-10 | Шишкин | 23h |
| 387 | 5.3.5.2.4 | Тексты, Диалоги, Задания, Отметки на карте, новости, профили персонажей (продумать) |  | 0.88d | 2005-02-08 | 2005-02-08 |  | 7d |  | finish no earlier than 2005-02-08 | Шишкин | 7h |
| 388 | 5.3.5.3 | **Тестирование** |  | 1.88d? | 2005-02-10 | 2005-02-11 |  | 4d |  |  |  |  |
| 389 | 5.3.5.3.1 | Тестирование |  | 1.88d | 2005-02-10 | 2005-02-11 |  | 4d |  | finish no earlier than 2005-02-11 |  |  |
| 390 | 5.3.5.3.2 | Проверить расстановку AI нод вокруг дерева |  | 1.88d? | 2005-02-10 | 2005-02-11 |  | 4d |  | start no earlier than 2005-02-10 |  |  |
| 391 | 5.3.6 | **Сцена 5 - SOS с бензоколонки.** |  | 1d? | 2005-02-11 | 2005-02-11 |  | 3.88d |  |  |  | 22h |
| 392 | 5.3.6.1 | Постановка задач | milestone | 0d | 2005-02-11 | 2005-02-11 |  | 4.88d |  | start no earlier than 2005-02-11 | Шишкин |  |
| 393 | 5.3.6.2 | **Реализация** |  | 1d? | 2005-02-11 | 2005-02-11 |  | 3.88d |  |  |  | 22h |
| 394 | 5.3.6.2.1 | Реализация |  | 0.88d | 2005-02-11 | 2005-02-11 |  | 4d |  | finish no earlier than 2005-02-11 | Змей | 7h |
| 395 | 5.3.6.2.2 | Расстановка |  | 0.88d | 2005-02-11 | 2005-02-11 |  | 4d |  | finish no earlier than 2005-02-11 | Шишкин | 7h |
| 396 | 5.3.6.2.3 | Тексты, Диалоги, Задания, Отметки на карте, новости, профили персонажей (продумать) |  | 1d? | 2005-02-11 | 2005-02-11 |  | 3.88d |  | start no earlier than 2005-02-11 | Шишкин | 8h |

Notes:
- 375: Пленник идет, оустив голову, сгорбив спину, руки сложил за спиной.
- 381: Много зомбированных сталкеров группировки Монолит. У командиров отделений ключи от лаборатории Х18. Патрульные усиленно охраняют входы, расставить в местах, где игрок не сможет их «снять» с расстояния снайперкой. В обычном режиме монолитовцы сразу открывают огонь по игроку, только увидев его (однако за территорию Базы их выманить невозможно стоит рестриктор). Если игрок одет в костюм Бандита зоунгарды Монолита на входах остановят игрока, потребуют сказать пароль, при правильном ответе пропускают. Если игрок в костюме бандита стрельнет по монолитовцу или снимет костюм, монолитовцы раз и навсегда обижаются на игрока.
- 391: Игрок получает сигнал SOS из здания рядом с бензоколонкой. Игрок приходит туда, видит прямо от входа возле стены в освещенном единственной лампочкой месте полумертвого сталкера. Когда игрок входит в комнату, он замечает справа и слева от входа в тени много трупов сталкеров, солдат. Из темной комнаты слева от входа выбегает кровосос, перекрывая выход, направляется к игроку и нападает.

| ID | WBS | Task | Type | Duration | Start | Finish | Total slack | Free slack | Constraint | Resources | Work |
| --- | --- | --- | --- | --- | --- | --- | --- | --- | --- | --- | --- |
| 397 | 5.3.6.3 | **Тестирование** |  | 0.88d? | 2005-02-11 | 2005-02-11 | 4d |  |  |  |  |
| 398 | 5.3.6.3.1 | Тестирование |  | 0.88d? | 2005-02-11 | 2005-02-11 | 4d |  | finish no earlier than 2005-02-11 |  |  |
| 399 | 5.3.6.3.2 | Проверить расстановку AI нод вокруг дерева |  | 0.88d? | 2005-02-11 | 2005-02-11 | 4d |  | finish no earlier than 2005-02-11 |  |  |
| 400 | 5.3.7 | **Сцена 6 - Прибытие автомобиля.** |  | 1d? | 2005-02-12 | 2005-02-12 | 2.88d |  |  |  | 22h |
| 401 | 5.3.7.1 | Постановка задач | milestone | 0d | 2005-02-12 | 2005-02-12 | 3.88d |  | start no earlier than 2005-02-12 | Шишкин |  |
| 402 | 5.3.7.2 | **Реализация** |  | 1d? | 2005-02-12 | 2005-02-12 | 2.88d |  |  |  | 22h |
| 403 | 5.3.7.2.1 | Реализация |  | 0.88d | 2005-02-12 | 2005-02-12 | 3d |  | start no earlier than 2005-02-12 | Змей | 7h |
| 404 | 5.3.7.2.2 | Расстановка |  | 0.88d | 2005-02-12 | 2005-02-12 | 3d |  | start no earlier than 2005-02-12 | Шишкин | 7h |
| 405 | 5.3.7.2.3 | Тексты, Диалоги, Задания, Отметки на карте, новости, профили персонажей (продумать) |  | 1d? | 2005-02-12 | 2005-02-12 | 2.88d |  | start no earlier than 2005-02-12 | Шишкин | 8h |
| 406 | 5.3.7.3 | **Тестирование** |  | 0.88d? | 2005-02-12 | 2005-02-12 | 3d |  |  |  |  |
| 407 | 5.3.7.3.1 | Тестирование |  | 0.88d? | 2005-02-12 | 2005-02-12 | 3d |  | start no earlier than 2005-02-12 |  |  |
| 408 | 5.3.7.3.2 | Проверить расстановку AI нод вокруг дерева |  | 0.88d? | 2005-02-12 | 2005-02-12 | 3d |  | start no earlier than 2005-02-12 |  |  |
| 409 | 5.3.8 | **Сцена 7 - Развод лоха.** |  | 2d? | 2005-02-14 | 2005-02-15 | 0.88d |  |  |  | 30h |
| 410 | 5.3.8.1 | Постановка задач | milestone | 0d | 2005-02-14 | 2005-02-14 | 2.88d |  | start no earlier than 2005-02-14 | Шишкин |  |
| 411 | 5.3.8.2 | **Реализация** |  | 2d? | 2005-02-14 | 2005-02-15 | 0.88d |  |  |  | 30h |
| 412 | 5.3.8.2.1 | Реализация |  | 1.88d | 2005-02-14 | 2005-02-15 | 1d |  | finish no earlier than 2005-02-15 | Змей | 15h |
| 413 | 5.3.8.2.2 | Расстановка |  | 0.88d | 2005-02-15 | 2005-02-15 | 1d |  | start no earlier than 2005-02-15 | Шишкин | 7h |
| 414 | 5.3.8.2.3 | Тексты, Диалоги, Задания, Отметки на карте, новости, профили персонажей (продумать) |  | 1d? | 2005-02-15 | 2005-02-15 | 0.88d |  | start no earlier than 2005-02-15 | Шишкин | 8h |
| 415 | 5.3.8.3 | **Тестирование** |  | 0.88d? | 2005-02-15 | 2005-02-15 | 1d |  |  |  |  |
| 416 | 5.3.8.3.1 | Тестирование |  | 0.88d? | 2005-02-15 | 2005-02-15 | 1d |  | start no earlier than 2005-02-15 |  |  |
| 417 | 5.3.8.3.2 | Проверить расстановку AI нод вокруг дерева |  | 0.88d? | 2005-02-15 | 2005-02-15 | 1d |  | start no earlier than 2005-02-15 |  |  |
| 418 | 5.3.9 | **Сцена 7 - Самоубийство.** |  | 1d? | 2005-02-16 | 2005-02-16 | -0.12d | 0d |  |  | 43h |
| 419 | 5.3.9.1 | Постановка задач | milestone | 0d | 2005-02-16 | 2005-02-16 | 0.88d |  | start no earlier than 2005-02-16 | Шишкин |  |
| 420 | 5.3.9.2 | **Реализация** |  | 1d? | 2005-02-16 | 2005-02-16 | -0.12d | 0d |  |  | 43h |
| 421 | 5.3.9.2.1 | Реализация |  | 0.88d | 2005-02-16 | 2005-02-16 | 0d |  | finish no earlier than 2005-02-16 | Змей | 7h |
| 422 | 5.3.9.2.2 | Дополнительно требуется (Задание на самоубийцу) |  | 0.88d? | 2005-02-16 | 2005-02-16 | 0d |  | finish no earlier than 2005-02-16 | Руслан | 7h |
| 423 | 5.3.9.2.3 | Дополнительно требуется (Вознаграждение за самоубийцу) |  | 0.88d? | 2005-02-16 | 2005-02-16 | 0d |  | finish no earlier than 2005-02-16 | Руслан | 7h |
| 424 | 5.3.9.2.4 | Дополнительно требуется (анимация самоубийцы) |  | 0.88d? | 2005-02-16 | 2005-02-16 | 0d |  | finish no earlier than 2005-02-16 | Вова | 7h |
| 425 | 5.3.9.2.5 | Расстановка |  | 0.88d | 2005-02-16 | 2005-02-16 | 0d |  | start no earlier than 2005-02-16 | Шишкин | 7h |
| 426 | 5.3.9.2.6 | Тексты, Диалоги, Задания, Отметки на карте, новости, профили персонажей (продумать) |  | 1d? | 2005-02-16 | 2005-02-16 | -0.12d | 0d | start no earlier than 2005-02-16 | Шишкин | 8h |

Notes:
- 400: Когда игрок заходит на территорию бензоколонки, он слышит приближающийся рокот двигателя, к главному входу на Базу Монолита подъезжает Камаз, из него выгружаются 4-5 человек и идут в здание Базы.
- 409: Игроку на PDA приходит информация от сталкера из группировки бандитов, что он продает мощную пушку (возможно даже, винтовку Гаусса) по низкой цене. Игрок приходит торговать, бандит говорит, что сейчас вынесет оружие, берет деньги, уходит в домик и не возвращается. Если игрок сунется туда, его не пропускает зоунгард («Вали отсюда, пока цел!»).
- 418: По ПДА на предыдущих уровнях Торговец сообщает, что сталкеры шепчутся о появлении в окрестностях сталкера Васи, которого не видели уже месяцев шесть он пытался найти проход к центру зоны и бесследно исчез, а теперь вот объявился. Его недавно видели в Темной Долине, где-то за базой Монолита. Игрок находит этого Васю, он весь такой испуганный, мелет полный бред о том, что он был ТАМ, он видел ЭТО. ОНО говорило с ним. В его голове звучал этот ужасный голос, выжигая мозги. Ужас, ужас, ужас! Игрок говорит ему пару фраз, успокаивает. Тот в нервной форме благодарит за сочувствие, просит передать какой-то предмет бармену, тот уже передаст его семье. Дает игроку артефакт, отбегает на несколько метров и с криком «ОНО меня не получит!» забегает в Мясорубку.
- 422: В ранних уровнях пустить задание от торговца, после передачи предмета дать задание на доставку бармену
- 423: После доставки диалог у бармена и раздача пряников.
- 424: Сталкер подносит пистолет к виску, потом стреляет

| ID | WBS | Task | Type | Duration | Start | Finish | Total slack | Free slack | Constraint | Resources | Work |
| --- | --- | --- | --- | --- | --- | --- | --- | --- | --- | --- | --- |
| 427 | 5.3.9.3 | **Тестирование** |  | 0.88d? | 2005-02-16 | 2005-02-16 | 0d |  |  |  |  |
| 428 | 5.3.9.3.1 | Тестирование |  | 0.88d? | 2005-02-16 | 2005-02-16 | 0d |  | start no earlier than 2005-02-16 |  |  |
| 429 | 5.3.9.3.2 | Проверить расстановку AI нод вокруг дерева |  | 0.88d? | 2005-02-16 | 2005-02-16 | 0d |  | start no earlier than 2005-02-16 |  |  |
| 430 | 5.3.10 | **Сцена 7 - Засады бандитов на входе с Гарбэджа.** |  | 1.88d? | 2005-02-17 | 2005-02-18 | -2d | 0d |  |  | 30h |
| 431 | 5.3.10.1 | Постановка задач | milestone | 0d | 2005-02-17 | 2005-02-17 | -0.12d | 0d | start no earlier than 2005-02-17 | Шишкин |  |
| 432 | 5.3.10.2 | **Реализация** |  | 1.88d? | 2005-02-17 | 2005-02-18 | -2d | 0d |  |  | 30h |
| 433 | 5.3.10.2.1 | Реализация |  | 1.88d | 2005-02-17 | 2005-02-18 | -2d | 0d | finish no earlier than 2005-02-18 | Змей | 15h |
| 434 | 5.3.10.2.2 | Расстановка |  | 0.88d | 2005-02-18 | 2005-02-18 | -2d | 0d | start no earlier than 2005-02-18 | Шишкин | 7h |
| 435 | 5.3.10.2.3 | Тексты, Диалоги, Задания, Отметки на карте, новости, профили персонажей (продумать) |  | 1d? | 2005-02-17 | 2005-02-17 | -1.12d | 0d | start no earlier than 2005-02-17 | Шишкин | 8h |
| 436 | 5.3.10.3 | **Тестирование** |  | 0.88d? | 2005-02-18 | 2005-02-18 | -2d | 0d |  |  |  |
| 437 | 5.3.10.3.1 | Тестирование |  | 0.88d? | 2005-02-18 | 2005-02-18 | -2d | 0d | finish no earlier than 2005-02-18 |  |  |
| 438 | 5.3.10.3.2 | Проверить расстановку AI нод вокруг дерева |  | 0.88d? | 2005-02-18 | 2005-02-18 | -2d | 0d | finish no earlier than 2005-02-18 |  |  |
| 439 | 5.3.11 | **Сцена 8 - Игрок в темнице** |  | 3.88d? | 2005-02-19 | 2005-02-23 | -6d | 0d |  |  | 201h |
| 440 | 5.3.11.1 | Постановка задач | milestone | 0d | 2005-02-19 | 2005-02-19 | -2.12d | 0d | start no earlier than 2005-02-19 | Шишкин |  |
| 441 | 5.3.11.2 | **Реализация** |  | 3.88d? | 2005-02-19 | 2005-02-23 | -6d | 0d |  |  | 201h |
| 442 | 5.3.11.2.1 | Реализация |  | 3.88d | 2005-02-19 | 2005-02-23 | -6d | 0d | finish no earlier than 2005-02-23 | Змей | 31h |
| 443 | 5.3.11.2.2 | Дополнительно требуется (переброска игрока) |  | 3.88d? | 2005-02-19 | 2005-02-23 | -6d | 0d | finish no earlier than 2005-02-23 | Dima | 31h |
| 444 | 5.3.11.2.3 | Дополнительно требуется (переброска инвентори) |  | 3.88d? | 2005-02-19 | 2005-02-23 | -6d | 0d | finish no earlier than 2005-02-23 | Dima | 31h |
| 445 | 5.3.11.2.4 | Дополнительно требуется (закрывающаяся дверь) |  | 3.88d? | 2005-02-19 | 2005-02-23 | -6d | 0d | finish no earlier than 2005-02-23 | Угрюмый | 31h |
| 446 | 5.3.11.2.5 | Дополнительно требуется (модель пульта) |  | 3.88d? | 2005-02-19 | 2005-02-23 | -6d | 0d | finish no earlier than 2005-02-23 | Угрюмый | 31h |
| 447 | 5.3.11.2.6 | Дополнительно требуется (анимация нажатия на кнопку) |  | 3.88d? | 2005-02-19 | 2005-02-23 | -6d | 0d | finish no earlier than 2005-02-23 | Вова | 31h |
| 448 | 5.3.11.2.7 | Расстановка |  | 0.88d | 2005-02-23 | 2005-02-23 | -6d | 0d | start no earlier than 2005-02-23 | Шишкин | 7h |
| 449 | 5.3.11.2.8 | Тексты, Диалоги, Задания, Отметки на карте, новости, профили персонажей (продумать) |  | 1d? | 2005-02-19 | 2005-02-19 | -3.12d | 0d | start no earlier than 2005-02-19 | Шишкин | 8h |
| 450 | 5.3.11.3 | **Тестирование** |  | 0.88d? | 2005-02-23 | 2005-02-23 | -6d | 0d |  |  |  |
| 451 | 5.3.11.3.1 | Тестирование |  | 0.88d? | 2005-02-23 | 2005-02-23 | -6d | 0d | start no earlier than 2005-02-23 |  |  |
| 452 | 5.3.11.3.2 | Проверить расстановку AI нод вокруг дерева |  | 0.88d? | 2005-02-23 | 2005-02-23 | -6d | 0d | start no earlier than 2005-02-23 |  |  |

Notes:
- 430: На каждом из трех входов с Гарбэджа сидят бандиты. При входе игрока в скриптовую зону они подбегают, после непродолжительного диалога дают в морду. Игрок теряет сознание, переход на скрипт Игрок в темнице
- 439: В окрестностях Лагеря Бандитов расставляем несколько патрулей. При виде игрока они кричат что-то вроде «Браток, подойди, дело есть. Только убери оружие». Если игрок подходит, ему дают в морду, после чего экран темнеет. Игрок приходит в себя в подвале Лагеря Бандитов, в клетке рядом с клеткой пленного долговца. Дверь клетки игрока открыта. Игрок видит бандита неподалеку, тот нажимает на кнопку пульта на стене и дверь захлопывается. Бандит бросает фразу «Попались, пташки! Ну, сидите, ждите своей участи» и уходит. Долговец сидит на полу своей клетки и что-то бубнит. Из оружия у игрока остались только болты. Ему нужно попасть болтом в пульт (нажать тем самым на кнопку), тогда его дверь и дверь долговца открывается. Игрок на тумбочке возле пульта берет пистолет и коробку патронов, убивает охранника, который стоит наверху, у лестницы. В его рюкзаке находит все свои отобранные предметы. Долговец благодарит игрока, рассказывает, что пароль «такой-то», на Базу Монолита можно пробраться, переодевшись, а ключ от лаборатории есть у Борова.
- 443: Переброска игрока в новое место, с указанием точки спавна и направлением взгляда.
- 444: Переброска содержимого инвентори игрока в инвентори бандита-охранника, у игрока остаются только болты
- 445: В клетке сейчас есть проход. Нужно сделать дверь, которая будет закрываться по требованию скрипта.
- 446: От клетки с закрывающейся дверью идет провод к пульту с кнопкой открытия/закрытия дверей. Нужна модель такого пульта.
- 447: Анимация нажатия на кнопку сталкером-бандитом. Пульт с кнопкой находится на уровне плеча.

| ID | WBS | Task | Type | Duration | Start | Finish | Predecessors | Total slack | Free slack | Constraint | Deadline | Resources | Work |
| --- | --- | --- | --- | --- | --- | --- | --- | --- | --- | --- | --- | --- | --- |
| 453 | 5.3.12 | **Сцена 9 - Узник Бандитов.** |  | 1.88d? | 2005-02-24 | 2005-02-25 |  | -8d | 0d |  |  |  | 30h |
| 454 | 5.3.12.1 | Постановка задач | milestone | 0d | 2005-02-24 | 2005-02-24 |  | -6.12d | 0d | start no earlier than 2005-02-24 |  | Шишкин |  |
| 455 | 5.3.12.2 | **Реализация** |  | 1.88d? | 2005-02-24 | 2005-02-25 |  | -8d | 0d |  |  |  | 30h |
| 456 | 5.3.12.2.1 | Реализация |  | 1.88d | 2005-02-24 | 2005-02-25 |  | -8d | 0d | finish no earlier than 2005-02-25 |  | Змей | 15h |
| 457 | 5.3.12.2.2 | Расстановка |  | 0.88d | 2005-02-25 | 2005-02-25 |  | -8d | 0d | start no earlier than 2005-02-25 |  | Шишкин | 7h |
| 458 | 5.3.12.2.3 | Тексты, Диалоги, Задания, Отметки на карте, новости, профили персонажей (продумать) |  | 1d? | 2005-02-24 | 2005-02-24 |  | -7.12d | 0d | start no earlier than 2005-02-24 |  | Шишкин | 8h |
| 459 | 5.3.12.3 | **Тестирование** |  | 0.88d? | 2005-02-25 | 2005-02-25 |  | -8d | 0d |  |  |  |  |
| 460 | 5.3.12.3.1 | Тестирование |  | 0.88d? | 2005-02-25 | 2005-02-25 |  | -8d | 0d | start no earlier than 2005-02-25 |  |  |  |
| 461 | 5.3.12.3.2 | Проверить расстановку AI нод вокруг дерева |  | 0.88d? | 2005-02-25 | 2005-02-25 |  | -8d | 0d | start no earlier than 2005-02-25 |  |  |  |
| 462 | 5.3.13 | **Сцена 10 - Жертвоприношение.** |  | 1.88d? | 2005-02-25 | 2005-02-26 |  | -9d | 0d |  |  |  | 29h |
| 463 | 5.3.13.1 | Постановка задач | milestone | 0d | 2005-02-25 | 2005-02-25 |  | -7.12d | 0d | start no earlier than 2005-02-25 |  | Шишкин |  |
| 464 | 5.3.13.2 | **Реализация** |  | 1.88d? | 2005-02-25 | 2005-02-26 |  | -9d | 0d |  |  |  | 29h |
| 465 | 5.3.13.2.1 | Реализация |  | 1.75d | 2005-02-25 | 2005-02-26 |  | -8.88d | 0d | finish no earlier than 2005-02-26 |  | Змей | 14h |
| 466 | 5.3.13.2.2 | Расстановка |  | 0.88d | 2005-02-26 | 2005-02-26 |  | -9d | 0d | start no earlier than 2005-02-26 |  | Шишкин | 7h |
| 467 | 5.3.13.2.3 | Тексты, Диалоги, Задания, Отметки на карте, новости, профили персонажей (продумать) |  | 1d? | 2005-02-25 | 2005-02-25 |  | -8.12d | 0d | start no earlier than 2005-02-25 |  | Шишкин | 8h |
| 468 | 5.3.13.3 | **Тестирование** |  | 0.88d? | 2005-02-26 | 2005-02-26 |  | -9d | 0d |  |  |  |  |
| 469 | 5.3.13.3.1 | Тестирование |  | 0.88d? | 2005-02-26 | 2005-02-26 |  | -9d | 0d | start no earlier than 2005-02-26 |  |  |  |
| 470 | 5.3.13.3.2 | Проверить расстановку AI нод вокруг дерева |  | 0.88d? | 2005-02-26 | 2005-02-26 |  | -9d | 0d | start no earlier than 2005-02-26 |  |  |  |
| 472 | 6 | **18_Prypiat** |  | 11d? | 2005-02-26 | 2005-03-11 | 301 | -9d | 0d |  | 2005-04-01 | Рома, Змей | 176h |
| 473 | 6.1 | **LevelDesign** |  | 11d? | 2005-02-26 | 2005-03-11 |  | -9d | 0d |  | 2005-03-01 | Веня | 88h |
| 474 | 6.1.1 | **Stage 1** |  | 11d? | 2005-02-26 | 2005-03-11 |  | -9d | 0d |  |  |  |  |
| 475 | 6.1.1.1 | List of Changes |  | 2d | 2005-02-26 | 2005-03-01 |  | -9d | 0d |  |  |  |  |
| 476 | 6.1.1.2 | Changed Geometry |  | 1d? | 2005-03-01 | 2005-03-02 | 475 | -9d | 0d |  |  |  |  |
| 477 | 6.1.1.3 | Check List 1 |  | 1d? | 2005-03-02 | 2005-03-03 | 476 | -9d | 0d |  |  |  |  |
| 478 | 6.1.1.4 | Check List 2 |  | 1d? | 2005-03-03 | 2005-03-04 | 477 | -9d | 0d |  |  |  |  |
| 479 | 6.1.1.5 | Check List 3 |  | 1d? | 2005-03-04 | 2005-03-05 | 478 | -9d | 0d |  |  |  |  |
| 480 | 6.1.1.6 | Check List 4 |  | 1d? | 2005-03-05 | 2005-03-07 | 479 | -9d | 0d |  |  |  |  |
| 481 | 6.1.1.7 | Render Geometry |  | 1d? | 2005-03-07 | 2005-03-08 | 480 | -9d | 0d |  |  |  |  |
| 482 | 6.1.1.8 | Grass |  | 1d? | 2005-03-08 | 2005-03-09 | 481 | -9d | 0d |  |  |  |  |
| 483 | 6.1.1.9 | AI Maps |  | 1d? | 2005-03-09 | 2005-03-10 | 482 | -9d | 0d |  |  |  |  |
| 484 | 6.1.1.10 | Graphs |  | 1d? | 2005-03-10 | 2005-03-11 | 483 | -9d | 0d |  |  |  |  |

Notes:
- 453: Когда игрок проходит у входа в лагерь бандитов, он слышит громкие крики «На помощь! Спасите! Меня тут убьют скоро!». Можно дублировать сообщением на ПДА. Когда игрок подходит к решетке, заключенный говорит, что он разведчик Долга, его тут держат бандиты, что он узнал пароль для входа на базу Монолита. Потом резко обрывает диалог «Тсс! Сюда идут!». Отыгрывается скрипт Жертвоприношение. Заключенный говорит, что если игрок выпустит ему, он ему скажет пароль Монолита и еще кой-чего полезного. Когда игрок выпускает, тот называет пароль и говорит, что Монолитовцы тупые они зомбированные, поэтому их можно обмануть и проникнуть на территорию базы, переодевшись в костюм бандита. А ключ к Лаборатории Х18, между прочим, хранится у Борова.
- 462: Когда заключенный сказал «Тсс! Сюда идут!» в подвал входят несколько бандитов, которые ведут сталкера-новичка. Они подводят его к отверстию в полу (отверстие плохо видно из окна, через которое игрок общался с заключенным, поэтому игроку лучше перейти к соседнему окну, там вообще отломан кусок стены, поэтому будет отлично видно сценку). Перекидываются парой фраз «Ставлю 10 рублей, что ему оторвут голову», «Нет, он вообще превратится в кровавое месиво через 5 секунд», «Да хватит томить, толкайте его уже!». Потом один из бандитов толкает новичка в дырку (наносит хит), после чего веселая компания еще некоторое время смотрит, что происходит там, внизу, потом уходят.

| ID | WBS | Task | Duration | Start | Finish | Predecessors | Total slack | Free slack |
| --- | --- | --- | --- | --- | --- | --- | --- | --- |
| 486 | 6.2 | **GameDesign** | 3d? | 2005-02-26 | 2005-03-02 |  | 15d |  |
| 487 | 6.2.1 | **Secrets** | 3d? | 2005-02-26 | 2005-03-02 |  | 15d |  |
| 488 | 6.2.1.1 | **Stage 1** | 3d? | 2005-02-26 | 2005-03-02 |  | 15d |  |
| 489 | 6.2.1.1.1 | Design | 1d? | 2005-02-26 | 2005-02-28 |  | 15d | 0d |
| 490 | 6.2.1.1.2 | Implementation | 1d? | 2005-02-28 | 2005-03-01 | 489 | 15d | 0d |
| 491 | 6.2.1.1.3 | Tuning | 1d? | 2005-03-01 | 2005-03-02 | 490 | 15d |  |
| 492 | 6.2.2 | **Smartterrains** | 3d? | 2005-02-26 | 2005-03-02 |  | 15d |  |
| 493 | 6.2.2.1 | **Stage 1** | 3d? | 2005-02-26 | 2005-03-02 |  | 15d |  |
| 494 | 6.2.2.1.1 | Design | 1d? | 2005-02-26 | 2005-02-28 |  | 15d | 0d |
| 495 | 6.2.2.1.2 | Implementation | 1d? | 2005-02-28 | 2005-03-01 | 494 | 15d | 0d |
| 496 | 6.2.2.1.3 | Tuning | 1d? | 2005-03-01 | 2005-03-02 | 495 | 15d |  |
| 497 | 6.2.3 | **Monsters/Spawns** | 3d? | 2005-02-26 | 2005-03-02 |  | 15d |  |
| 498 | 6.2.3.1 | **Stage 1** | 3d? | 2005-02-26 | 2005-03-02 |  | 15d |  |
| 499 | 6.2.3.1.1 | Design | 1d? | 2005-02-26 | 2005-02-28 |  | 15d | 0d |
| 500 | 6.2.3.1.2 | Implementation | 1d? | 2005-02-28 | 2005-03-01 | 499 | 15d | 0d |
| 501 | 6.2.3.1.3 | Tuning | 1d? | 2005-03-01 | 2005-03-02 | 500 | 15d |  |
| 502 | 6.2.4 | **Stalkers/Spawns** | 3d? | 2005-02-26 | 2005-03-02 |  | 15d |  |
| 503 | 6.2.4.1 | **Stage 1** | 3d? | 2005-02-26 | 2005-03-02 |  | 15d |  |
| 504 | 6.2.4.1.1 | Design | 1d? | 2005-02-26 | 2005-02-28 |  | 15d | 0d |
| 505 | 6.2.4.1.2 | Implementation | 1d? | 2005-02-28 | 2005-03-01 | 504 | 15d | 0d |
| 506 | 6.2.4.1.3 | Tuning | 1d? | 2005-03-01 | 2005-03-02 | 505 | 15d |  |
| 507 | 6.2.5 | **Anomalies/Spawns** | 3d? | 2005-02-26 | 2005-03-02 |  | 15d |  |
| 508 | 6.2.5.1 | **Stage 1** | 3d? | 2005-02-26 | 2005-03-02 |  | 15d |  |
| 509 | 6.2.5.1.1 | Design | 1d? | 2005-02-26 | 2005-02-28 |  | 15d | 0d |
| 510 | 6.2.5.1.2 | Implementation | 1d? | 2005-02-28 | 2005-03-01 | 509 | 15d | 0d |
| 511 | 6.2.5.1.3 | Tuning | 1d? | 2005-03-01 | 2005-03-02 | 510 | 15d |  |

| ID | WBS | Task | Duration | Start | Finish | Predecessors | Total slack | Free slack |
| --- | --- | --- | --- | --- | --- | --- | --- | --- |
| 512 | 6.2.6 | **Physicks** | 3d? | 2005-02-26 | 2005-03-02 |  | 15d |  |
| 513 | 6.2.6.1 | **Stage 1** | 3d? | 2005-02-26 | 2005-03-02 |  | 15d |  |
| 514 | 6.2.6.1.1 | Design | 1d? | 2005-02-26 | 2005-02-28 |  | 15d | 0d |
| 515 | 6.2.6.1.2 | Implementation | 1d? | 2005-02-28 | 2005-03-01 | 514 | 15d | 0d |
| 516 | 6.2.6.1.3 | Tuning | 1d? | 2005-03-01 | 2005-03-02 | 515 | 15d |  |
| 518 | 6.3 | **Scripts** | 5d? | 2005-02-26 | 2005-03-04 |  | 13d |  |
| 519 | 6.3.1 | **Script 1** | 5d? | 2005-02-26 | 2005-03-04 |  | 13d |  |
| 520 | 6.3.1.1 | Scenario(text) | 1d? | 2005-02-26 | 2005-02-28 |  | 13d | 0d |
| 521 | 6.3.1.2 | Постановка задач | 1d? | 2005-02-28 | 2005-03-01 | 520 | 13d | 0d |
| 522 | 6.3.1.3 | Implimentation | 1d? | 2005-03-01 | 2005-03-02 | 521 | 13d | 0d |
| 523 | 6.3.1.4 | Dilogs/VO/Icons/Objects/Animations | 1d? | 2005-03-02 | 2005-03-03 | 522 | 13d | 0d |
| 524 | 6.3.1.5 | Настройка | 1d? | 2005-03-03 | 2005-03-04 | 523 | 13d |  |
| 525 | 6.3.2 | **Script 2** | 5d? | 2005-02-26 | 2005-03-04 |  | 13d |  |
| 526 | 6.3.2.1 | Scenario(text) | 1d? | 2005-02-26 | 2005-02-28 |  | 13d | 0d |
| 527 | 6.3.2.2 | Постановка задач | 1d? | 2005-02-28 | 2005-03-01 | 526 | 13d | 0d |
| 528 | 6.3.2.3 | Implimentation | 1d? | 2005-03-01 | 2005-03-02 | 527 | 13d | 0d |
| 529 | 6.3.2.4 | Dilogs/VO/Icons/Objects/Animations | 1d? | 2005-03-02 | 2005-03-03 | 528 | 13d | 0d |
| 530 | 6.3.2.5 | Настройка | 1d? | 2005-03-03 | 2005-03-04 | 529 | 13d |  |
| 531 | 6.3.3 | **Script 3** | 5d? | 2005-02-26 | 2005-03-04 |  | 13d |  |
| 532 | 6.3.3.1 | Scenario(text) | 1d? | 2005-02-26 | 2005-02-28 |  | 13d | 0d |
| 533 | 6.3.3.2 | Постановка задач | 1d? | 2005-02-28 | 2005-03-01 | 532 | 13d | 0d |
| 534 | 6.3.3.3 | Implimentation | 1d? | 2005-03-01 | 2005-03-02 | 533 | 13d | 0d |
| 535 | 6.3.3.4 | Dilogs/VO/Icons/Objects/Animations | 1d? | 2005-03-02 | 2005-03-03 | 534 | 13d | 0d |
| 536 | 6.3.3.5 | Настройка | 1d? | 2005-03-03 | 2005-03-04 | 535 | 13d |  |

| ID | WBS | Task | Duration | Start | Finish | Predecessors | Total slack | Free slack | Deadline | Resources | Work |
| --- | --- | --- | --- | --- | --- | --- | --- | --- | --- | --- | --- |
| 537 | 6.3.4 | **Script 4** | 5d? | 2005-02-26 | 2005-03-04 |  | 13d |  |  |  |  |
| 538 | 6.3.4.1 | Scenario(text) | 1d? | 2005-02-26 | 2005-02-28 |  | 13d | 0d |  |  |  |
| 539 | 6.3.4.2 | Постановка задач | 1d? | 2005-02-28 | 2005-03-01 | 538 | 13d | 0d |  |  |  |
| 540 | 6.3.4.3 | Implimentation | 1d? | 2005-03-01 | 2005-03-02 | 539 | 13d | 0d |  |  |  |
| 541 | 6.3.4.4 | Dilogs/VO/Icons/Objects/Animations | 1d? | 2005-03-02 | 2005-03-03 | 540 | 13d | 0d |  |  |  |
| 542 | 6.3.4.5 | Настройка | 1d? | 2005-03-03 | 2005-03-04 | 541 | 13d |  |  |  |  |
| 543 | 6.3.5 | **Script 5** | 5d? | 2005-02-26 | 2005-03-04 |  | 13d |  |  |  |  |
| 544 | 6.3.5.1 | Scenario(text) | 1d? | 2005-02-26 | 2005-02-28 |  | 13d | 0d |  |  |  |
| 545 | 6.3.5.2 | Постановка задач | 1d? | 2005-02-28 | 2005-03-01 | 544 | 13d | 0d |  |  |  |
| 546 | 6.3.5.3 | Implimentation | 1d? | 2005-03-01 | 2005-03-02 | 545 | 13d | 0d |  |  |  |
| 547 | 6.3.5.4 | Dilogs/VO/Icons/Objects/Animations | 1d? | 2005-03-02 | 2005-03-03 | 546 | 13d | 0d |  |  |  |
| 548 | 6.3.5.5 | Настройка | 1d? | 2005-03-03 | 2005-03-04 | 547 | 13d |  |  |  |  |
| 550 | 7 | **13_Dead_City** | 11d? | 2005-03-11 | 2005-03-24 | 472 | 7d |  | 2005-04-29 | Рома, Змей | 176h |
| 551 | 7.1 | **LevelDesign** | 11d? | 2005-03-11 | 2005-03-24 |  | 7d |  | 2005-04-01 | Rainbow | 88h |
| 552 | 7.1.1 | **Stage 1** | 11d? | 2005-03-11 | 2005-03-24 |  | 7d |  |  |  |  |
| 553 | 7.1.1.1 | List of Changes | 2d | 2005-03-11 | 2005-03-14 |  | 7d | 0d |  |  |  |
| 554 | 7.1.1.2 | Changed Geometry | 1d? | 2005-03-14 | 2005-03-15 | 553 | 7d | 0d |  |  |  |
| 555 | 7.1.1.3 | Check List 1 | 1d? | 2005-03-15 | 2005-03-16 | 554 | 7d | 0d |  |  |  |
| 556 | 7.1.1.4 | Check List 2 | 1d? | 2005-03-16 | 2005-03-17 | 555 | 7d | 0d |  |  |  |
| 557 | 7.1.1.5 | Check List 3 | 1d? | 2005-03-17 | 2005-03-18 | 556 | 7d | 0d |  |  |  |
| 558 | 7.1.1.6 | Check List 4 | 1d? | 2005-03-18 | 2005-03-19 | 557 | 7d | 0d |  |  |  |
| 559 | 7.1.1.7 | Render Geometry | 1d? | 2005-03-19 | 2005-03-21 | 558 | 7d | 0d |  |  |  |
| 560 | 7.1.1.8 | Grass | 1d? | 2005-03-21 | 2005-03-22 | 559 | 7d | 0d |  |  |  |
| 561 | 7.1.1.9 | AI Maps | 1d? | 2005-03-22 | 2005-03-23 | 560 | 7d | 0d |  |  |  |
| 562 | 7.1.1.10 | Graphs | 1d? | 2005-03-23 | 2005-03-24 | 561 | 7d |  |  |  |  |

| ID | WBS | Task | Duration | Start | Finish | Predecessors | Total slack | Free slack |
| --- | --- | --- | --- | --- | --- | --- | --- | --- |
| 564 | 7.2 | **GameDesign** | 3d? | 2005-03-11 | 2005-03-15 |  | 39d |  |
| 565 | 7.2.1 | **Secrets** | 3d? | 2005-03-11 | 2005-03-15 |  | 39d |  |
| 566 | 7.2.1.1 | **Stage 1** | 3d? | 2005-03-11 | 2005-03-15 |  | 39d |  |
| 567 | 7.2.1.1.1 | Design | 1d? | 2005-03-11 | 2005-03-12 |  | 39d | 0d |
| 568 | 7.2.1.1.2 | Implementation | 1d? | 2005-03-12 | 2005-03-14 | 567 | 39d | 0d |
| 569 | 7.2.1.1.3 | Tuning | 1d? | 2005-03-14 | 2005-03-15 | 568 | 39d |  |
| 570 | 7.2.2 | **Smartterrains** | 3d? | 2005-03-11 | 2005-03-15 |  | 39d |  |
| 571 | 7.2.2.1 | **Stage 1** | 3d? | 2005-03-11 | 2005-03-15 |  | 39d |  |
| 572 | 7.2.2.1.1 | Design | 1d? | 2005-03-11 | 2005-03-12 |  | 39d | 0d |
| 573 | 7.2.2.1.2 | Implementation | 1d? | 2005-03-12 | 2005-03-14 | 572 | 39d | 0d |
| 574 | 7.2.2.1.3 | Tuning | 1d? | 2005-03-14 | 2005-03-15 | 573 | 39d |  |
| 575 | 7.2.3 | **Monsters/Spawns** | 3d? | 2005-03-11 | 2005-03-15 |  | 39d |  |
| 576 | 7.2.3.1 | **Stage 1** | 3d? | 2005-03-11 | 2005-03-15 |  | 39d |  |
| 577 | 7.2.3.1.1 | Design | 1d? | 2005-03-11 | 2005-03-12 |  | 39d | 0d |
| 578 | 7.2.3.1.2 | Implementation | 1d? | 2005-03-12 | 2005-03-14 | 577 | 39d | 0d |
| 579 | 7.2.3.1.3 | Tuning | 1d? | 2005-03-14 | 2005-03-15 | 578 | 39d |  |
| 580 | 7.2.4 | **Stalkers/Spawns** | 3d? | 2005-03-11 | 2005-03-15 |  | 39d |  |
| 581 | 7.2.4.1 | **Stage 1** | 3d? | 2005-03-11 | 2005-03-15 |  | 39d |  |
| 582 | 7.2.4.1.1 | Design | 1d? | 2005-03-11 | 2005-03-12 |  | 39d | 0d |
| 583 | 7.2.4.1.2 | Implementation | 1d? | 2005-03-12 | 2005-03-14 | 582 | 39d | 0d |
| 584 | 7.2.4.1.3 | Tuning | 1d? | 2005-03-14 | 2005-03-15 | 583 | 39d |  |
| 585 | 7.2.5 | **Anomalies/Spawns** | 3d? | 2005-03-11 | 2005-03-15 |  | 39d |  |
| 586 | 7.2.5.1 | **Stage 1** | 3d? | 2005-03-11 | 2005-03-15 |  | 39d |  |
| 587 | 7.2.5.1.1 | Design | 1d? | 2005-03-11 | 2005-03-12 |  | 39d | 0d |
| 588 | 7.2.5.1.2 | Implementation | 1d? | 2005-03-12 | 2005-03-14 | 587 | 39d | 0d |
| 589 | 7.2.5.1.3 | Tuning | 1d? | 2005-03-14 | 2005-03-15 | 588 | 39d |  |

| ID | WBS | Task | Duration | Start | Finish | Predecessors | Total slack | Free slack |
| --- | --- | --- | --- | --- | --- | --- | --- | --- |
| 590 | 7.2.6 | **Physicks** | 3d? | 2005-03-11 | 2005-03-15 |  | 39d |  |
| 591 | 7.2.6.1 | **Stage 1** | 3d? | 2005-03-11 | 2005-03-15 |  | 39d |  |
| 592 | 7.2.6.1.1 | Design | 1d? | 2005-03-11 | 2005-03-12 |  | 39d | 0d |
| 593 | 7.2.6.1.2 | Implementation | 1d? | 2005-03-12 | 2005-03-14 | 592 | 39d | 0d |
| 594 | 7.2.6.1.3 | Tuning | 1d? | 2005-03-14 | 2005-03-15 | 593 | 39d |  |
| 596 | 7.3 | **Scripts** | 5d? | 2005-03-11 | 2005-03-17 |  | 37d |  |
| 597 | 7.3.1 | **Script 1** | 5d? | 2005-03-11 | 2005-03-17 |  | 37d |  |
| 598 | 7.3.1.1 | Scenario(text) | 1d? | 2005-03-11 | 2005-03-12 |  | 37d | 0d |
| 599 | 7.3.1.2 | Постановка задач | 1d? | 2005-03-12 | 2005-03-14 | 598 | 37d | 0d |
| 600 | 7.3.1.3 | Implimentation | 1d? | 2005-03-14 | 2005-03-15 | 599 | 37d | 0d |
| 601 | 7.3.1.4 | Dilogs/VO/Icons/Objects/Animations | 1d? | 2005-03-15 | 2005-03-16 | 600 | 37d | 0d |
| 602 | 7.3.1.5 | Настройка | 1d? | 2005-03-16 | 2005-03-17 | 601 | 37d |  |
| 603 | 7.3.2 | **Script 2** | 5d? | 2005-03-11 | 2005-03-17 |  | 37d |  |
| 604 | 7.3.2.1 | Scenario(text) | 1d? | 2005-03-11 | 2005-03-12 |  | 37d | 0d |
| 605 | 7.3.2.2 | Постановка задач | 1d? | 2005-03-12 | 2005-03-14 | 604 | 37d | 0d |
| 606 | 7.3.2.3 | Implimentation | 1d? | 2005-03-14 | 2005-03-15 | 605 | 37d | 0d |
| 607 | 7.3.2.4 | Dilogs/VO/Icons/Objects/Animations | 1d? | 2005-03-15 | 2005-03-16 | 606 | 37d | 0d |
| 608 | 7.3.2.5 | Настройка | 1d? | 2005-03-16 | 2005-03-17 | 607 | 37d |  |
| 609 | 7.3.3 | **Script 3** | 5d? | 2005-03-11 | 2005-03-17 |  | 37d |  |
| 610 | 7.3.3.1 | Scenario(text) | 1d? | 2005-03-11 | 2005-03-12 |  | 37d | 0d |
| 611 | 7.3.3.2 | Постановка задач | 1d? | 2005-03-12 | 2005-03-14 | 610 | 37d | 0d |
| 612 | 7.3.3.3 | Implimentation | 1d? | 2005-03-14 | 2005-03-15 | 611 | 37d | 0d |
| 613 | 7.3.3.4 | Dilogs/VO/Icons/Objects/Animations | 1d? | 2005-03-15 | 2005-03-16 | 612 | 37d | 0d |
| 614 | 7.3.3.5 | Настройка | 1d? | 2005-03-16 | 2005-03-17 | 613 | 37d |  |

| ID | WBS | Task | Duration | Start | Finish | Predecessors | Total slack | Free slack | Deadline | Resources | Work |
| --- | --- | --- | --- | --- | --- | --- | --- | --- | --- | --- | --- |
| 615 | 7.3.4 | **Script 4** | 5d? | 2005-03-11 | 2005-03-17 |  | 37d |  |  |  |  |
| 616 | 7.3.4.1 | Scenario(text) | 1d? | 2005-03-11 | 2005-03-12 |  | 37d | 0d |  |  |  |
| 617 | 7.3.4.2 | Постановка задач | 1d? | 2005-03-12 | 2005-03-14 | 616 | 37d | 0d |  |  |  |
| 618 | 7.3.4.3 | Implimentation | 1d? | 2005-03-14 | 2005-03-15 | 617 | 37d | 0d |  |  |  |
| 619 | 7.3.4.4 | Dilogs/VO/Icons/Objects/Animations | 1d? | 2005-03-15 | 2005-03-16 | 618 | 37d | 0d |  |  |  |
| 620 | 7.3.4.5 | Настройка | 1d? | 2005-03-16 | 2005-03-17 | 619 | 37d |  |  |  |  |
| 621 | 7.3.5 | **Script 5** | 5d? | 2005-03-11 | 2005-03-17 |  | 37d |  |  |  |  |
| 622 | 7.3.5.1 | Scenario(text) | 1d? | 2005-03-11 | 2005-03-12 |  | 37d | 0d |  |  |  |
| 623 | 7.3.5.2 | Постановка задач | 1d? | 2005-03-12 | 2005-03-14 | 622 | 37d | 0d |  |  |  |
| 624 | 7.3.5.3 | Implimentation | 1d? | 2005-03-14 | 2005-03-15 | 623 | 37d | 0d |  |  |  |
| 625 | 7.3.5.4 | Dilogs/VO/Icons/Objects/Animations | 1d? | 2005-03-15 | 2005-03-16 | 624 | 37d | 0d |  |  |  |
| 626 | 7.3.5.5 | Настройка | 1d? | 2005-03-16 | 2005-03-17 | 625 | 37d |  |  |  |  |
| 630 | 8 | **06_Dark_Valley_Underground** | 11d? | 2005-01-24 | 2005-02-04 |  | 1.88d | 0d | 2005-03-01 | Джим, Угрюмый | 88h |
| 631 | 8.1 | **LevelDesign** | 11d? | 2005-01-24 | 2005-02-04 |  | 1.88d |  | 2005-02-07 |  |  |
| 632 | 8.1.1 | **Stage 1** | 11d? | 2005-01-24 | 2005-02-04 |  | 1.88d |  |  |  |  |
| 633 | 8.1.1.1 | List of Changes | 2d | 2005-01-24 | 2005-01-25 |  | 1.88d | 0d |  |  |  |
| 634 | 8.1.1.2 | Changed Geometry | 1d? | 2005-01-26 | 2005-01-26 | 633 | 1.88d | 0d |  |  |  |
| 635 | 8.1.1.3 | Check List 1 | 1d? | 2005-01-27 | 2005-01-27 | 634 | 1.88d | 0d |  |  |  |
| 636 | 8.1.1.4 | Check List 2 | 1d? | 2005-01-28 | 2005-01-28 | 635 | 1.88d | 0d |  |  |  |
| 637 | 8.1.1.5 | Check List 3 | 1d? | 2005-01-29 | 2005-01-29 | 636 | 1.88d | 0d |  |  |  |
| 638 | 8.1.1.6 | Check List 4 | 1d? | 2005-01-31 | 2005-01-31 | 637 | 1.88d | 0d |  |  |  |
| 639 | 8.1.1.7 | Render Geometry | 1d? | 2005-02-01 | 2005-02-01 | 638 | 1.88d | 0d |  |  |  |
| 640 | 8.1.1.8 | Grass | 1d? | 2005-02-02 | 2005-02-02 | 639 | 1.88d | 0d |  |  |  |
| 641 | 8.1.1.9 | AI Maps | 1d? | 2005-02-03 | 2005-02-03 | 640 | 1.88d | 0d |  |  |  |
| 642 | 8.1.1.10 | Graphs | 1d? | 2005-02-04 | 2005-02-04 | 641 | 1.88d |  |  |  |  |

| ID | WBS | Task | Duration | Start | Finish | Predecessors | Total slack | Free slack |
| --- | --- | --- | --- | --- | --- | --- | --- | --- |
| 644 | 8.2 | **GameDesign** | 3d? | 2005-01-24 | 2005-01-26 |  | 17.88d |  |
| 645 | 8.2.1 | **Secrets** | 3d? | 2005-01-24 | 2005-01-26 |  | 17.88d |  |
| 646 | 8.2.1.1 | **Stage 1** | 3d? | 2005-01-24 | 2005-01-26 |  | 17.88d |  |
| 647 | 8.2.1.1.1 | Design | 1d? | 2005-01-24 | 2005-01-24 |  | 17.88d | 0d |
| 648 | 8.2.1.1.2 | Implementation | 1d? | 2005-01-25 | 2005-01-25 | 647 | 17.88d | 0d |
| 649 | 8.2.1.1.3 | Tuning | 1d? | 2005-01-26 | 2005-01-26 | 648 | 17.88d |  |
| 650 | 8.2.2 | **Smartterrains** | 3d? | 2005-01-24 | 2005-01-26 |  | 17.88d |  |
| 651 | 8.2.2.1 | **Stage 1** | 3d? | 2005-01-24 | 2005-01-26 |  | 17.88d |  |
| 652 | 8.2.2.1.1 | Design | 1d? | 2005-01-24 | 2005-01-24 |  | 17.88d | 0d |
| 653 | 8.2.2.1.2 | Implementation | 1d? | 2005-01-25 | 2005-01-25 | 652 | 17.88d | 0d |
| 654 | 8.2.2.1.3 | Tuning | 1d? | 2005-01-26 | 2005-01-26 | 653 | 17.88d |  |
| 655 | 8.2.3 | **Monsters/Spawns** | 3d? | 2005-01-24 | 2005-01-26 |  | 17.88d |  |
| 656 | 8.2.3.1 | **Stage 1** | 3d? | 2005-01-24 | 2005-01-26 |  | 17.88d |  |
| 657 | 8.2.3.1.1 | Design | 1d? | 2005-01-24 | 2005-01-24 |  | 17.88d | 0d |
| 658 | 8.2.3.1.2 | Implementation | 1d? | 2005-01-25 | 2005-01-25 | 657 | 17.88d | 0d |
| 659 | 8.2.3.1.3 | Tuning | 1d? | 2005-01-26 | 2005-01-26 | 658 | 17.88d |  |
| 660 | 8.2.4 | **Stalkers/Spawns** | 3d? | 2005-01-24 | 2005-01-26 |  | 17.88d |  |
| 661 | 8.2.4.1 | **Stage 1** | 3d? | 2005-01-24 | 2005-01-26 |  | 17.88d |  |
| 662 | 8.2.4.1.1 | Design | 1d? | 2005-01-24 | 2005-01-24 |  | 17.88d | 0d |
| 663 | 8.2.4.1.2 | Implementation | 1d? | 2005-01-25 | 2005-01-25 | 662 | 17.88d | 0d |
| 664 | 8.2.4.1.3 | Tuning | 1d? | 2005-01-26 | 2005-01-26 | 663 | 17.88d |  |
| 665 | 8.2.5 | **Anomalies/Spawns** | 3d? | 2005-01-24 | 2005-01-26 |  | 17.88d |  |
| 666 | 8.2.5.1 | **Stage 1** | 3d? | 2005-01-24 | 2005-01-26 |  | 17.88d |  |
| 667 | 8.2.5.1.1 | Design | 1d? | 2005-01-24 | 2005-01-24 |  | 17.88d | 0d |
| 668 | 8.2.5.1.2 | Implementation | 1d? | 2005-01-25 | 2005-01-25 | 667 | 17.88d | 0d |
| 669 | 8.2.5.1.3 | Tuning | 1d? | 2005-01-26 | 2005-01-26 | 668 | 17.88d |  |

| ID | WBS | Task | Duration | Start | Finish | Predecessors | Total slack | Free slack |
| --- | --- | --- | --- | --- | --- | --- | --- | --- |
| 670 | 8.2.6 | **Physicks** | 3d? | 2005-01-24 | 2005-01-26 |  | 17.88d |  |
| 671 | 8.2.6.1 | **Stage 1** | 3d? | 2005-01-24 | 2005-01-26 |  | 17.88d |  |
| 672 | 8.2.6.1.1 | Design | 1d? | 2005-01-24 | 2005-01-24 |  | 17.88d | 0d |
| 673 | 8.2.6.1.2 | Implementation | 1d? | 2005-01-25 | 2005-01-25 | 672 | 17.88d | 0d |
| 674 | 8.2.6.1.3 | Tuning | 1d? | 2005-01-26 | 2005-01-26 | 673 | 17.88d |  |
| 676 | 8.3 | **Scripts** | 5d? | 2005-01-24 | 2005-01-28 |  | 15.88d |  |
| 677 | 8.3.1 | **Script 1** | 5d? | 2005-01-24 | 2005-01-28 |  | 15.88d |  |
| 678 | 8.3.1.1 | Scenario(text) | 1d? | 2005-01-24 | 2005-01-24 |  | 15.88d | 0d |
| 679 | 8.3.1.2 | Постановка задач | 1d? | 2005-01-25 | 2005-01-25 | 678 | 15.88d | 0d |
| 680 | 8.3.1.3 | Implimentation | 1d? | 2005-01-26 | 2005-01-26 | 679 | 15.88d | 0d |
| 681 | 8.3.1.4 | Dilogs/VO/Icons/Objects/Animations | 1d? | 2005-01-27 | 2005-01-27 | 680 | 15.88d | 0d |
| 682 | 8.3.1.5 | Настройка | 1d? | 2005-01-28 | 2005-01-28 | 681 | 15.88d |  |
| 683 | 8.3.2 | **Script 2** | 5d? | 2005-01-24 | 2005-01-28 |  | 15.88d |  |
| 684 | 8.3.2.1 | Scenario(text) | 1d? | 2005-01-24 | 2005-01-24 |  | 15.88d | 0d |
| 685 | 8.3.2.2 | Постановка задач | 1d? | 2005-01-25 | 2005-01-25 | 684 | 15.88d | 0d |
| 686 | 8.3.2.3 | Implimentation | 1d? | 2005-01-26 | 2005-01-26 | 685 | 15.88d | 0d |
| 687 | 8.3.2.4 | Dilogs/VO/Icons/Objects/Animations | 1d? | 2005-01-27 | 2005-01-27 | 686 | 15.88d | 0d |
| 688 | 8.3.2.5 | Настройка | 1d? | 2005-01-28 | 2005-01-28 | 687 | 15.88d |  |
| 689 | 8.3.3 | **Script 3** | 5d? | 2005-01-24 | 2005-01-28 |  | 15.88d |  |
| 690 | 8.3.3.1 | Scenario(text) | 1d? | 2005-01-24 | 2005-01-24 |  | 15.88d | 0d |
| 691 | 8.3.3.2 | Постановка задач | 1d? | 2005-01-25 | 2005-01-25 | 690 | 15.88d | 0d |
| 692 | 8.3.3.3 | Implimentation | 1d? | 2005-01-26 | 2005-01-26 | 691 | 15.88d | 0d |
| 693 | 8.3.3.4 | Dilogs/VO/Icons/Objects/Animations | 1d? | 2005-01-27 | 2005-01-27 | 692 | 15.88d | 0d |
| 694 | 8.3.3.5 | Настройка | 1d? | 2005-01-28 | 2005-01-28 | 693 | 15.88d |  |

| ID | WBS | Task | Duration | Start | Finish | Predecessors | Total slack | Free slack | Deadline | Resources | Work |
| --- | --- | --- | --- | --- | --- | --- | --- | --- | --- | --- | --- |
| 695 | 8.3.4 | **Script 4** | 5d? | 2005-01-24 | 2005-01-28 |  | 15.88d |  |  |  |  |
| 696 | 8.3.4.1 | Scenario(text) | 1d? | 2005-01-24 | 2005-01-24 |  | 15.88d | 0d |  |  |  |
| 697 | 8.3.4.2 | Постановка задач | 1d? | 2005-01-25 | 2005-01-25 | 696 | 15.88d | 0d |  |  |  |
| 698 | 8.3.4.3 | Implimentation | 1d? | 2005-01-26 | 2005-01-26 | 697 | 15.88d | 0d |  |  |  |
| 699 | 8.3.4.4 | Dilogs/VO/Icons/Objects/Animations | 1d? | 2005-01-27 | 2005-01-27 | 698 | 15.88d | 0d |  |  |  |
| 700 | 8.3.4.5 | Настройка | 1d? | 2005-01-28 | 2005-01-28 | 699 | 15.88d |  |  |  |  |
| 701 | 8.3.5 | **Script 5** | 5d? | 2005-01-24 | 2005-01-28 |  | 15.88d |  |  |  |  |
| 702 | 8.3.5.1 | Scenario(text) | 1d? | 2005-01-24 | 2005-01-24 |  | 15.88d | 0d |  |  |  |
| 703 | 8.3.5.2 | Постановка задач | 1d? | 2005-01-25 | 2005-01-25 | 702 | 15.88d | 0d |  |  |  |
| 704 | 8.3.5.3 | Implimentation | 1d? | 2005-01-26 | 2005-01-26 | 703 | 15.88d | 0d |  |  |  |
| 705 | 8.3.5.4 | Dilogs/VO/Icons/Objects/Animations | 1d? | 2005-01-27 | 2005-01-27 | 704 | 15.88d | 0d |  |  |  |
| 706 | 8.3.5.5 | Настройка | 1d? | 2005-01-28 | 2005-01-28 | 705 | 15.88d |  |  |  |  |
| 708 | 9 | **16_Radar_Antena_Control_Undergaround** | 11d? | 2005-02-05 | 2005-02-17 | 630 | 9.88d | 0d | 2005-04-01 | Джим, Угрюмый | 88h |
| 709 | 9.1 | **LevelDesign** | 11d? | 2005-02-05 | 2005-02-17 |  | 9.88d |  | 2005-03-01 |  |  |
| 710 | 9.1.1 | **Stage 1** | 11d? | 2005-02-05 | 2005-02-17 |  | 9.88d |  |  |  |  |
| 711 | 9.1.1.1 | List of Changes | 2d | 2005-02-05 | 2005-02-07 |  | 9.88d | 0d |  |  |  |
| 712 | 9.1.1.2 | Changed Geometry | 1d? | 2005-02-08 | 2005-02-08 | 711 | 9.88d | 0d |  |  |  |
| 713 | 9.1.1.3 | Check List 1 | 1d? | 2005-02-09 | 2005-02-09 | 712 | 9.88d | 0d |  |  |  |
| 714 | 9.1.1.4 | Check List 2 | 1d? | 2005-02-10 | 2005-02-10 | 713 | 9.88d | 0d |  |  |  |
| 715 | 9.1.1.5 | Check List 3 | 1d? | 2005-02-11 | 2005-02-11 | 714 | 9.88d | 0d |  |  |  |
| 716 | 9.1.1.6 | Check List 4 | 1d? | 2005-02-12 | 2005-02-12 | 715 | 9.88d | 0d |  |  |  |
| 717 | 9.1.1.7 | Render Geometry | 1d? | 2005-02-14 | 2005-02-14 | 716 | 9.88d | 0d |  |  |  |
| 718 | 9.1.1.8 | Grass | 1d? | 2005-02-15 | 2005-02-15 | 717 | 9.88d | 0d |  |  |  |
| 719 | 9.1.1.9 | AI Maps | 1d? | 2005-02-16 | 2005-02-16 | 718 | 9.88d | 0d |  |  |  |
| 720 | 9.1.1.10 | Graphs | 1d? | 2005-02-17 | 2005-02-17 | 719 | 9.88d |  |  |  |  |

| ID | WBS | Task | Duration | Start | Finish | Predecessors | Total slack | Free slack |
| --- | --- | --- | --- | --- | --- | --- | --- | --- |
| 722 | 9.2 | **GameDesign** | 3d? | 2005-02-05 | 2005-02-08 |  | 33.88d |  |
| 723 | 9.2.1 | **Secrets** | 3d? | 2005-02-05 | 2005-02-08 |  | 33.88d |  |
| 724 | 9.2.1.1 | **Stage 1** | 3d? | 2005-02-05 | 2005-02-08 |  | 33.88d |  |
| 725 | 9.2.1.1.1 | Design | 1d? | 2005-02-05 | 2005-02-05 |  | 33.88d | 0d |
| 726 | 9.2.1.1.2 | Implementation | 1d? | 2005-02-07 | 2005-02-07 | 725 | 33.88d | 0d |
| 727 | 9.2.1.1.3 | Tuning | 1d? | 2005-02-08 | 2005-02-08 | 726 | 33.88d |  |
| 728 | 9.2.2 | **Smartterrains** | 3d? | 2005-02-05 | 2005-02-08 |  | 33.88d |  |
| 729 | 9.2.2.1 | **Stage 1** | 3d? | 2005-02-05 | 2005-02-08 |  | 33.88d |  |
| 730 | 9.2.2.1.1 | Design | 1d? | 2005-02-05 | 2005-02-05 |  | 33.88d | 0d |
| 731 | 9.2.2.1.2 | Implementation | 1d? | 2005-02-07 | 2005-02-07 | 730 | 33.88d | 0d |
| 732 | 9.2.2.1.3 | Tuning | 1d? | 2005-02-08 | 2005-02-08 | 731 | 33.88d |  |
| 733 | 9.2.3 | **Monsters/Spawns** | 3d? | 2005-02-05 | 2005-02-08 |  | 33.88d |  |
| 734 | 9.2.3.1 | **Stage 1** | 3d? | 2005-02-05 | 2005-02-08 |  | 33.88d |  |
| 735 | 9.2.3.1.1 | Design | 1d? | 2005-02-05 | 2005-02-05 |  | 33.88d | 0d |
| 736 | 9.2.3.1.2 | Implementation | 1d? | 2005-02-07 | 2005-02-07 | 735 | 33.88d | 0d |
| 737 | 9.2.3.1.3 | Tuning | 1d? | 2005-02-08 | 2005-02-08 | 736 | 33.88d |  |
| 738 | 9.2.4 | **Stalkers/Spawns** | 3d? | 2005-02-05 | 2005-02-08 |  | 33.88d |  |
| 739 | 9.2.4.1 | **Stage 1** | 3d? | 2005-02-05 | 2005-02-08 |  | 33.88d |  |
| 740 | 9.2.4.1.1 | Design | 1d? | 2005-02-05 | 2005-02-05 |  | 33.88d | 0d |
| 741 | 9.2.4.1.2 | Implementation | 1d? | 2005-02-07 | 2005-02-07 | 740 | 33.88d | 0d |
| 742 | 9.2.4.1.3 | Tuning | 1d? | 2005-02-08 | 2005-02-08 | 741 | 33.88d |  |
| 743 | 9.2.5 | **Anomalies/Spawns** | 3d? | 2005-02-05 | 2005-02-08 |  | 33.88d |  |
| 744 | 9.2.5.1 | **Stage 1** | 3d? | 2005-02-05 | 2005-02-08 |  | 33.88d |  |
| 745 | 9.2.5.1.1 | Design | 1d? | 2005-02-05 | 2005-02-05 |  | 33.88d | 0d |
| 746 | 9.2.5.1.2 | Implementation | 1d? | 2005-02-07 | 2005-02-07 | 745 | 33.88d | 0d |
| 747 | 9.2.5.1.3 | Tuning | 1d? | 2005-02-08 | 2005-02-08 | 746 | 33.88d |  |

| ID | WBS | Task | Duration | Start | Finish | Predecessors | Total slack | Free slack |
| --- | --- | --- | --- | --- | --- | --- | --- | --- |
| 748 | 9.2.6 | **Physicks** | 3d? | 2005-02-05 | 2005-02-08 |  | 33.88d |  |
| 749 | 9.2.6.1 | **Stage 1** | 3d? | 2005-02-05 | 2005-02-08 |  | 33.88d |  |
| 750 | 9.2.6.1.1 | Design | 1d? | 2005-02-05 | 2005-02-05 |  | 33.88d | 0d |
| 751 | 9.2.6.1.2 | Implementation | 1d? | 2005-02-07 | 2005-02-07 | 750 | 33.88d | 0d |
| 752 | 9.2.6.1.3 | Tuning | 1d? | 2005-02-08 | 2005-02-08 | 751 | 33.88d |  |
| 754 | 9.3 | **Scripts** | 5d? | 2005-02-05 | 2005-02-10 |  | 31.88d |  |
| 755 | 9.3.1 | **Script 1** | 5d? | 2005-02-05 | 2005-02-10 |  | 31.88d |  |
| 756 | 9.3.1.1 | Scenario(text) | 1d? | 2005-02-05 | 2005-02-05 |  | 31.88d | 0d |
| 757 | 9.3.1.2 | Постановка задач | 1d? | 2005-02-07 | 2005-02-07 | 756 | 31.88d | 0d |
| 758 | 9.3.1.3 | Implimentation | 1d? | 2005-02-08 | 2005-02-08 | 757 | 31.88d | 0d |
| 759 | 9.3.1.4 | Dilogs/VO/Icons/Objects/Animations | 1d? | 2005-02-09 | 2005-02-09 | 758 | 31.88d | 0d |
| 760 | 9.3.1.5 | Настройка | 1d? | 2005-02-10 | 2005-02-10 | 759 | 31.88d |  |
| 761 | 9.3.2 | **Script 2** | 5d? | 2005-02-05 | 2005-02-10 |  | 31.88d |  |
| 762 | 9.3.2.1 | Scenario(text) | 1d? | 2005-02-05 | 2005-02-05 |  | 31.88d | 0d |
| 763 | 9.3.2.2 | Постановка задач | 1d? | 2005-02-07 | 2005-02-07 | 762 | 31.88d | 0d |
| 764 | 9.3.2.3 | Implimentation | 1d? | 2005-02-08 | 2005-02-08 | 763 | 31.88d | 0d |
| 765 | 9.3.2.4 | Dilogs/VO/Icons/Objects/Animations | 1d? | 2005-02-09 | 2005-02-09 | 764 | 31.88d | 0d |
| 766 | 9.3.2.5 | Настройка | 1d? | 2005-02-10 | 2005-02-10 | 765 | 31.88d |  |
| 767 | 9.3.3 | **Script 3** | 5d? | 2005-02-05 | 2005-02-10 |  | 31.88d |  |
| 768 | 9.3.3.1 | Scenario(text) | 1d? | 2005-02-05 | 2005-02-05 |  | 31.88d | 0d |
| 769 | 9.3.3.2 | Постановка задач | 1d? | 2005-02-07 | 2005-02-07 | 768 | 31.88d | 0d |
| 770 | 9.3.3.3 | Implimentation | 1d? | 2005-02-08 | 2005-02-08 | 769 | 31.88d | 0d |
| 771 | 9.3.3.4 | Dilogs/VO/Icons/Objects/Animations | 1d? | 2005-02-09 | 2005-02-09 | 770 | 31.88d | 0d |
| 772 | 9.3.3.5 | Настройка | 1d? | 2005-02-10 | 2005-02-10 | 771 | 31.88d |  |

| ID | WBS | Task | Duration | Start | Finish | Predecessors | Total slack | Free slack | Deadline | Resources | Work |
| --- | --- | --- | --- | --- | --- | --- | --- | --- | --- | --- | --- |
| 773 | 9.3.4 | **Script 4** | 5d? | 2005-02-05 | 2005-02-10 |  | 31.88d |  |  |  |  |
| 774 | 9.3.4.1 | Scenario(text) | 1d? | 2005-02-05 | 2005-02-05 |  | 31.88d | 0d |  |  |  |
| 775 | 9.3.4.2 | Постановка задач | 1d? | 2005-02-07 | 2005-02-07 | 774 | 31.88d | 0d |  |  |  |
| 776 | 9.3.4.3 | Implimentation | 1d? | 2005-02-08 | 2005-02-08 | 775 | 31.88d | 0d |  |  |  |
| 777 | 9.3.4.4 | Dilogs/VO/Icons/Objects/Animations | 1d? | 2005-02-09 | 2005-02-09 | 776 | 31.88d | 0d |  |  |  |
| 778 | 9.3.4.5 | Настройка | 1d? | 2005-02-10 | 2005-02-10 | 777 | 31.88d |  |  |  |  |
| 779 | 9.3.5 | **Script 5** | 5d? | 2005-02-05 | 2005-02-10 |  | 31.88d |  |  |  |  |
| 780 | 9.3.5.1 | Scenario(text) | 1d? | 2005-02-05 | 2005-02-05 |  | 31.88d | 0d |  |  |  |
| 781 | 9.3.5.2 | Постановка задач | 1d? | 2005-02-07 | 2005-02-07 | 780 | 31.88d | 0d |  |  |  |
| 782 | 9.3.5.3 | Implimentation | 1d? | 2005-02-08 | 2005-02-08 | 781 | 31.88d | 0d |  |  |  |
| 783 | 9.3.5.4 | Dilogs/VO/Icons/Objects/Animations | 1d? | 2005-02-09 | 2005-02-09 | 782 | 31.88d | 0d |  |  |  |
| 784 | 9.3.5.5 | Настройка | 1d? | 2005-02-10 | 2005-02-10 | 783 | 31.88d |  |  |  |  |
| 786 | 10 | **17_Radar_Monolith_Control_Underground** | 11d? | 2005-02-18 | 2005-03-02 | 708 | 25.88d |  | 2005-04-29 | Джим, Угрюмый | 88h |
| 787 | 10.1 | **LevelDesign** | 11d? | 2005-02-18 | 2005-03-02 |  | 25.88d |  | 2005-04-01 |  |  |
| 788 | 10.1.1 | **Stage 1** | 11d? | 2005-02-18 | 2005-03-02 |  | 25.88d |  |  |  |  |
| 789 | 10.1.1.1 | List of Changes | 2d | 2005-02-18 | 2005-02-19 |  | 25.88d | 0d |  |  |  |
| 790 | 10.1.1.2 | Changed Geometry | 1d? | 2005-02-21 | 2005-02-21 | 789 | 25.88d | 0d |  |  |  |
| 791 | 10.1.1.3 | Check List 1 | 1d? | 2005-02-22 | 2005-02-22 | 790 | 25.88d | 0d |  |  |  |
| 792 | 10.1.1.4 | Check List 2 | 1d? | 2005-02-23 | 2005-02-23 | 791 | 25.88d | 0d |  |  |  |
| 793 | 10.1.1.5 | Check List 3 | 1d? | 2005-02-24 | 2005-02-24 | 792 | 25.88d | 0d |  |  |  |
| 794 | 10.1.1.6 | Check List 4 | 1d? | 2005-02-25 | 2005-02-25 | 793 | 25.88d | 0d |  |  |  |
| 795 | 10.1.1.7 | Render Geometry | 1d? | 2005-02-26 | 2005-02-26 | 794 | 25.88d | 0d |  |  |  |
| 796 | 10.1.1.8 | Grass | 1d? | 2005-02-28 | 2005-02-28 | 795 | 25.88d | 0d |  |  |  |
| 797 | 10.1.1.9 | AI Maps | 1d? | 2005-03-01 | 2005-03-01 | 796 | 25.88d | 0d |  |  |  |
| 798 | 10.1.1.10 | Graphs | 1d? | 2005-03-02 | 2005-03-02 | 797 | 25.88d |  |  |  |  |

| ID | WBS | Task | Duration | Start | Finish | Predecessors | Total slack | Free slack |
| --- | --- | --- | --- | --- | --- | --- | --- | --- |
| 800 | 10.2 | **GameDesign** | 3d? | 2005-02-18 | 2005-02-21 |  | 57.88d |  |
| 801 | 10.2.1 | **Secrets** | 3d? | 2005-02-18 | 2005-02-21 |  | 57.88d |  |
| 802 | 10.2.1.1 | **Stage 1** | 3d? | 2005-02-18 | 2005-02-21 |  | 57.88d |  |
| 803 | 10.2.1.1.1 | Design | 1d? | 2005-02-18 | 2005-02-18 |  | 57.88d | 0d |
| 804 | 10.2.1.1.2 | Implementation | 1d? | 2005-02-19 | 2005-02-19 | 803 | 57.88d | 0d |
| 805 | 10.2.1.1.3 | Tuning | 1d? | 2005-02-21 | 2005-02-21 | 804 | 57.88d |  |
| 806 | 10.2.2 | **Smartterrains** | 3d? | 2005-02-18 | 2005-02-21 |  | 57.88d |  |
| 807 | 10.2.2.1 | **Stage 1** | 3d? | 2005-02-18 | 2005-02-21 |  | 57.88d |  |
| 808 | 10.2.2.1.1 | Design | 1d? | 2005-02-18 | 2005-02-18 |  | 57.88d | 0d |
| 809 | 10.2.2.1.2 | Implementation | 1d? | 2005-02-19 | 2005-02-19 | 808 | 57.88d | 0d |
| 810 | 10.2.2.1.3 | Tuning | 1d? | 2005-02-21 | 2005-02-21 | 809 | 57.88d |  |
| 811 | 10.2.3 | **Monsters/Spawns** | 3d? | 2005-02-18 | 2005-02-21 |  | 57.88d |  |
| 812 | 10.2.3.1 | **Stage 1** | 3d? | 2005-02-18 | 2005-02-21 |  | 57.88d |  |
| 813 | 10.2.3.1.1 | Design | 1d? | 2005-02-18 | 2005-02-18 |  | 57.88d | 0d |
| 814 | 10.2.3.1.2 | Implementation | 1d? | 2005-02-19 | 2005-02-19 | 813 | 57.88d | 0d |
| 815 | 10.2.3.1.3 | Tuning | 1d? | 2005-02-21 | 2005-02-21 | 814 | 57.88d |  |
| 816 | 10.2.4 | **Stalkers/Spawns** | 3d? | 2005-02-18 | 2005-02-21 |  | 57.88d |  |
| 817 | 10.2.4.1 | **Stage 1** | 3d? | 2005-02-18 | 2005-02-21 |  | 57.88d |  |
| 818 | 10.2.4.1.1 | Design | 1d? | 2005-02-18 | 2005-02-18 |  | 57.88d | 0d |
| 819 | 10.2.4.1.2 | Implementation | 1d? | 2005-02-19 | 2005-02-19 | 818 | 57.88d | 0d |
| 820 | 10.2.4.1.3 | Tuning | 1d? | 2005-02-21 | 2005-02-21 | 819 | 57.88d |  |
| 821 | 10.2.5 | **Anomalies/Spawns** | 3d? | 2005-02-18 | 2005-02-21 |  | 57.88d |  |
| 822 | 10.2.5.1 | **Stage 1** | 3d? | 2005-02-18 | 2005-02-21 |  | 57.88d |  |
| 823 | 10.2.5.1.1 | Design | 1d? | 2005-02-18 | 2005-02-18 |  | 57.88d | 0d |
| 824 | 10.2.5.1.2 | Implementation | 1d? | 2005-02-19 | 2005-02-19 | 823 | 57.88d | 0d |
| 825 | 10.2.5.1.3 | Tuning | 1d? | 2005-02-21 | 2005-02-21 | 824 | 57.88d |  |

| ID | WBS | Task | Duration | Start | Finish | Predecessors | Total slack | Free slack |
| --- | --- | --- | --- | --- | --- | --- | --- | --- |
| 826 | 10.2.6 | **Physicks** | 3d? | 2005-02-18 | 2005-02-21 |  | 57.88d |  |
| 827 | 10.2.6.1 | **Stage 1** | 3d? | 2005-02-18 | 2005-02-21 |  | 57.88d |  |
| 828 | 10.2.6.1.1 | Design | 1d? | 2005-02-18 | 2005-02-18 |  | 57.88d | 0d |
| 829 | 10.2.6.1.2 | Implementation | 1d? | 2005-02-19 | 2005-02-19 | 828 | 57.88d | 0d |
| 830 | 10.2.6.1.3 | Tuning | 1d? | 2005-02-21 | 2005-02-21 | 829 | 57.88d |  |
| 832 | 10.3 | **Scripts** | 5d? | 2005-02-18 | 2005-02-23 |  | 55.88d |  |
| 833 | 10.3.1 | **Script 1** | 5d? | 2005-02-18 | 2005-02-23 |  | 55.88d |  |
| 834 | 10.3.1.1 | Scenario(text) | 1d? | 2005-02-18 | 2005-02-18 |  | 55.88d | 0d |
| 835 | 10.3.1.2 | Постановка задач | 1d? | 2005-02-19 | 2005-02-19 | 834 | 55.88d | 0d |
| 836 | 10.3.1.3 | Implimentation | 1d? | 2005-02-21 | 2005-02-21 | 835 | 55.88d | 0d |
| 837 | 10.3.1.4 | Dilogs/VO/Icons/Objects/Animations | 1d? | 2005-02-22 | 2005-02-22 | 836 | 55.88d | 0d |
| 838 | 10.3.1.5 | Настройка | 1d? | 2005-02-23 | 2005-02-23 | 837 | 55.88d |  |
| 839 | 10.3.2 | **Script 2** | 5d? | 2005-02-18 | 2005-02-23 |  | 55.88d |  |
| 840 | 10.3.2.1 | Scenario(text) | 1d? | 2005-02-18 | 2005-02-18 |  | 55.88d | 0d |
| 841 | 10.3.2.2 | Постановка задач | 1d? | 2005-02-19 | 2005-02-19 | 840 | 55.88d | 0d |
| 842 | 10.3.2.3 | Implimentation | 1d? | 2005-02-21 | 2005-02-21 | 841 | 55.88d | 0d |
| 843 | 10.3.2.4 | Dilogs/VO/Icons/Objects/Animations | 1d? | 2005-02-22 | 2005-02-22 | 842 | 55.88d | 0d |
| 844 | 10.3.2.5 | Настройка | 1d? | 2005-02-23 | 2005-02-23 | 843 | 55.88d |  |
| 845 | 10.3.3 | **Script 3** | 5d? | 2005-02-18 | 2005-02-23 |  | 55.88d |  |
| 846 | 10.3.3.1 | Scenario(text) | 1d? | 2005-02-18 | 2005-02-18 |  | 55.88d | 0d |
| 847 | 10.3.3.2 | Постановка задач | 1d? | 2005-02-19 | 2005-02-19 | 846 | 55.88d | 0d |
| 848 | 10.3.3.3 | Implimentation | 1d? | 2005-02-21 | 2005-02-21 | 847 | 55.88d | 0d |
| 849 | 10.3.3.4 | Dilogs/VO/Icons/Objects/Animations | 1d? | 2005-02-22 | 2005-02-22 | 848 | 55.88d | 0d |
| 850 | 10.3.3.5 | Настройка | 1d? | 2005-02-23 | 2005-02-23 | 849 | 55.88d |  |

| ID | WBS | Task | Duration | Start | Finish | Predecessors | Total slack | Free slack | Deadline | Resources | Work |
| --- | --- | --- | --- | --- | --- | --- | --- | --- | --- | --- | --- |
| 851 | 10.3.4 | **Script 4** | 5d? | 2005-02-18 | 2005-02-23 |  | 55.88d |  |  |  |  |
| 852 | 10.3.4.1 | Scenario(text) | 1d? | 2005-02-18 | 2005-02-18 |  | 55.88d | 0d |  |  |  |
| 853 | 10.3.4.2 | Постановка задач | 1d? | 2005-02-19 | 2005-02-19 | 852 | 55.88d | 0d |  |  |  |
| 854 | 10.3.4.3 | Implimentation | 1d? | 2005-02-21 | 2005-02-21 | 853 | 55.88d | 0d |  |  |  |
| 855 | 10.3.4.4 | Dilogs/VO/Icons/Objects/Animations | 1d? | 2005-02-22 | 2005-02-22 | 854 | 55.88d | 0d |  |  |  |
| 856 | 10.3.4.5 | Настройка | 1d? | 2005-02-23 | 2005-02-23 | 855 | 55.88d |  |  |  |  |
| 857 | 10.3.5 | **Script 5** | 5d? | 2005-02-18 | 2005-02-23 |  | 55.88d |  |  |  |  |
| 858 | 10.3.5.1 | Scenario(text) | 1d? | 2005-02-18 | 2005-02-18 |  | 55.88d | 0d |  |  |  |
| 859 | 10.3.5.2 | Постановка задач | 1d? | 2005-02-19 | 2005-02-19 | 858 | 55.88d | 0d |  |  |  |
| 860 | 10.3.5.3 | Implimentation | 1d? | 2005-02-21 | 2005-02-21 | 859 | 55.88d | 0d |  |  |  |
| 861 | 10.3.5.4 | Dilogs/VO/Icons/Objects/Animations | 1d? | 2005-02-22 | 2005-02-22 | 860 | 55.88d | 0d |  |  |  |
| 862 | 10.3.5.5 | Настройка | 1d? | 2005-02-23 | 2005-02-23 | 861 | 55.88d |  |  |  |  |
| 868 | 11 | **08_Rostok_Bar** | 11d? | 2005-01-24 | 2005-02-04 |  | -20.12d | 0d | 2005-02-07 | Коан, Руслан | 88h |
| 869 | 11.1 | **LevelDesign** | 11d? | 2005-01-24 | 2005-02-04 |  | -20.12d | 0d | 2005-02-01 |  |  |
| 870 | 11.1.1 | **Stage 1** | 11d? | 2005-01-24 | 2005-02-04 |  | -20.12d | 0d |  |  |  |
| 871 | 11.1.1.1 | List of Changes | 2d | 2005-01-24 | 2005-01-25 |  | -20.12d | 0d |  |  |  |
| 872 | 11.1.1.2 | Changed Geometry | 1d? | 2005-01-26 | 2005-01-26 | 871 | -20.12d | 0d |  |  |  |
| 873 | 11.1.1.3 | Check List 1 | 1d? | 2005-01-27 | 2005-01-27 | 872 | -20.12d | 0d |  |  |  |
| 874 | 11.1.1.4 | Check List 2 | 1d? | 2005-01-28 | 2005-01-28 | 873 | -20.12d | 0d |  |  |  |
| 875 | 11.1.1.5 | Check List 3 | 1d? | 2005-01-29 | 2005-01-29 | 874 | -20.12d | 0d |  |  |  |
| 876 | 11.1.1.6 | Check List 4 | 1d? | 2005-01-31 | 2005-01-31 | 875 | -20.12d | 0d |  |  |  |
| 877 | 11.1.1.7 | Render Geometry | 1d? | 2005-02-01 | 2005-02-01 | 876 | -20.12d | 0d |  |  |  |
| 878 | 11.1.1.8 | Grass | 1d? | 2005-02-02 | 2005-02-02 | 877 | -20.12d | 0d |  |  |  |
| 879 | 11.1.1.9 | AI Maps | 1d? | 2005-02-03 | 2005-02-03 | 878 | -20.12d | 0d |  |  |  |
| 880 | 11.1.1.10 | Graphs | 1d? | 2005-02-04 | 2005-02-04 | 879 | -20.12d | 0d |  |  |  |

| ID | WBS | Task | Duration | Start | Finish | Predecessors | Total slack | Free slack |
| --- | --- | --- | --- | --- | --- | --- | --- | --- |
| 882 | 11.2 | **GameDesign** | 3d? | 2005-01-24 | 2005-01-26 |  | -12.12d | 0d |
| 883 | 11.2.1 | **Secrets** | 3d? | 2005-01-24 | 2005-01-26 |  | -12.12d | 0d |
| 884 | 11.2.1.1 | **Stage 1** | 3d? | 2005-01-24 | 2005-01-26 |  | -12.12d | 0d |
| 885 | 11.2.1.1.1 | Design | 1d? | 2005-01-24 | 2005-01-24 |  | -12.12d | 0d |
| 886 | 11.2.1.1.2 | Implementation | 1d? | 2005-01-25 | 2005-01-25 | 885 | -12.12d | 0d |
| 887 | 11.2.1.1.3 | Tuning | 1d? | 2005-01-26 | 2005-01-26 | 886 | -12.12d | 0d |
| 888 | 11.2.2 | **Smartterrains** | 3d? | 2005-01-24 | 2005-01-26 |  | -12.12d | 0d |
| 889 | 11.2.2.1 | **Stage 1** | 3d? | 2005-01-24 | 2005-01-26 |  | -12.12d | 0d |
| 890 | 11.2.2.1.1 | Design | 1d? | 2005-01-24 | 2005-01-24 |  | -12.12d | 0d |
| 891 | 11.2.2.1.2 | Implementation | 1d? | 2005-01-25 | 2005-01-25 | 890 | -12.12d | 0d |
| 892 | 11.2.2.1.3 | Tuning | 1d? | 2005-01-26 | 2005-01-26 | 891 | -12.12d | 0d |
| 893 | 11.2.3 | **Monsters/Spawns** | 3d? | 2005-01-24 | 2005-01-26 |  | -12.12d | 0d |
| 894 | 11.2.3.1 | **Stage 1** | 3d? | 2005-01-24 | 2005-01-26 |  | -12.12d | 0d |
| 895 | 11.2.3.1.1 | Design | 1d? | 2005-01-24 | 2005-01-24 |  | -12.12d | 0d |
| 896 | 11.2.3.1.2 | Implementation | 1d? | 2005-01-25 | 2005-01-25 | 895 | -12.12d | 0d |
| 897 | 11.2.3.1.3 | Tuning | 1d? | 2005-01-26 | 2005-01-26 | 896 | -12.12d | 0d |
| 898 | 11.2.4 | **Stalkers/Spawns** | 3d? | 2005-01-24 | 2005-01-26 |  | -12.12d | 0d |
| 899 | 11.2.4.1 | **Stage 1** | 3d? | 2005-01-24 | 2005-01-26 |  | -12.12d | 0d |
| 900 | 11.2.4.1.1 | Design | 1d? | 2005-01-24 | 2005-01-24 |  | -12.12d | 0d |
| 901 | 11.2.4.1.2 | Implementation | 1d? | 2005-01-25 | 2005-01-25 | 900 | -12.12d | 0d |
| 902 | 11.2.4.1.3 | Tuning | 1d? | 2005-01-26 | 2005-01-26 | 901 | -12.12d | 0d |
| 903 | 11.2.5 | **Anomalies/Spawns** | 3d? | 2005-01-24 | 2005-01-26 |  | -12.12d | 0d |
| 904 | 11.2.5.1 | **Stage 1** | 3d? | 2005-01-24 | 2005-01-26 |  | -12.12d | 0d |
| 905 | 11.2.5.1.1 | Design | 1d? | 2005-01-24 | 2005-01-24 |  | -12.12d | 0d |
| 906 | 11.2.5.1.2 | Implementation | 1d? | 2005-01-25 | 2005-01-25 | 905 | -12.12d | 0d |
| 907 | 11.2.5.1.3 | Tuning | 1d? | 2005-01-26 | 2005-01-26 | 906 | -12.12d | 0d |

| ID | WBS | Task | Duration | Start | Finish | Predecessors | Total slack | Free slack |
| --- | --- | --- | --- | --- | --- | --- | --- | --- |
| 908 | 11.2.6 | **Physicks** | 3d? | 2005-01-24 | 2005-01-26 |  | -12.12d | 0d |
| 909 | 11.2.6.1 | **Stage 1** | 3d? | 2005-01-24 | 2005-01-26 |  | -12.12d | 0d |
| 910 | 11.2.6.1.1 | Design | 1d? | 2005-01-24 | 2005-01-24 |  | -12.12d | 0d |
| 911 | 11.2.6.1.2 | Implementation | 1d? | 2005-01-25 | 2005-01-25 | 910 | -12.12d | 0d |
| 912 | 11.2.6.1.3 | Tuning | 1d? | 2005-01-26 | 2005-01-26 | 911 | -12.12d | 0d |
| 914 | 11.3 | **Scripts** | 5d? | 2005-01-24 | 2005-01-28 |  | -14.12d | 0d |
| 915 | 11.3.1 | **Script 1** | 5d? | 2005-01-24 | 2005-01-28 |  | -14.12d | 0d |
| 916 | 11.3.1.1 | Scenario(text) | 1d? | 2005-01-24 | 2005-01-24 |  | -14.12d | 0d |
| 917 | 11.3.1.2 | Постановка задач | 1d? | 2005-01-25 | 2005-01-25 | 916 | -14.12d | 0d |
| 918 | 11.3.1.3 | Implimentation | 1d? | 2005-01-26 | 2005-01-26 | 917 | -14.12d | 0d |
| 919 | 11.3.1.4 | Dilogs/VO/Icons/Objects/Animations | 1d? | 2005-01-27 | 2005-01-27 | 918 | -14.12d | 0d |
| 920 | 11.3.1.5 | Настройка | 1d? | 2005-01-28 | 2005-01-28 | 919 | -14.12d | 0d |
| 921 | 11.3.2 | **Script 2** | 5d? | 2005-01-24 | 2005-01-28 |  | -14.12d | 0d |
| 922 | 11.3.2.1 | Scenario(text) | 1d? | 2005-01-24 | 2005-01-24 |  | -14.12d | 0d |
| 923 | 11.3.2.2 | Постановка задач | 1d? | 2005-01-25 | 2005-01-25 | 922 | -14.12d | 0d |
| 924 | 11.3.2.3 | Implimentation | 1d? | 2005-01-26 | 2005-01-26 | 923 | -14.12d | 0d |
| 925 | 11.3.2.4 | Dilogs/VO/Icons/Objects/Animations | 1d? | 2005-01-27 | 2005-01-27 | 924 | -14.12d | 0d |
| 926 | 11.3.2.5 | Настройка | 1d? | 2005-01-28 | 2005-01-28 | 925 | -14.12d | 0d |
| 927 | 11.3.3 | **Script 3** | 5d? | 2005-01-24 | 2005-01-28 |  | -14.12d | 0d |
| 928 | 11.3.3.1 | Scenario(text) | 1d? | 2005-01-24 | 2005-01-24 |  | -14.12d | 0d |
| 929 | 11.3.3.2 | Постановка задач | 1d? | 2005-01-25 | 2005-01-25 | 928 | -14.12d | 0d |
| 930 | 11.3.3.3 | Implimentation | 1d? | 2005-01-26 | 2005-01-26 | 929 | -14.12d | 0d |
| 931 | 11.3.3.4 | Dilogs/VO/Icons/Objects/Animations | 1d? | 2005-01-27 | 2005-01-27 | 930 | -14.12d | 0d |
| 932 | 11.3.3.5 | Настройка | 1d? | 2005-01-28 | 2005-01-28 | 931 | -14.12d | 0d |

| ID | WBS | Task | Duration | Start | Finish | Predecessors | Total slack | Free slack | Deadline | Resources | Work |
| --- | --- | --- | --- | --- | --- | --- | --- | --- | --- | --- | --- |
| 933 | 11.3.4 | **Script 4** | 5d? | 2005-01-24 | 2005-01-28 |  | -14.12d | 0d |  |  |  |
| 934 | 11.3.4.1 | Scenario(text) | 1d? | 2005-01-24 | 2005-01-24 |  | -14.12d | 0d |  |  |  |
| 935 | 11.3.4.2 | Постановка задач | 1d? | 2005-01-25 | 2005-01-25 | 934 | -14.12d | 0d |  |  |  |
| 936 | 11.3.4.3 | Implimentation | 1d? | 2005-01-26 | 2005-01-26 | 935 | -14.12d | 0d |  |  |  |
| 937 | 11.3.4.4 | Dilogs/VO/Icons/Objects/Animations | 1d? | 2005-01-27 | 2005-01-27 | 936 | -14.12d | 0d |  |  |  |
| 938 | 11.3.4.5 | Настройка | 1d? | 2005-01-28 | 2005-01-28 | 937 | -14.12d | 0d |  |  |  |
| 939 | 11.3.5 | **Script 5** | 5d? | 2005-01-24 | 2005-01-28 |  | -14.12d | 0d |  |  |  |
| 940 | 11.3.5.1 | Scenario(text) | 1d? | 2005-01-24 | 2005-01-24 |  | -14.12d | 0d |  |  |  |
| 941 | 11.3.5.2 | Постановка задач | 1d? | 2005-01-25 | 2005-01-25 | 940 | -14.12d | 0d |  |  |  |
| 942 | 11.3.5.3 | Implimentation | 1d? | 2005-01-26 | 2005-01-26 | 941 | -14.12d | 0d |  |  |  |
| 943 | 11.3.5.4 | Dilogs/VO/Icons/Objects/Animations | 1d? | 2005-01-27 | 2005-01-27 | 942 | -14.12d | 0d |  |  |  |
| 944 | 11.3.5.5 | Настройка | 1d? | 2005-01-28 | 2005-01-28 | 943 | -14.12d | 0d |  |  |  |
| 946 | 12 | **09_Rostok_Dolg** | 11d? | 2005-02-05 | 2005-02-17 | 868 | -20.12d | 0d | 2005-02-15 | Коан, Руслан | 88h |
| 947 | 12.1 | **LevelDesign** | 11d? | 2005-02-05 | 2005-02-17 |  | -20.12d | 0d | 2005-02-07 |  |  |
| 948 | 12.1.1 | **Stage 1** | 11d? | 2005-02-05 | 2005-02-17 |  | -20.12d | 0d |  |  |  |
| 949 | 12.1.1.1 | List of Changes | 2d | 2005-02-05 | 2005-02-07 |  | -20.12d | 0d |  |  |  |
| 950 | 12.1.1.2 | Changed Geometry | 1d? | 2005-02-08 | 2005-02-08 | 949 | -20.12d | 0d |  |  |  |
| 951 | 12.1.1.3 | Check List 1 | 1d? | 2005-02-09 | 2005-02-09 | 950 | -20.12d | 0d |  |  |  |
| 952 | 12.1.1.4 | Check List 2 | 1d? | 2005-02-10 | 2005-02-10 | 951 | -20.12d | 0d |  |  |  |
| 953 | 12.1.1.5 | Check List 3 | 1d? | 2005-02-11 | 2005-02-11 | 952 | -20.12d | 0d |  |  |  |
| 954 | 12.1.1.6 | Check List 4 | 1d? | 2005-02-12 | 2005-02-12 | 953 | -20.12d | 0d |  |  |  |
| 955 | 12.1.1.7 | Render Geometry | 1d? | 2005-02-14 | 2005-02-14 | 954 | -20.12d | 0d |  |  |  |
| 956 | 12.1.1.8 | Grass | 1d? | 2005-02-15 | 2005-02-15 | 955 | -20.12d | 0d |  |  |  |
| 957 | 12.1.1.9 | AI Maps | 1d? | 2005-02-16 | 2005-02-16 | 956 | -20.12d | 0d |  |  |  |
| 958 | 12.1.1.10 | Graphs | 1d? | 2005-02-17 | 2005-02-17 | 957 | -20.12d | 0d |  |  |  |

| ID | WBS | Task | Duration | Start | Finish | Predecessors | Total slack | Free slack |
| --- | --- | --- | --- | --- | --- | --- | --- | --- |
| 960 | 12.2 | **GameDesign** | 3d? | 2005-02-05 | 2005-02-08 |  | -12.12d | 0d |
| 961 | 12.2.1 | **Secrets** | 3d? | 2005-02-05 | 2005-02-08 |  | -12.12d | 0d |
| 962 | 12.2.1.1 | **Stage 1** | 3d? | 2005-02-05 | 2005-02-08 |  | -12.12d | 0d |
| 963 | 12.2.1.1.1 | Design | 1d? | 2005-02-05 | 2005-02-05 |  | -12.12d | 0d |
| 964 | 12.2.1.1.2 | Implementation | 1d? | 2005-02-07 | 2005-02-07 | 963 | -12.12d | 0d |
| 965 | 12.2.1.1.3 | Tuning | 1d? | 2005-02-08 | 2005-02-08 | 964 | -12.12d | 0d |
| 966 | 12.2.2 | **Smartterrains** | 3d? | 2005-02-05 | 2005-02-08 |  | -12.12d | 0d |
| 967 | 12.2.2.1 | **Stage 1** | 3d? | 2005-02-05 | 2005-02-08 |  | -12.12d | 0d |
| 968 | 12.2.2.1.1 | Design | 1d? | 2005-02-05 | 2005-02-05 |  | -12.12d | 0d |
| 969 | 12.2.2.1.2 | Implementation | 1d? | 2005-02-07 | 2005-02-07 | 968 | -12.12d | 0d |
| 970 | 12.2.2.1.3 | Tuning | 1d? | 2005-02-08 | 2005-02-08 | 969 | -12.12d | 0d |
| 971 | 12.2.3 | **Monsters/Spawns** | 3d? | 2005-02-05 | 2005-02-08 |  | -12.12d | 0d |
| 972 | 12.2.3.1 | **Stage 1** | 3d? | 2005-02-05 | 2005-02-08 |  | -12.12d | 0d |
| 973 | 12.2.3.1.1 | Design | 1d? | 2005-02-05 | 2005-02-05 |  | -12.12d | 0d |
| 974 | 12.2.3.1.2 | Implementation | 1d? | 2005-02-07 | 2005-02-07 | 973 | -12.12d | 0d |
| 975 | 12.2.3.1.3 | Tuning | 1d? | 2005-02-08 | 2005-02-08 | 974 | -12.12d | 0d |
| 976 | 12.2.4 | **Stalkers/Spawns** | 3d? | 2005-02-05 | 2005-02-08 |  | -12.12d | 0d |
| 977 | 12.2.4.1 | **Stage 1** | 3d? | 2005-02-05 | 2005-02-08 |  | -12.12d | 0d |
| 978 | 12.2.4.1.1 | Design | 1d? | 2005-02-05 | 2005-02-05 |  | -12.12d | 0d |
| 979 | 12.2.4.1.2 | Implementation | 1d? | 2005-02-07 | 2005-02-07 | 978 | -12.12d | 0d |
| 980 | 12.2.4.1.3 | Tuning | 1d? | 2005-02-08 | 2005-02-08 | 979 | -12.12d | 0d |
| 981 | 12.2.5 | **Anomalies/Spawns** | 3d? | 2005-02-05 | 2005-02-08 |  | -12.12d | 0d |
| 982 | 12.2.5.1 | **Stage 1** | 3d? | 2005-02-05 | 2005-02-08 |  | -12.12d | 0d |
| 983 | 12.2.5.1.1 | Design | 1d? | 2005-02-05 | 2005-02-05 |  | -12.12d | 0d |
| 984 | 12.2.5.1.2 | Implementation | 1d? | 2005-02-07 | 2005-02-07 | 983 | -12.12d | 0d |
| 985 | 12.2.5.1.3 | Tuning | 1d? | 2005-02-08 | 2005-02-08 | 984 | -12.12d | 0d |

| ID | WBS | Task | Duration | Start | Finish | Predecessors | Total slack | Free slack |
| --- | --- | --- | --- | --- | --- | --- | --- | --- |
| 986 | 12.2.6 | **Physicks** | 3d? | 2005-02-05 | 2005-02-08 |  | -12.12d | 0d |
| 987 | 12.2.6.1 | **Stage 1** | 3d? | 2005-02-05 | 2005-02-08 |  | -12.12d | 0d |
| 988 | 12.2.6.1.1 | Design | 1d? | 2005-02-05 | 2005-02-05 |  | -12.12d | 0d |
| 989 | 12.2.6.1.2 | Implementation | 1d? | 2005-02-07 | 2005-02-07 | 988 | -12.12d | 0d |
| 990 | 12.2.6.1.3 | Tuning | 1d? | 2005-02-08 | 2005-02-08 | 989 | -12.12d | 0d |
| 992 | 12.3 | **Scripts** | 5d? | 2005-02-05 | 2005-02-10 |  | -14.12d | 0d |
| 993 | 12.3.1 | **Script 1** | 5d? | 2005-02-05 | 2005-02-10 |  | -14.12d | 0d |
| 994 | 12.3.1.1 | Scenario(text) | 1d? | 2005-02-05 | 2005-02-05 |  | -14.12d | 0d |
| 995 | 12.3.1.2 | Постановка задач | 1d? | 2005-02-07 | 2005-02-07 | 994 | -14.12d | 0d |
| 996 | 12.3.1.3 | Implimentation | 1d? | 2005-02-08 | 2005-02-08 | 995 | -14.12d | 0d |
| 997 | 12.3.1.4 | Dilogs/VO/Icons/Objects/Animations | 1d? | 2005-02-09 | 2005-02-09 | 996 | -14.12d | 0d |
| 998 | 12.3.1.5 | Настройка | 1d? | 2005-02-10 | 2005-02-10 | 997 | -14.12d | 0d |
| 999 | 12.3.2 | **Script 2** | 5d? | 2005-02-05 | 2005-02-10 |  | -14.12d | 0d |
| 1000 | 12.3.2.1 | Scenario(text) | 1d? | 2005-02-05 | 2005-02-05 |  | -14.12d | 0d |
| 1001 | 12.3.2.2 | Постановка задач | 1d? | 2005-02-07 | 2005-02-07 | 1000 | -14.12d | 0d |
| 1002 | 12.3.2.3 | Implimentation | 1d? | 2005-02-08 | 2005-02-08 | 1001 | -14.12d | 0d |
| 1003 | 12.3.2.4 | Dilogs/VO/Icons/Objects/Animations | 1d? | 2005-02-09 | 2005-02-09 | 1002 | -14.12d | 0d |
| 1004 | 12.3.2.5 | Настройка | 1d? | 2005-02-10 | 2005-02-10 | 1003 | -14.12d | 0d |
| 1005 | 12.3.3 | **Script 3** | 5d? | 2005-02-05 | 2005-02-10 |  | -14.12d | 0d |
| 1006 | 12.3.3.1 | Scenario(text) | 1d? | 2005-02-05 | 2005-02-05 |  | -14.12d | 0d |
| 1007 | 12.3.3.2 | Постановка задач | 1d? | 2005-02-07 | 2005-02-07 | 1006 | -14.12d | 0d |
| 1008 | 12.3.3.3 | Implimentation | 1d? | 2005-02-08 | 2005-02-08 | 1007 | -14.12d | 0d |
| 1009 | 12.3.3.4 | Dilogs/VO/Icons/Objects/Animations | 1d? | 2005-02-09 | 2005-02-09 | 1008 | -14.12d | 0d |
| 1010 | 12.3.3.5 | Настройка | 1d? | 2005-02-10 | 2005-02-10 | 1009 | -14.12d | 0d |

| ID | WBS | Task | Duration | Start | Finish | Predecessors | Total slack | Free slack | Deadline | Resources | Work |
| --- | --- | --- | --- | --- | --- | --- | --- | --- | --- | --- | --- |
| 1011 | 12.3.4 | **Script 4** | 5d? | 2005-02-05 | 2005-02-10 |  | -14.12d | 0d |  |  |  |
| 1012 | 12.3.4.1 | Scenario(text) | 1d? | 2005-02-05 | 2005-02-05 |  | -14.12d | 0d |  |  |  |
| 1013 | 12.3.4.2 | Постановка задач | 1d? | 2005-02-07 | 2005-02-07 | 1012 | -14.12d | 0d |  |  |  |
| 1014 | 12.3.4.3 | Implimentation | 1d? | 2005-02-08 | 2005-02-08 | 1013 | -14.12d | 0d |  |  |  |
| 1015 | 12.3.4.4 | Dilogs/VO/Icons/Objects/Animations | 1d? | 2005-02-09 | 2005-02-09 | 1014 | -14.12d | 0d |  |  |  |
| 1016 | 12.3.4.5 | Настройка | 1d? | 2005-02-10 | 2005-02-10 | 1015 | -14.12d | 0d |  |  |  |
| 1017 | 12.3.5 | **Script 5** | 5d? | 2005-02-05 | 2005-02-10 |  | -14.12d | 0d |  |  |  |
| 1018 | 12.3.5.1 | Scenario(text) | 1d? | 2005-02-05 | 2005-02-05 |  | -14.12d | 0d |  |  |  |
| 1019 | 12.3.5.2 | Постановка задач | 1d? | 2005-02-07 | 2005-02-07 | 1018 | -14.12d | 0d |  |  |  |
| 1020 | 12.3.5.3 | Implimentation | 1d? | 2005-02-08 | 2005-02-08 | 1019 | -14.12d | 0d |  |  |  |
| 1021 | 12.3.5.4 | Dilogs/VO/Icons/Objects/Animations | 1d? | 2005-02-09 | 2005-02-09 | 1020 | -14.12d | 0d |  |  |  |
| 1022 | 12.3.5.5 | Настройка | 1d? | 2005-02-10 | 2005-02-10 | 1021 | -14.12d | 0d |  |  |  |
| 1025 | 13 | **07_Rostok** | 11d? | 2005-02-18 | 2005-03-02 | 946 | -20.12d | 0d | 2005-03-15 | Коан, Руслан | 88h |
| 1026 | 13.1 | **LevelDesign** | 11d? | 2005-02-18 | 2005-03-02 |  | -20.12d | 0d | 2005-02-07 |  |  |
| 1027 | 13.1.1 | **Stage 1** | 11d? | 2005-02-18 | 2005-03-02 |  | -20.12d | 0d |  |  |  |
| 1028 | 13.1.1.1 | List of Changes | 2d | 2005-02-18 | 2005-02-19 |  | -20.12d | 0d |  |  |  |
| 1029 | 13.1.1.2 | Changed Geometry | 1d? | 2005-02-21 | 2005-02-21 | 1028 | -20.12d | 0d |  |  |  |
| 1030 | 13.1.1.3 | Check List 1 | 1d? | 2005-02-22 | 2005-02-22 | 1029 | -20.12d | 0d |  |  |  |
| 1031 | 13.1.1.4 | Check List 2 | 1d? | 2005-02-23 | 2005-02-23 | 1030 | -20.12d | 0d |  |  |  |
| 1032 | 13.1.1.5 | Check List 3 | 1d? | 2005-02-24 | 2005-02-24 | 1031 | -20.12d | 0d |  |  |  |
| 1033 | 13.1.1.6 | Check List 4 | 1d? | 2005-02-25 | 2005-02-25 | 1032 | -20.12d | 0d |  |  |  |
| 1034 | 13.1.1.7 | Render Geometry | 1d? | 2005-02-26 | 2005-02-26 | 1033 | -20.12d | 0d |  |  |  |
| 1035 | 13.1.1.8 | Grass | 1d? | 2005-02-28 | 2005-02-28 | 1034 | -20.12d | 0d |  |  |  |
| 1036 | 13.1.1.9 | AI Maps | 1d? | 2005-03-01 | 2005-03-01 | 1035 | -20.12d | 0d |  |  |  |
| 1037 | 13.1.1.10 | Graphs | 1d? | 2005-03-02 | 2005-03-02 | 1036 | -20.12d | 0d |  |  |  |

| ID | WBS | Task | Duration | Start | Finish | Predecessors | Total slack | Free slack |
| --- | --- | --- | --- | --- | --- | --- | --- | --- |
| 1039 | 13.2 | **GameDesign** | 3d? | 2005-02-18 | 2005-02-21 |  | 7.88d |  |
| 1040 | 13.2.1 | **Secrets** | 3d? | 2005-02-18 | 2005-02-21 |  | 7.88d |  |
| 1041 | 13.2.1.1 | **Stage 1** | 3d? | 2005-02-18 | 2005-02-21 |  | 7.88d |  |
| 1042 | 13.2.1.1.1 | Design | 1d? | 2005-02-18 | 2005-02-18 |  | 7.88d | 0d |
| 1043 | 13.2.1.1.2 | Implementation | 1d? | 2005-02-19 | 2005-02-19 | 1042 | 7.88d | 0d |
| 1044 | 13.2.1.1.3 | Tuning | 1d? | 2005-02-21 | 2005-02-21 | 1043 | 7.88d |  |
| 1045 | 13.2.2 | **Smartterrains** | 3d? | 2005-02-18 | 2005-02-21 |  | 7.88d |  |
| 1046 | 13.2.2.1 | **Stage 1** | 3d? | 2005-02-18 | 2005-02-21 |  | 7.88d |  |
| 1047 | 13.2.2.1.1 | Design | 1d? | 2005-02-18 | 2005-02-18 |  | 7.88d | 0d |
| 1048 | 13.2.2.1.2 | Implementation | 1d? | 2005-02-19 | 2005-02-19 | 1047 | 7.88d | 0d |
| 1049 | 13.2.2.1.3 | Tuning | 1d? | 2005-02-21 | 2005-02-21 | 1048 | 7.88d |  |
| 1050 | 13.2.3 | **Monsters/Spawns** | 3d? | 2005-02-18 | 2005-02-21 |  | 7.88d |  |
| 1051 | 13.2.3.1 | **Stage 1** | 3d? | 2005-02-18 | 2005-02-21 |  | 7.88d |  |
| 1052 | 13.2.3.1.1 | Design | 1d? | 2005-02-18 | 2005-02-18 |  | 7.88d | 0d |
| 1053 | 13.2.3.1.2 | Implementation | 1d? | 2005-02-19 | 2005-02-19 | 1052 | 7.88d | 0d |
| 1054 | 13.2.3.1.3 | Tuning | 1d? | 2005-02-21 | 2005-02-21 | 1053 | 7.88d |  |
| 1055 | 13.2.4 | **Stalkers/Spawns** | 3d? | 2005-02-18 | 2005-02-21 |  | 7.88d |  |
| 1056 | 13.2.4.1 | **Stage 1** | 3d? | 2005-02-18 | 2005-02-21 |  | 7.88d |  |
| 1057 | 13.2.4.1.1 | Design | 1d? | 2005-02-18 | 2005-02-18 |  | 7.88d | 0d |
| 1058 | 13.2.4.1.2 | Implementation | 1d? | 2005-02-19 | 2005-02-19 | 1057 | 7.88d | 0d |
| 1059 | 13.2.4.1.3 | Tuning | 1d? | 2005-02-21 | 2005-02-21 | 1058 | 7.88d |  |
| 1060 | 13.2.5 | **Anomalies/Spawns** | 3d? | 2005-02-18 | 2005-02-21 |  | 7.88d |  |
| 1061 | 13.2.5.1 | **Stage 1** | 3d? | 2005-02-18 | 2005-02-21 |  | 7.88d |  |
| 1062 | 13.2.5.1.1 | Design | 1d? | 2005-02-18 | 2005-02-18 |  | 7.88d | 0d |
| 1063 | 13.2.5.1.2 | Implementation | 1d? | 2005-02-19 | 2005-02-19 | 1062 | 7.88d | 0d |
| 1064 | 13.2.5.1.3 | Tuning | 1d? | 2005-02-21 | 2005-02-21 | 1063 | 7.88d |  |

| ID | WBS | Task | Duration | Start | Finish | Predecessors | Total slack | Free slack |
| --- | --- | --- | --- | --- | --- | --- | --- | --- |
| 1065 | 13.2.6 | **Physicks** | 3d? | 2005-02-18 | 2005-02-21 |  | 7.88d |  |
| 1066 | 13.2.6.1 | **Stage 1** | 3d? | 2005-02-18 | 2005-02-21 |  | 7.88d |  |
| 1067 | 13.2.6.1.1 | Design | 1d? | 2005-02-18 | 2005-02-18 |  | 7.88d | 0d |
| 1068 | 13.2.6.1.2 | Implementation | 1d? | 2005-02-19 | 2005-02-19 | 1067 | 7.88d | 0d |
| 1069 | 13.2.6.1.3 | Tuning | 1d? | 2005-02-21 | 2005-02-21 | 1068 | 7.88d |  |
| 1071 | 13.3 | **Scripts** | 5d? | 2005-02-18 | 2005-02-23 |  | 5.88d |  |
| 1072 | 13.3.1 | **Script 1** | 5d? | 2005-02-18 | 2005-02-23 |  | 5.88d |  |
| 1073 | 13.3.1.1 | Scenario(text) | 1d? | 2005-02-18 | 2005-02-18 |  | 5.88d | 0d |
| 1074 | 13.3.1.2 | Постановка задач | 1d? | 2005-02-19 | 2005-02-19 | 1073 | 5.88d | 0d |
| 1075 | 13.3.1.3 | Implimentation | 1d? | 2005-02-21 | 2005-02-21 | 1074 | 5.88d | 0d |
| 1076 | 13.3.1.4 | Dilogs/VO/Icons/Objects/Animations | 1d? | 2005-02-22 | 2005-02-22 | 1075 | 5.88d | 0d |
| 1077 | 13.3.1.5 | Настройка | 1d? | 2005-02-23 | 2005-02-23 | 1076 | 5.88d |  |
| 1078 | 13.3.2 | **Script 2** | 5d? | 2005-02-18 | 2005-02-23 |  | 5.88d |  |
| 1079 | 13.3.2.1 | Scenario(text) | 1d? | 2005-02-18 | 2005-02-18 |  | 5.88d | 0d |
| 1080 | 13.3.2.2 | Постановка задач | 1d? | 2005-02-19 | 2005-02-19 | 1079 | 5.88d | 0d |
| 1081 | 13.3.2.3 | Implimentation | 1d? | 2005-02-21 | 2005-02-21 | 1080 | 5.88d | 0d |
| 1082 | 13.3.2.4 | Dilogs/VO/Icons/Objects/Animations | 1d? | 2005-02-22 | 2005-02-22 | 1081 | 5.88d | 0d |
| 1083 | 13.3.2.5 | Настройка | 1d? | 2005-02-23 | 2005-02-23 | 1082 | 5.88d |  |
| 1084 | 13.3.3 | **Script 3** | 5d? | 2005-02-18 | 2005-02-23 |  | 5.88d |  |
| 1085 | 13.3.3.1 | Scenario(text) | 1d? | 2005-02-18 | 2005-02-18 |  | 5.88d | 0d |
| 1086 | 13.3.3.2 | Постановка задач | 1d? | 2005-02-19 | 2005-02-19 | 1085 | 5.88d | 0d |
| 1087 | 13.3.3.3 | Implimentation | 1d? | 2005-02-21 | 2005-02-21 | 1086 | 5.88d | 0d |
| 1088 | 13.3.3.4 | Dilogs/VO/Icons/Objects/Animations | 1d? | 2005-02-22 | 2005-02-22 | 1087 | 5.88d | 0d |
| 1089 | 13.3.3.5 | Настройка | 1d? | 2005-02-23 | 2005-02-23 | 1088 | 5.88d |  |

| ID | WBS | Task | Duration | Start | Finish | Predecessors | Total slack | Free slack | Deadline | Resources | Work |
| --- | --- | --- | --- | --- | --- | --- | --- | --- | --- | --- | --- |
| 1090 | 13.3.4 | **Script 4** | 5d? | 2005-02-18 | 2005-02-23 |  | 5.88d |  |  |  |  |
| 1091 | 13.3.4.1 | Scenario(text) | 1d? | 2005-02-18 | 2005-02-18 |  | 5.88d | 0d |  |  |  |
| 1092 | 13.3.4.2 | Постановка задач | 1d? | 2005-02-19 | 2005-02-19 | 1091 | 5.88d | 0d |  |  |  |
| 1093 | 13.3.4.3 | Implimentation | 1d? | 2005-02-21 | 2005-02-21 | 1092 | 5.88d | 0d |  |  |  |
| 1094 | 13.3.4.4 | Dilogs/VO/Icons/Objects/Animations | 1d? | 2005-02-22 | 2005-02-22 | 1093 | 5.88d | 0d |  |  |  |
| 1095 | 13.3.4.5 | Настройка | 1d? | 2005-02-23 | 2005-02-23 | 1094 | 5.88d |  |  |  |  |
| 1096 | 13.3.5 | **Script 5** | 5d? | 2005-02-18 | 2005-02-23 |  | 5.88d |  |  |  |  |
| 1097 | 13.3.5.1 | Scenario(text) | 1d? | 2005-02-18 | 2005-02-18 |  | 5.88d | 0d |  |  |  |
| 1098 | 13.3.5.2 | Постановка задач | 1d? | 2005-02-19 | 2005-02-19 | 1097 | 5.88d | 0d |  |  |  |
| 1099 | 13.3.5.3 | Implimentation | 1d? | 2005-02-21 | 2005-02-21 | 1098 | 5.88d | 0d |  |  |  |
| 1100 | 13.3.5.4 | Dilogs/VO/Icons/Objects/Animations | 1d? | 2005-02-22 | 2005-02-22 | 1099 | 5.88d | 0d |  |  |  |
| 1101 | 13.3.5.5 | Настройка | 1d? | 2005-02-23 | 2005-02-23 | 1100 | 5.88d |  |  |  |  |
| 1103 | 14 | **11_Yantar** | 11d? | 2005-03-03 | 2005-03-15 | 1025 | -0.12d | 0d | 2005-04-15 | Коан, Руслан | 88h |
| 1104 | 14.1 | **LevelDesign** | 11d? | 2005-03-03 | 2005-03-15 |  | -0.12d | 0d | 2005-03-15 |  |  |
| 1105 | 14.1.1 | **Stage 1** | 11d? | 2005-03-03 | 2005-03-15 |  | -0.12d | 0d |  |  |  |
| 1106 | 14.1.1.1 | List of Changes | 2d | 2005-03-03 | 2005-03-04 |  | -0.12d | 0d |  |  |  |
| 1107 | 14.1.1.2 | Changed Geometry | 1d? | 2005-03-05 | 2005-03-05 | 1106 | -0.12d | 0d |  |  |  |
| 1108 | 14.1.1.3 | Check List 1 | 1d? | 2005-03-07 | 2005-03-07 | 1107 | -0.12d | 0d |  |  |  |
| 1109 | 14.1.1.4 | Check List 2 | 1d? | 2005-03-08 | 2005-03-08 | 1108 | -0.12d | 0d |  |  |  |
| 1110 | 14.1.1.5 | Check List 3 | 1d? | 2005-03-09 | 2005-03-09 | 1109 | -0.12d | 0d |  |  |  |
| 1111 | 14.1.1.6 | Check List 4 | 1d? | 2005-03-10 | 2005-03-10 | 1110 | -0.12d | 0d |  |  |  |
| 1112 | 14.1.1.7 | Render Geometry | 1d? | 2005-03-11 | 2005-03-11 | 1111 | -0.12d | 0d |  |  |  |
| 1113 | 14.1.1.8 | Grass | 1d? | 2005-03-12 | 2005-03-12 | 1112 | -0.12d | 0d |  |  |  |
| 1114 | 14.1.1.9 | AI Maps | 1d? | 2005-03-14 | 2005-03-14 | 1113 | -0.12d | 0d |  |  |  |
| 1115 | 14.1.1.10 | Graphs | 1d? | 2005-03-15 | 2005-03-15 | 1114 | -0.12d | 0d |  |  |  |

| ID | WBS | Task | Duration | Start | Finish | Predecessors | Total slack | Free slack |
| --- | --- | --- | --- | --- | --- | --- | --- | --- |
| 1117 | 14.2 | **GameDesign** | 3d? | 2005-03-03 | 2005-03-05 |  | 23.88d |  |
| 1118 | 14.2.1 | **Secrets** | 3d? | 2005-03-03 | 2005-03-05 |  | 23.88d |  |
| 1119 | 14.2.1.1 | **Stage 1** | 3d? | 2005-03-03 | 2005-03-05 |  | 23.88d |  |
| 1120 | 14.2.1.1.1 | Design | 1d? | 2005-03-03 | 2005-03-03 |  | 23.88d | 0d |
| 1121 | 14.2.1.1.2 | Implementation | 1d? | 2005-03-04 | 2005-03-04 | 1120 | 23.88d | 0d |
| 1122 | 14.2.1.1.3 | Tuning | 1d? | 2005-03-05 | 2005-03-05 | 1121 | 23.88d |  |
| 1123 | 14.2.2 | **Smartterrains** | 3d? | 2005-03-03 | 2005-03-05 |  | 23.88d |  |
| 1124 | 14.2.2.1 | **Stage 1** | 3d? | 2005-03-03 | 2005-03-05 |  | 23.88d |  |
| 1125 | 14.2.2.1.1 | Design | 1d? | 2005-03-03 | 2005-03-03 |  | 23.88d | 0d |
| 1126 | 14.2.2.1.2 | Implementation | 1d? | 2005-03-04 | 2005-03-04 | 1125 | 23.88d | 0d |
| 1127 | 14.2.2.1.3 | Tuning | 1d? | 2005-03-05 | 2005-03-05 | 1126 | 23.88d |  |
| 1128 | 14.2.3 | **Monsters/Spawns** | 3d? | 2005-03-03 | 2005-03-05 |  | 23.88d |  |
| 1129 | 14.2.3.1 | **Stage 1** | 3d? | 2005-03-03 | 2005-03-05 |  | 23.88d |  |
| 1130 | 14.2.3.1.1 | Design | 1d? | 2005-03-03 | 2005-03-03 |  | 23.88d | 0d |
| 1131 | 14.2.3.1.2 | Implementation | 1d? | 2005-03-04 | 2005-03-04 | 1130 | 23.88d | 0d |
| 1132 | 14.2.3.1.3 | Tuning | 1d? | 2005-03-05 | 2005-03-05 | 1131 | 23.88d |  |
| 1133 | 14.2.4 | **Stalkers/Spawns** | 3d? | 2005-03-03 | 2005-03-05 |  | 23.88d |  |
| 1134 | 14.2.4.1 | **Stage 1** | 3d? | 2005-03-03 | 2005-03-05 |  | 23.88d |  |
| 1135 | 14.2.4.1.1 | Design | 1d? | 2005-03-03 | 2005-03-03 |  | 23.88d | 0d |
| 1136 | 14.2.4.1.2 | Implementation | 1d? | 2005-03-04 | 2005-03-04 | 1135 | 23.88d | 0d |
| 1137 | 14.2.4.1.3 | Tuning | 1d? | 2005-03-05 | 2005-03-05 | 1136 | 23.88d |  |
| 1138 | 14.2.5 | **Anomalies/Spawns** | 3d? | 2005-03-03 | 2005-03-05 |  | 23.88d |  |
| 1139 | 14.2.5.1 | **Stage 1** | 3d? | 2005-03-03 | 2005-03-05 |  | 23.88d |  |
| 1140 | 14.2.5.1.1 | Design | 1d? | 2005-03-03 | 2005-03-03 |  | 23.88d | 0d |
| 1141 | 14.2.5.1.2 | Implementation | 1d? | 2005-03-04 | 2005-03-04 | 1140 | 23.88d | 0d |
| 1142 | 14.2.5.1.3 | Tuning | 1d? | 2005-03-05 | 2005-03-05 | 1141 | 23.88d |  |

| ID | WBS | Task | Duration | Start | Finish | Predecessors | Total slack | Free slack |
| --- | --- | --- | --- | --- | --- | --- | --- | --- |
| 1143 | 14.2.6 | **Physicks** | 3d? | 2005-03-03 | 2005-03-05 |  | 23.88d |  |
| 1144 | 14.2.6.1 | **Stage 1** | 3d? | 2005-03-03 | 2005-03-05 |  | 23.88d |  |
| 1145 | 14.2.6.1.1 | Design | 1d? | 2005-03-03 | 2005-03-03 |  | 23.88d | 0d |
| 1146 | 14.2.6.1.2 | Implementation | 1d? | 2005-03-04 | 2005-03-04 | 1145 | 23.88d | 0d |
| 1147 | 14.2.6.1.3 | Tuning | 1d? | 2005-03-05 | 2005-03-05 | 1146 | 23.88d |  |
| 1149 | 14.3 | **Scripts** | 5d? | 2005-03-03 | 2005-03-08 |  | 21.88d |  |
| 1150 | 14.3.1 | **Script 1** | 5d? | 2005-03-03 | 2005-03-08 |  | 21.88d |  |
| 1151 | 14.3.1.1 | Scenario(text) | 1d? | 2005-03-03 | 2005-03-03 |  | 21.88d | 0d |
| 1152 | 14.3.1.2 | Постановка задач | 1d? | 2005-03-04 | 2005-03-04 | 1151 | 21.88d | 0d |
| 1153 | 14.3.1.3 | Implimentation | 1d? | 2005-03-05 | 2005-03-05 | 1152 | 21.88d | 0d |
| 1154 | 14.3.1.4 | Dilogs/VO/Icons/Objects/Animations | 1d? | 2005-03-07 | 2005-03-07 | 1153 | 21.88d | 0d |
| 1155 | 14.3.1.5 | Настройка | 1d? | 2005-03-08 | 2005-03-08 | 1154 | 21.88d |  |
| 1156 | 14.3.2 | **Script 2** | 5d? | 2005-03-03 | 2005-03-08 |  | 21.88d |  |
| 1157 | 14.3.2.1 | Scenario(text) | 1d? | 2005-03-03 | 2005-03-03 |  | 21.88d | 0d |
| 1158 | 14.3.2.2 | Постановка задач | 1d? | 2005-03-04 | 2005-03-04 | 1157 | 21.88d | 0d |
| 1159 | 14.3.2.3 | Implimentation | 1d? | 2005-03-05 | 2005-03-05 | 1158 | 21.88d | 0d |
| 1160 | 14.3.2.4 | Dilogs/VO/Icons/Objects/Animations | 1d? | 2005-03-07 | 2005-03-07 | 1159 | 21.88d | 0d |
| 1161 | 14.3.2.5 | Настройка | 1d? | 2005-03-08 | 2005-03-08 | 1160 | 21.88d |  |
| 1162 | 14.3.3 | **Script 3** | 5d? | 2005-03-03 | 2005-03-08 |  | 21.88d |  |
| 1163 | 14.3.3.1 | Scenario(text) | 1d? | 2005-03-03 | 2005-03-03 |  | 21.88d | 0d |
| 1164 | 14.3.3.2 | Постановка задач | 1d? | 2005-03-04 | 2005-03-04 | 1163 | 21.88d | 0d |
| 1165 | 14.3.3.3 | Implimentation | 1d? | 2005-03-05 | 2005-03-05 | 1164 | 21.88d | 0d |
| 1166 | 14.3.3.4 | Dilogs/VO/Icons/Objects/Animations | 1d? | 2005-03-07 | 2005-03-07 | 1165 | 21.88d | 0d |
| 1167 | 14.3.3.5 | Настройка | 1d? | 2005-03-08 | 2005-03-08 | 1166 | 21.88d |  |

| ID | WBS | Task | Duration | Start | Finish | Predecessors | Total slack | Free slack | Deadline | Resources | Work |
| --- | --- | --- | --- | --- | --- | --- | --- | --- | --- | --- | --- |
| 1168 | 14.3.4 | **Script 4** | 5d? | 2005-03-03 | 2005-03-08 |  | 21.88d |  |  |  |  |
| 1169 | 14.3.4.1 | Scenario(text) | 1d? | 2005-03-03 | 2005-03-03 |  | 21.88d | 0d |  |  |  |
| 1170 | 14.3.4.2 | Постановка задач | 1d? | 2005-03-04 | 2005-03-04 | 1169 | 21.88d | 0d |  |  |  |
| 1171 | 14.3.4.3 | Implimentation | 1d? | 2005-03-05 | 2005-03-05 | 1170 | 21.88d | 0d |  |  |  |
| 1172 | 14.3.4.4 | Dilogs/VO/Icons/Objects/Animations | 1d? | 2005-03-07 | 2005-03-07 | 1171 | 21.88d | 0d |  |  |  |
| 1173 | 14.3.4.5 | Настройка | 1d? | 2005-03-08 | 2005-03-08 | 1172 | 21.88d |  |  |  |  |
| 1174 | 14.3.5 | **Script 5** | 5d? | 2005-03-03 | 2005-03-08 |  | 21.88d |  |  |  |  |
| 1175 | 14.3.5.1 | Scenario(text) | 1d? | 2005-03-03 | 2005-03-03 |  | 21.88d | 0d |  |  |  |
| 1176 | 14.3.5.2 | Постановка задач | 1d? | 2005-03-04 | 2005-03-04 | 1175 | 21.88d | 0d |  |  |  |
| 1177 | 14.3.5.3 | Implimentation | 1d? | 2005-03-05 | 2005-03-05 | 1176 | 21.88d | 0d |  |  |  |
| 1178 | 14.3.5.4 | Dilogs/VO/Icons/Objects/Animations | 1d? | 2005-03-07 | 2005-03-07 | 1177 | 21.88d | 0d |  |  |  |
| 1179 | 14.3.5.5 | Настройка | 1d? | 2005-03-08 | 2005-03-08 | 1178 | 21.88d |  |  |  |  |
| 1181 | 15 | **22_Warlab** | 11d? | 2005-03-16 | 2005-03-28 | 1103 | 15.88d |  | 2005-05-13 | Коан, Руслан | 88h |
| 1182 | 15.1 | **LevelDesign** | 11d? | 2005-03-16 | 2005-03-28 |  | 15.88d |  | 2005-04-15 |  |  |
| 1183 | 15.1.1 | **Stage 1** | 11d? | 2005-03-16 | 2005-03-28 |  | 15.88d |  |  |  |  |
| 1184 | 15.1.1.1 | List of Changes | 2d | 2005-03-16 | 2005-03-17 |  | 15.88d | 0d |  |  |  |
| 1185 | 15.1.1.2 | Changed Geometry | 1d? | 2005-03-18 | 2005-03-18 | 1184 | 15.88d | 0d |  |  |  |
| 1186 | 15.1.1.3 | Check List 1 | 1d? | 2005-03-19 | 2005-03-19 | 1185 | 15.88d | 0d |  |  |  |
| 1187 | 15.1.1.4 | Check List 2 | 1d? | 2005-03-21 | 2005-03-21 | 1186 | 15.88d | 0d |  |  |  |
| 1188 | 15.1.1.5 | Check List 3 | 1d? | 2005-03-22 | 2005-03-22 | 1187 | 15.88d | 0d |  |  |  |
| 1189 | 15.1.1.6 | Check List 4 | 1d? | 2005-03-23 | 2005-03-23 | 1188 | 15.88d | 0d |  |  |  |
| 1190 | 15.1.1.7 | Render Geometry | 1d? | 2005-03-24 | 2005-03-24 | 1189 | 15.88d | 0d |  |  |  |
| 1191 | 15.1.1.8 | Grass | 1d? | 2005-03-25 | 2005-03-25 | 1190 | 15.88d | 0d |  |  |  |
| 1192 | 15.1.1.9 | AI Maps | 1d? | 2005-03-26 | 2005-03-26 | 1191 | 15.88d | 0d |  |  |  |
| 1193 | 15.1.1.10 | Graphs | 1d? | 2005-03-28 | 2005-03-28 | 1192 | 15.88d |  |  |  |  |

| ID | WBS | Task | Duration | Start | Finish | Predecessors | Total slack | Free slack |
| --- | --- | --- | --- | --- | --- | --- | --- | --- |
| 1195 | 15.2 | **GameDesign** | 3d? | 2005-03-16 | 2005-03-18 |  | 47.88d |  |
| 1196 | 15.2.1 | **Secrets** | 3d? | 2005-03-16 | 2005-03-18 |  | 47.88d |  |
| 1197 | 15.2.1.1 | **Stage 1** | 3d? | 2005-03-16 | 2005-03-18 |  | 47.88d |  |
| 1198 | 15.2.1.1.1 | Design | 1d? | 2005-03-16 | 2005-03-16 |  | 47.88d | 0d |
| 1199 | 15.2.1.1.2 | Implementation | 1d? | 2005-03-17 | 2005-03-17 | 1198 | 47.88d | 0d |
| 1200 | 15.2.1.1.3 | Tuning | 1d? | 2005-03-18 | 2005-03-18 | 1199 | 47.88d |  |
| 1201 | 15.2.2 | **Smartterrains** | 3d? | 2005-03-16 | 2005-03-18 |  | 47.88d |  |
| 1202 | 15.2.2.1 | **Stage 1** | 3d? | 2005-03-16 | 2005-03-18 |  | 47.88d |  |
| 1203 | 15.2.2.1.1 | Design | 1d? | 2005-03-16 | 2005-03-16 |  | 47.88d | 0d |
| 1204 | 15.2.2.1.2 | Implementation | 1d? | 2005-03-17 | 2005-03-17 | 1203 | 47.88d | 0d |
| 1205 | 15.2.2.1.3 | Tuning | 1d? | 2005-03-18 | 2005-03-18 | 1204 | 47.88d |  |
| 1206 | 15.2.3 | **Monsters/Spawns** | 3d? | 2005-03-16 | 2005-03-18 |  | 47.88d |  |
| 1207 | 15.2.3.1 | **Stage 1** | 3d? | 2005-03-16 | 2005-03-18 |  | 47.88d |  |
| 1208 | 15.2.3.1.1 | Design | 1d? | 2005-03-16 | 2005-03-16 |  | 47.88d | 0d |
| 1209 | 15.2.3.1.2 | Implementation | 1d? | 2005-03-17 | 2005-03-17 | 1208 | 47.88d | 0d |
| 1210 | 15.2.3.1.3 | Tuning | 1d? | 2005-03-18 | 2005-03-18 | 1209 | 47.88d |  |
| 1211 | 15.2.4 | **Stalkers/Spawns** | 3d? | 2005-03-16 | 2005-03-18 |  | 47.88d |  |
| 1212 | 15.2.4.1 | **Stage 1** | 3d? | 2005-03-16 | 2005-03-18 |  | 47.88d |  |
| 1213 | 15.2.4.1.1 | Design | 1d? | 2005-03-16 | 2005-03-16 |  | 47.88d | 0d |
| 1214 | 15.2.4.1.2 | Implementation | 1d? | 2005-03-17 | 2005-03-17 | 1213 | 47.88d | 0d |
| 1215 | 15.2.4.1.3 | Tuning | 1d? | 2005-03-18 | 2005-03-18 | 1214 | 47.88d |  |
| 1216 | 15.2.5 | **Anomalies/Spawns** | 3d? | 2005-03-16 | 2005-03-18 |  | 47.88d |  |
| 1217 | 15.2.5.1 | **Stage 1** | 3d? | 2005-03-16 | 2005-03-18 |  | 47.88d |  |
| 1218 | 15.2.5.1.1 | Design | 1d? | 2005-03-16 | 2005-03-16 |  | 47.88d | 0d |
| 1219 | 15.2.5.1.2 | Implementation | 1d? | 2005-03-17 | 2005-03-17 | 1218 | 47.88d | 0d |
| 1220 | 15.2.5.1.3 | Tuning | 1d? | 2005-03-18 | 2005-03-18 | 1219 | 47.88d |  |

| ID | WBS | Task | Duration | Start | Finish | Predecessors | Total slack | Free slack |
| --- | --- | --- | --- | --- | --- | --- | --- | --- |
| 1221 | 15.2.6 | **Physicks** | 3d? | 2005-03-16 | 2005-03-18 |  | 47.88d |  |
| 1222 | 15.2.6.1 | **Stage 1** | 3d? | 2005-03-16 | 2005-03-18 |  | 47.88d |  |
| 1223 | 15.2.6.1.1 | Design | 1d? | 2005-03-16 | 2005-03-16 |  | 47.88d | 0d |
| 1224 | 15.2.6.1.2 | Implementation | 1d? | 2005-03-17 | 2005-03-17 | 1223 | 47.88d | 0d |
| 1225 | 15.2.6.1.3 | Tuning | 1d? | 2005-03-18 | 2005-03-18 | 1224 | 47.88d |  |
| 1227 | 15.3 | **Scripts** | 5d? | 2005-03-16 | 2005-03-21 |  | 45.88d |  |
| 1228 | 15.3.1 | **Script 1** | 5d? | 2005-03-16 | 2005-03-21 |  | 45.88d |  |
| 1229 | 15.3.1.1 | Scenario(text) | 1d? | 2005-03-16 | 2005-03-16 |  | 45.88d | 0d |
| 1230 | 15.3.1.2 | Постановка задач | 1d? | 2005-03-17 | 2005-03-17 | 1229 | 45.88d | 0d |
| 1231 | 15.3.1.3 | Implimentation | 1d? | 2005-03-18 | 2005-03-18 | 1230 | 45.88d | 0d |
| 1232 | 15.3.1.4 | Dilogs/VO/Icons/Objects/Animations | 1d? | 2005-03-19 | 2005-03-19 | 1231 | 45.88d | 0d |
| 1233 | 15.3.1.5 | Настройка | 1d? | 2005-03-21 | 2005-03-21 | 1232 | 45.88d |  |
| 1234 | 15.3.2 | **Script 2** | 5d? | 2005-03-16 | 2005-03-21 |  | 45.88d |  |
| 1235 | 15.3.2.1 | Scenario(text) | 1d? | 2005-03-16 | 2005-03-16 |  | 45.88d | 0d |
| 1236 | 15.3.2.2 | Постановка задач | 1d? | 2005-03-17 | 2005-03-17 | 1235 | 45.88d | 0d |
| 1237 | 15.3.2.3 | Implimentation | 1d? | 2005-03-18 | 2005-03-18 | 1236 | 45.88d | 0d |
| 1238 | 15.3.2.4 | Dilogs/VO/Icons/Objects/Animations | 1d? | 2005-03-19 | 2005-03-19 | 1237 | 45.88d | 0d |
| 1239 | 15.3.2.5 | Настройка | 1d? | 2005-03-21 | 2005-03-21 | 1238 | 45.88d |  |
| 1240 | 15.3.3 | **Script 3** | 5d? | 2005-03-16 | 2005-03-21 |  | 45.88d |  |
| 1241 | 15.3.3.1 | Scenario(text) | 1d? | 2005-03-16 | 2005-03-16 |  | 45.88d | 0d |
| 1242 | 15.3.3.2 | Постановка задач | 1d? | 2005-03-17 | 2005-03-17 | 1241 | 45.88d | 0d |
| 1243 | 15.3.3.3 | Implimentation | 1d? | 2005-03-18 | 2005-03-18 | 1242 | 45.88d | 0d |
| 1244 | 15.3.3.4 | Dilogs/VO/Icons/Objects/Animations | 1d? | 2005-03-19 | 2005-03-19 | 1243 | 45.88d | 0d |
| 1245 | 15.3.3.5 | Настройка | 1d? | 2005-03-21 | 2005-03-21 | 1244 | 45.88d |  |

| ID | WBS | Task | Duration | Start | Finish | Predecessors | Complete | Remaining | Total slack | Free slack | Deadline | Resources | Work | Actual work |
| --- | --- | --- | --- | --- | --- | --- | --- | --- | --- | --- | --- | --- | --- | --- |
| 1246 | 15.3.4 | **Script 4** | 5d? | 2005-03-16 | 2005-03-21 |  |  |  | 45.88d |  |  |  |  |  |
| 1247 | 15.3.4.1 | Scenario(text) | 1d? | 2005-03-16 | 2005-03-16 |  |  |  | 45.88d | 0d |  |  |  |  |
| 1248 | 15.3.4.2 | Постановка задач | 1d? | 2005-03-17 | 2005-03-17 | 1247 |  |  | 45.88d | 0d |  |  |  |  |
| 1249 | 15.3.4.3 | Implimentation | 1d? | 2005-03-18 | 2005-03-18 | 1248 |  |  | 45.88d | 0d |  |  |  |  |
| 1250 | 15.3.4.4 | Dilogs/VO/Icons/Objects/Animations | 1d? | 2005-03-19 | 2005-03-19 | 1249 |  |  | 45.88d | 0d |  |  |  |  |
| 1251 | 15.3.4.5 | Настройка | 1d? | 2005-03-21 | 2005-03-21 | 1250 |  |  | 45.88d |  |  |  |  |  |
| 1252 | 15.3.5 | **Script 5** | 5d? | 2005-03-16 | 2005-03-21 |  |  |  | 45.88d |  |  |  |  |  |
| 1253 | 15.3.5.1 | Scenario(text) | 1d? | 2005-03-16 | 2005-03-16 |  |  |  | 45.88d | 0d |  |  |  |  |
| 1254 | 15.3.5.2 | Постановка задач | 1d? | 2005-03-17 | 2005-03-17 | 1253 |  |  | 45.88d | 0d |  |  |  |  |
| 1255 | 15.3.5.3 | Implimentation | 1d? | 2005-03-18 | 2005-03-18 | 1254 |  |  | 45.88d | 0d |  |  |  |  |
| 1256 | 15.3.5.4 | Dilogs/VO/Icons/Objects/Animations | 1d? | 2005-03-19 | 2005-03-19 | 1255 |  |  | 45.88d | 0d |  |  |  |  |
| 1257 | 15.3.5.5 | Настройка | 1d? | 2005-03-21 | 2005-03-21 | 1256 |  |  | 45.88d |  |  |  |  |  |
| 1266 | 16 | **10_Military_Base** | 31.88d? | 2005-01-24 A | 2005-03-01 |  | 1% | 31.51d? | -30.88d | 0d | 2005-03-01 | Маст Дай, Сидорович | 674h | 10.95h |
| 1267 | 16.1 | **LevelDesign** | 11d? | 2005-01-24 | 2005-02-04 |  |  |  | -29.12d | 0d | 2005-02-07 |  |  |  |
| 1268 | 16.1.1 | **Stage 1** | 11d? | 2005-01-24 | 2005-02-04 |  |  |  | -29.12d | 0d |  |  |  |  |
| 1269 | 16.1.1.1 | List of Changes | 2d | 2005-01-24 | 2005-01-25 |  |  |  | -29.12d | 0d |  |  |  |  |
| 1270 | 16.1.1.2 | Changed Geometry | 1d? | 2005-01-26 | 2005-01-26 | 1269 |  |  | -29.12d | 0d |  |  |  |  |
| 1271 | 16.1.1.3 | Check List 1 | 1d? | 2005-01-27 | 2005-01-27 | 1270 |  |  | -29.12d | 0d |  |  |  |  |
| 1272 | 16.1.1.4 | Check List 2 | 1d? | 2005-01-28 | 2005-01-28 | 1271 |  |  | -29.12d | 0d |  |  |  |  |
| 1273 | 16.1.1.5 | Check List 3 | 1d? | 2005-01-29 | 2005-01-29 | 1272 |  |  | -29.12d | 0d |  |  |  |  |
| 1274 | 16.1.1.6 | Check List 4 | 1d? | 2005-01-31 | 2005-01-31 | 1273 |  |  | -29.12d | 0d |  |  |  |  |
| 1275 | 16.1.1.7 | Render Geometry | 1d? | 2005-02-01 | 2005-02-01 | 1274 |  |  | -29.12d | 0d |  |  |  |  |
| 1276 | 16.1.1.8 | Grass | 1d? | 2005-02-02 | 2005-02-02 | 1275 |  |  | -29.12d | 0d |  |  |  |  |
| 1277 | 16.1.1.9 | AI Maps | 1d? | 2005-02-03 | 2005-02-03 | 1276 |  |  | -29.12d | 0d |  |  |  |  |
| 1278 | 16.1.1.10 | Graphs | 1d? | 2005-02-04 | 2005-02-04 | 1277 |  |  | -29.12d | 0d |  |  |  |  |

| ID | WBS | Task | Duration | Start | Finish | Predecessors | Total slack | Free slack | Constraint | Resources | Work |
| --- | --- | --- | --- | --- | --- | --- | --- | --- | --- | --- | --- |
| 1280 | 16.2 | **GameDesign** | 31.88d? | 2005-01-24 | 2005-03-01 |  | -50d | 0d |  |  | 83h |
| 1281 | 16.2.1 | **Secrets** | 3.88d? | 2005-02-25 | 2005-03-01 |  | -50d | 0d |  |  | 23h |
| 1282 | 16.2.1.1 | **Stage 1** | 3.88d? | 2005-02-25 | 2005-03-01 |  | -50d | 0d |  |  | 23h |
| 1283 | 16.2.1.1.1 | Design | 1.88d? | 2005-02-25 | 2005-02-26 |  | -50d | 0d | start no earlier than 2005-02-25 | Mustdie | 15h |
| 1284 | 16.2.1.1.2 | Implementation | 1d? | 2005-02-26 | 2005-02-28 | 1283 | -50d | 0d |  | Mustdie | 8h |
| 1285 | 16.2.1.1.3 | Tuning | 1d? | 2005-02-28 | 2005-03-01 | 1284 | -50d | 0d |  |  |  |
| 1286 | 16.2.2 | **Smartterrains** | 3.88d? | 2005-02-25 | 2005-03-01 |  | -50d | 0d |  |  | 15h |
| 1287 | 16.2.2.1 | **Stage 1** | 3.88d? | 2005-02-25 | 2005-03-01 |  | -50d | 0d |  |  | 15h |
| 1288 | 16.2.2.1.1 | Design | 1.88d? | 2005-02-25 | 2005-02-26 |  | -50d | 0d | start no earlier than 2005-02-25 | Mustdie | 15h |
| 1289 | 16.2.2.1.2 | Implementation | 1d? | 2005-02-26 | 2005-02-28 | 1288 | -50d | 0d |  |  |  |
| 1290 | 16.2.2.1.3 | Tuning | 1d? | 2005-02-28 | 2005-03-01 | 1289 | -50d | 0d |  |  |  |
| 1291 | 16.2.3 | **Monsters/Spawns** | 3.88d? | 2005-02-25 | 2005-03-01 |  | -50d | 0d |  |  | 15h |
| 1292 | 16.2.3.1 | **Stage 1** | 3.88d? | 2005-02-25 | 2005-03-01 |  | -50d | 0d |  |  | 15h |
| 1293 | 16.2.3.1.1 | Design | 1.88d? | 2005-02-25 | 2005-02-26 |  | -50d | 0d | start no earlier than 2005-02-25 | Маст Дай, Сидорович | 15h |
| 1294 | 16.2.3.1.2 | Implementation | 1d? | 2005-02-26 | 2005-02-28 | 1293 | -50d | 0d |  |  |  |
| 1295 | 16.2.3.1.3 | Tuning | 1d? | 2005-02-28 | 2005-03-01 | 1294 | -50d | 0d |  |  |  |
| 1296 | 16.2.4 | **Stalkers/Spawns** | 3.88d? | 2005-02-25 | 2005-03-01 |  | -50d | 0d |  |  | 15h |
| 1297 | 16.2.4.1 | **Stage 1** | 3.88d? | 2005-02-25 | 2005-03-01 |  | -50d | 0d |  |  | 15h |
| 1298 | 16.2.4.1.1 | Design | 1.88d? | 2005-02-25 | 2005-02-26 |  | -50d | 0d | start no earlier than 2005-02-25 | Сидорович, Маст Дай | 15h |
| 1299 | 16.2.4.1.2 | Implementation | 1d? | 2005-02-26 | 2005-02-28 | 1298 | -50d | 0d |  |  |  |
| 1300 | 16.2.4.1.3 | Tuning | 1d? | 2005-02-28 | 2005-03-01 | 1299 | -50d | 0d |  |  |  |
| 1301 | 16.2.5 | **Anomalies/Spawns** | 3.88d? | 2005-02-25 | 2005-03-01 |  | -50d | 0d |  |  | 15h |
| 1302 | 16.2.5.1 | **Stage 1** | 3.88d? | 2005-02-25 | 2005-03-01 |  | -50d | 0d |  |  | 15h |
| 1303 | 16.2.5.1.1 | Design | 1.88d? | 2005-02-25 | 2005-02-26 |  | -50d | 0d | start no earlier than 2005-02-25 | Сидорович, Маст Дай | 15h |
| 1304 | 16.2.5.1.2 | Implementation | 1d? | 2005-02-26 | 2005-02-28 | 1303 | -50d | 0d |  |  |  |
| 1305 | 16.2.5.1.3 | Tuning | 1d? | 2005-02-28 | 2005-03-01 | 1304 | -50d | 0d |  |  |  |

| ID | WBS | Task | Duration | Start | Finish | Predecessors | Complete | Remaining | Total slack | Free slack | Constraint | Deadline | Resources | Work | Actual work |
| --- | --- | --- | --- | --- | --- | --- | --- | --- | --- | --- | --- | --- | --- | --- | --- |
| 1306 | 16.2.6 | **Physicks** | 3d? | 2005-01-24 | 2005-01-26 |  |  |  | -21.12d | 0d |  |  |  |  |  |
| 1307 | 16.2.6.1 | **Stage 1** | 3d? | 2005-01-24 | 2005-01-26 |  |  |  | -21.12d | 0d |  |  |  |  |  |
| 1308 | 16.2.6.1.1 | Design | 1d? | 2005-01-24 | 2005-01-24 |  |  |  | -21.12d | 0d |  |  |  |  |  |
| 1309 | 16.2.6.1.2 | Implementation | 1d? | 2005-01-25 | 2005-01-25 | 1308 |  |  | -21.12d | 0d |  |  |  |  |  |
| 1310 | 16.2.6.1.3 | Tuning | 1d? | 2005-01-26 | 2005-01-26 | 1309 |  |  | -21.12d | 0d |  |  |  |  |  |
| 1312 | 16.3 | **Scripts** | 29d? | 2005-01-24 A | 2005-02-25 |  | 2% | 28.45d? | -28d | 0d | finish no later than 2005-02-25 | 2005-03-01 |  | 336h | 8h |
| 1313 | 16.3.1 | Сценарий (текст) | 1d | 2005-01-24 A | 2005-01-24 A |  | 100% |  |  |  |  |  | Mustdie | 8h | 8h |
| 1314 | 16.3.2 | **Сцена 1 - База свободы (ГУЛАГ)** | 14d? | 2005-02-01 | 2005-02-16 |  |  |  | -39.12d | 0d |  |  |  | 152h |  |
| 1315 | 16.3.2.1 | Постановка задач | 1d? | 2005-02-01 | 2005-02-01 |  |  |  | -34.12d | 0d | start no earlier than 2005-02-01 |  | Сидорович | 8h |  |
| 1316 | 16.3.2.2 | **Реализация** | 8d? | 2005-02-02 | 2005-02-10 | 1315 |  |  | -34.12d | 0d |  |  |  | 72h |  |
| 1317 | 16.3.2.2.1 | Реализация | 8d | 2005-02-02 | 2005-02-10 | 1315 |  |  | -34.12d | 0d | start no earlier than 2005-02-01 |  | Сидорович | 64h |  |
| 1318 | 16.3.2.2.2 | Доработка X в движке | 1d? | 2005-02-02 | 2005-02-02 |  |  |  | -28.12d | 0d |  |  | Dima | 8h |  |
| 1319 | 16.3.2.3 | Расстановка | 4d | 2005-02-02 | 2005-02-05 | 1313 |  |  | -30.12d | 0d | start no earlier than 2005-02-02 |  | Mustdie | 32h |  |
| 1320 | 16.3.2.4 | Тексты, Диалоги, Задания, Отметки на карте, новости, профили персонажей (продумать) | 4d | 2005-02-11 | 2005-02-15 |  |  |  | -38.12d | 0d | start no earlier than 2005-02-11 |  | Mustdie | 32h |  |
| 1321 | 16.3.2.5 | **Тестирование** | 12d? | 2005-02-03 | 2005-02-16 | 1318 |  |  | -39.12d | 0d |  |  |  | 8h |  |
| 1322 | 16.3.2.5.1 | Тестирование | 1d | 2005-02-16 | 2005-02-16 |  |  |  | -39.12d | 0d | start no earlier than 2005-02-16 |  |  |  |  |
| 1323 | 16.3.2.5.2 | Проверить расстановку AI нод вокруг дерева | 1d? | 2005-02-03 | 2005-02-03 |  |  |  | -28.12d | 0d |  |  | Partizan | 8h |  |
| 1324 | 16.3.3 | **Сцена 2 - Группировка Долга** | 4d? | 2005-02-16 | 2005-02-19 |  |  |  | -42.12d | 0d |  |  |  | 64h |  |
| 1325 | 16.3.3.1 | Постановка задач | 1d | 2005-02-16 | 2005-02-16 |  |  |  | -41.12d | 0d | start no earlier than 2005-02-16 |  | Сидорович | 8h |  |
| 1326 | 16.3.3.2 | **Реализация** | 2d? | 2005-02-17 | 2005-02-18 | 1325 |  |  | -41.12d | 0d |  |  |  | 24h |  |
| 1327 | 16.3.3.2.1 | Реализация | 2d | 2005-02-17 | 2005-02-18 | 1325 |  |  | -41.12d | 0d | start no earlier than 2005-02-16 |  | Сидорович | 16h |  |
| 1328 | 16.3.3.2.2 | Доработка X в движке | 1d? | 2005-02-17 | 2005-02-17 |  |  |  | -41.12d | 0d |  |  | Dima | 8h |  |
| 1329 | 16.3.3.3 | Расстановка | 1d | 2005-02-17 | 2005-02-17 |  |  |  | -42.12d | 0d | start no earlier than 2005-02-17 |  | Mustdie | 8h |  |
| 1330 | 16.3.3.4 | Тексты, Диалоги, Задания, Отметки на карте, новости, профили персонажей (продумать) | 2d | 2005-02-18 | 2005-02-19 | 1329 |  |  | -42.12d | 0d |  |  | Mustdie | 16h |  |

| ID | WBS | Task | Duration | Start | Finish | Predecessors | Total slack | Free slack | Constraint | Resources | Work |
| --- | --- | --- | --- | --- | --- | --- | --- | --- | --- | --- | --- |
| 1331 | 16.3.3.5 | **Тестирование** | 1d? | 2005-02-18 | 2005-02-18 | 1328 | -41.12d | 0d |  |  | 8h |
| 1332 | 16.3.3.5.1 | Тестирование | 1d | 2005-02-18 | 2005-02-18 |  | -41.12d | 0d | start no earlier than 2005-02-18 |  |  |
| 1333 | 16.3.3.5.2 | Проверить расстановку AI нод вокруг дерева | 1d? | 2005-02-18 | 2005-02-18 |  | -41.12d | 0d |  | Partizan | 8h |
| 1334 | 16.3.4 | **Сцена 3 - Сумасшедший сталкер** | 2.25d? | 2005-02-18 | 2005-02-21 |  | -43.12d | 0d |  |  | 32h |
| 1335 | 16.3.4.1 | Постановка задач | 1d | 2005-02-18 | 2005-02-19 |  | -41.88d | 0d | finish no earlier than 2005-02-19 | Сидорович | 8h |
| 1336 | 16.3.4.2 | **Реализация** | 1d? | 2005-02-21 | 2005-02-21 |  | -43.12d | 0d |  |  | 24h |
| 1337 | 16.3.4.2.1 | Реализация | 1d | 2005-02-21 | 2005-02-21 |  | -43.12d | 0d | start no earlier than 2005-02-21 | Сидорович | 8h |
| 1338 | 16.3.4.2.2 | Доработка X в движке | 1d? | 2005-02-21 | 2005-02-21 |  | -43.12d | 0d | start no earlier than 2005-02-21 |  |  |
| 1339 | 16.3.4.2.3 | Расстановка | 1d | 2005-02-21 | 2005-02-21 |  | -43.12d | 0d | start no earlier than 2005-02-21 | Mustdie | 8h |
| 1340 | 16.3.4.2.4 | Тексты, Диалоги, Задания, Отметки на карте, новости, профили персонажей (продумать) | 1d | 2005-02-21 | 2005-02-21 |  | -43.12d | 0d | start no earlier than 2005-02-21 | Mustdie | 8h |
| 1341 | 16.3.4.3 | **Тестирование** | 1d? | 2005-02-21 | 2005-02-21 |  | -43.12d | 0d |  |  |  |
| 1342 | 16.3.4.3.1 | Тестирование | 1d | 2005-02-21 | 2005-02-21 |  | -43.12d | 0d | start no earlier than 2005-02-21 |  |  |
| 1343 | 16.3.4.3.2 | Проверить расстановку AI нод вокруг дерева | 1d? | 2005-02-21 | 2005-02-21 |  | -43.12d | 0d | start no earlier than 2005-02-21 |  |  |
| 1344 | 16.3.5 | **Сцена 4 - Бой - Киллеры и Бандтиты** | 1d? | 2005-02-22 | 2005-02-22 |  | -44.12d | 0d |  |  | 32h |
| 1345 | 16.3.5.1 | Постановка задач | 1d? | 2005-02-22 | 2005-02-22 |  | -44.12d | 0d | start no earlier than 2005-02-22 | Сидорович | 8h |
| 1346 | 16.3.5.2 | **Реализация** | 1d? | 2005-02-22 | 2005-02-22 |  | -44.12d | 0d |  |  | 24h |
| 1347 | 16.3.5.2.1 | Реализация | 1d | 2005-02-22 | 2005-02-22 |  | -44.12d | 0d | start no earlier than 2005-02-22 | Сидорович | 8h |
| 1348 | 16.3.5.2.2 | Доработка X в движке | 1d? | 2005-02-22 | 2005-02-22 |  | -44.12d | 0d | start no earlier than 2005-02-22 |  |  |
| 1349 | 16.3.5.2.3 | Расстановка | 1d? | 2005-02-22 | 2005-02-22 |  | -44.12d | 0d | start no earlier than 2005-02-22 | Mustdie | 8h |
| 1350 | 16.3.5.2.4 | Тексты, Диалоги, Задания, Отметки на карте, новости, профили персонажей (продумать) | 1d? | 2005-02-22 | 2005-02-22 |  | -44.12d | 0d | start no earlier than 2005-02-22 | Mustdie | 8h |
| 1351 | 16.3.5.3 | **Тестирование** | 1d? | 2005-02-22 | 2005-02-22 |  | -44.12d | 0d |  |  |  |
| 1352 | 16.3.5.3.1 | Тестирование | 1d? | 2005-02-22 | 2005-02-22 |  | -44.12d | 0d | start no earlier than 2005-02-22 |  |  |
| 1353 | 16.3.5.3.2 | Проверить расстановку AI нод вокруг дерева | 1d? | 2005-02-22 | 2005-02-22 |  | -44.12d | 0d | start no earlier than 2005-02-22 |  |  |
| 1354 | 16.3.6 | **Сцена 5 - Деревня** | 3d? | 2005-02-23 | 2005-02-25 |  | -47.12d | 0d |  |  | 48h |
| 1355 | 16.3.6.1 | Постановка задач | 1d? | 2005-02-23 | 2005-02-23 |  | -45.12d | 0d | start no earlier than 2005-02-23 | Сидорович | 8h |

| ID | WBS | Task | Duration | Start | Finish | Predecessors | Total slack | Free slack | Constraint | Deadline | Resources | Work |
| --- | --- | --- | --- | --- | --- | --- | --- | --- | --- | --- | --- | --- |
| 1356 | 16.3.6.2 | **Реализация** | 2d? | 2005-02-24 | 2005-02-25 |  | -47.12d | 0d |  |  |  | 40h |
| 1357 | 16.3.6.2.1 | Реализация | 2d | 2005-02-24 | 2005-02-25 |  | -47.12d | 0d | start no earlier than 2005-02-24 |  | Сидорович | 16h |
| 1358 | 16.3.6.2.2 | Доработка X в движке | 1d? | 2005-02-24 | 2005-02-24 |  | -46.12d | 0d | start no earlier than 2005-02-24 |  |  |  |
| 1359 | 16.3.6.2.3 | Расстановка | 2d | 2005-02-24 | 2005-02-25 |  | -47.12d | 0d | start no earlier than 2005-02-24 |  | Mustdie | 16h |
| 1360 | 16.3.6.2.4 | Тексты, Диалоги, Задания, Отметки на карте, новости, профили персонажей (продумать) | 1d? | 2005-02-24 | 2005-02-24 |  | -46.12d | 0d | start no earlier than 2005-02-24 |  | Mustdie | 8h |
| 1361 | 16.3.6.3 | **Тестирование** | 1d? | 2005-02-24 | 2005-02-24 |  | -46.12d | 0d |  |  |  |  |
| 1362 | 16.3.6.3.1 | Тестирование | 1d? | 2005-02-24 | 2005-02-24 |  | -46.12d | 0d | start no earlier than 2005-02-24 |  |  |  |
| 1363 | 16.3.6.3.2 | Проверить расстановку AI нод вокруг дерева | 1d? | 2005-02-24 | 2005-02-24 |  | -46.12d | 0d | start no earlier than 2005-02-24 |  |  |  |
| 1371 | 17 | **20_Sarcofag** | 11d? | 2005-03-01 | 2005-03-14 | 1266 | -50d | 0d |  | 2005-04-01 | Маст Дай, Сидорович | 88h |
| 1372 | 17.1 | **LevelDesign** | 11d? | 2005-03-01 | 2005-03-14 |  | -50d | 0d |  | 2005-03-01 |  |  |
| 1373 | 17.1.1 | **Stage 1** | 11d? | 2005-03-01 | 2005-03-14 |  | -50d | 0d |  |  |  |  |
| 1374 | 17.1.1.1 | List of Changes | 2d | 2005-03-01 | 2005-03-03 |  | -50d | 0d |  |  |  |  |
| 1375 | 17.1.1.2 | Changed Geometry | 1d? | 2005-03-03 | 2005-03-04 | 1374 | -50d | 0d |  |  |  |  |
| 1376 | 17.1.1.3 | Check List 1 | 1d? | 2005-03-04 | 2005-03-05 | 1375 | -50d | 0d |  |  |  |  |
| 1377 | 17.1.1.4 | Check List 2 | 1d? | 2005-03-05 | 2005-03-07 | 1376 | -50d | 0d |  |  |  |  |
| 1378 | 17.1.1.5 | Check List 3 | 1d? | 2005-03-07 | 2005-03-08 | 1377 | -50d | 0d |  |  |  |  |
| 1379 | 17.1.1.6 | Check List 4 | 1d? | 2005-03-08 | 2005-03-09 | 1378 | -50d | 0d |  |  |  |  |
| 1380 | 17.1.1.7 | Render Geometry | 1d? | 2005-03-09 | 2005-03-10 | 1379 | -50d | 0d |  |  |  |  |
| 1381 | 17.1.1.8 | Grass | 1d? | 2005-03-10 | 2005-03-11 | 1380 | -50d | 0d |  |  |  |  |
| 1382 | 17.1.1.9 | AI Maps | 1d? | 2005-03-11 | 2005-03-12 | 1381 | -50d | 0d |  |  |  |  |
| 1383 | 17.1.1.10 | Graphs | 1d? | 2005-03-12 | 2005-03-14 | 1382 | -50d | 0d |  |  |  |  |
| 1385 | 17.2 | **GameDesign** | 3d? | 2005-03-01 | 2005-03-04 |  | -42d | 0d |  |  |  |  |
| 1386 | 17.2.1 | **Secrets** | 3d? | 2005-03-01 | 2005-03-04 |  | -42d | 0d |  |  |  |  |
| 1387 | 17.2.1.1 | **Stage 1** | 3d? | 2005-03-01 | 2005-03-04 |  | -42d | 0d |  |  |  |  |
| 1388 | 17.2.1.1.1 | Design | 1d? | 2005-03-01 | 2005-03-02 |  | -42d | 0d |  |  |  |  |
| 1389 | 17.2.1.1.2 | Implementation | 1d? | 2005-03-02 | 2005-03-03 | 1388 | -42d | 0d |  |  |  |  |
| 1390 | 17.2.1.1.3 | Tuning | 1d? | 2005-03-03 | 2005-03-04 | 1389 | -42d | 0d |  |  |  |  |

| ID | WBS | Task | Duration | Start | Finish | Predecessors | Total slack | Free slack |
| --- | --- | --- | --- | --- | --- | --- | --- | --- |
| 1391 | 17.2.2 | **Smartterrains** | 3d? | 2005-03-01 | 2005-03-04 |  | -42d | 0d |
| 1392 | 17.2.2.1 | **Stage 1** | 3d? | 2005-03-01 | 2005-03-04 |  | -42d | 0d |
| 1393 | 17.2.2.1.1 | Design | 1d? | 2005-03-01 | 2005-03-02 |  | -42d | 0d |
| 1394 | 17.2.2.1.2 | Implementation | 1d? | 2005-03-02 | 2005-03-03 | 1393 | -42d | 0d |
| 1395 | 17.2.2.1.3 | Tuning | 1d? | 2005-03-03 | 2005-03-04 | 1394 | -42d | 0d |
| 1396 | 17.2.3 | **Monsters/Spawns** | 3d? | 2005-03-01 | 2005-03-04 |  | -42d | 0d |
| 1397 | 17.2.3.1 | **Stage 1** | 3d? | 2005-03-01 | 2005-03-04 |  | -42d | 0d |
| 1398 | 17.2.3.1.1 | Design | 1d? | 2005-03-01 | 2005-03-02 |  | -42d | 0d |
| 1399 | 17.2.3.1.2 | Implementation | 1d? | 2005-03-02 | 2005-03-03 | 1398 | -42d | 0d |
| 1400 | 17.2.3.1.3 | Tuning | 1d? | 2005-03-03 | 2005-03-04 | 1399 | -42d | 0d |
| 1401 | 17.2.4 | **Stalkers/Spawns** | 3d? | 2005-03-01 | 2005-03-04 |  | -42d | 0d |
| 1402 | 17.2.4.1 | **Stage 1** | 3d? | 2005-03-01 | 2005-03-04 |  | -42d | 0d |
| 1403 | 17.2.4.1.1 | Design | 1d? | 2005-03-01 | 2005-03-02 |  | -42d | 0d |
| 1404 | 17.2.4.1.2 | Implementation | 1d? | 2005-03-02 | 2005-03-03 | 1403 | -42d | 0d |
| 1405 | 17.2.4.1.3 | Tuning | 1d? | 2005-03-03 | 2005-03-04 | 1404 | -42d | 0d |
| 1406 | 17.2.5 | **Anomalies/Spawns** | 3d? | 2005-03-01 | 2005-03-04 |  | -42d | 0d |
| 1407 | 17.2.5.1 | **Stage 1** | 3d? | 2005-03-01 | 2005-03-04 |  | -42d | 0d |
| 1408 | 17.2.5.1.1 | Design | 1d? | 2005-03-01 | 2005-03-02 |  | -42d | 0d |
| 1409 | 17.2.5.1.2 | Implementation | 1d? | 2005-03-02 | 2005-03-03 | 1408 | -42d | 0d |
| 1410 | 17.2.5.1.3 | Tuning | 1d? | 2005-03-03 | 2005-03-04 | 1409 | -42d | 0d |
| 1411 | 17.2.6 | **Physicks** | 3d? | 2005-03-01 | 2005-03-04 |  | -42d | 0d |
| 1412 | 17.2.6.1 | **Stage 1** | 3d? | 2005-03-01 | 2005-03-04 |  | -42d | 0d |
| 1413 | 17.2.6.1.1 | Design | 1d? | 2005-03-01 | 2005-03-02 |  | -42d | 0d |
| 1414 | 17.2.6.1.2 | Implementation | 1d? | 2005-03-02 | 2005-03-03 | 1413 | -42d | 0d |
| 1415 | 17.2.6.1.3 | Tuning | 1d? | 2005-03-03 | 2005-03-04 | 1414 | -42d | 0d |

| ID | WBS | Task | Duration | Start | Finish | Predecessors | Total slack | Free slack |
| --- | --- | --- | --- | --- | --- | --- | --- | --- |
| 1417 | 17.3 | **Scripts** | 5d? | 2005-03-01 | 2005-03-07 |  | -44d | 0d |
| 1418 | 17.3.1 | **Script 1** | 5d? | 2005-03-01 | 2005-03-07 |  | -44d | 0d |
| 1419 | 17.3.1.1 | Scenario(text) | 1d? | 2005-03-01 | 2005-03-02 |  | -44d | 0d |
| 1420 | 17.3.1.2 | Постановка задач | 1d? | 2005-03-02 | 2005-03-03 | 1419 | -44d | 0d |
| 1421 | 17.3.1.3 | Implimentation | 1d? | 2005-03-03 | 2005-03-04 | 1420 | -44d | 0d |
| 1422 | 17.3.1.4 | Dilogs/VO/Icons/Objects/Animations | 1d? | 2005-03-04 | 2005-03-05 | 1421 | -44d | 0d |
| 1423 | 17.3.1.5 | Настройка | 1d? | 2005-03-05 | 2005-03-07 | 1422 | -44d | 0d |
| 1424 | 17.3.2 | **Script 2** | 5d? | 2005-03-01 | 2005-03-07 |  | -44d | 0d |
| 1425 | 17.3.2.1 | Scenario(text) | 1d? | 2005-03-01 | 2005-03-02 |  | -44d | 0d |
| 1426 | 17.3.2.2 | Постановка задач | 1d? | 2005-03-02 | 2005-03-03 | 1425 | -44d | 0d |
| 1427 | 17.3.2.3 | Implimentation | 1d? | 2005-03-03 | 2005-03-04 | 1426 | -44d | 0d |
| 1428 | 17.3.2.4 | Dilogs/VO/Icons/Objects/Animations | 1d? | 2005-03-04 | 2005-03-05 | 1427 | -44d | 0d |
| 1429 | 17.3.2.5 | Настройка | 1d? | 2005-03-05 | 2005-03-07 | 1428 | -44d | 0d |
| 1430 | 17.3.3 | **Script 3** | 5d? | 2005-03-01 | 2005-03-07 |  | -44d | 0d |
| 1431 | 17.3.3.1 | Scenario(text) | 1d? | 2005-03-01 | 2005-03-02 |  | -44d | 0d |
| 1432 | 17.3.3.2 | Постановка задач | 1d? | 2005-03-02 | 2005-03-03 | 1431 | -44d | 0d |
| 1433 | 17.3.3.3 | Implimentation | 1d? | 2005-03-03 | 2005-03-04 | 1432 | -44d | 0d |
| 1434 | 17.3.3.4 | Dilogs/VO/Icons/Objects/Animations | 1d? | 2005-03-04 | 2005-03-05 | 1433 | -44d | 0d |
| 1435 | 17.3.3.5 | Настройка | 1d? | 2005-03-05 | 2005-03-07 | 1434 | -44d | 0d |
| 1436 | 17.3.4 | **Script 4** | 5d? | 2005-03-01 | 2005-03-07 |  | -44d | 0d |
| 1437 | 17.3.4.1 | Scenario(text) | 1d? | 2005-03-01 | 2005-03-02 |  | -44d | 0d |
| 1438 | 17.3.4.2 | Постановка задач | 1d? | 2005-03-02 | 2005-03-03 | 1437 | -44d | 0d |
| 1439 | 17.3.4.3 | Implimentation | 1d? | 2005-03-03 | 2005-03-04 | 1438 | -44d | 0d |
| 1440 | 17.3.4.4 | Dilogs/VO/Icons/Objects/Animations | 1d? | 2005-03-04 | 2005-03-05 | 1439 | -44d | 0d |
| 1441 | 17.3.4.5 | Настройка | 1d? | 2005-03-05 | 2005-03-07 | 1440 | -44d | 0d |

| ID | WBS | Task | Duration | Start | Finish | Predecessors | Total slack | Free slack | Deadline | Resources | Work |
| --- | --- | --- | --- | --- | --- | --- | --- | --- | --- | --- | --- |
| 1442 | 17.3.5 | **Script 5** | 5d? | 2005-03-01 | 2005-03-07 |  | -44d | 0d |  |  |  |
| 1443 | 17.3.5.1 | Scenario(text) | 1d? | 2005-03-01 | 2005-03-02 |  | -44d | 0d |  |  |  |
| 1444 | 17.3.5.2 | Постановка задач | 1d? | 2005-03-02 | 2005-03-03 | 1443 | -44d | 0d |  |  |  |
| 1445 | 17.3.5.3 | Implimentation | 1d? | 2005-03-03 | 2005-03-04 | 1444 | -44d | 0d |  |  |  |
| 1446 | 17.3.5.4 | Dilogs/VO/Icons/Objects/Animations | 1d? | 2005-03-04 | 2005-03-05 | 1445 | -44d | 0d |  |  |  |
| 1447 | 17.3.5.5 | Настройка | 1d? | 2005-03-05 | 2005-03-07 | 1446 | -44d | 0d |  |  |  |
| 1449 | 18 | **19_Stancia** | 11d? | 2005-03-14 | 2005-03-26 | 1371 | -50d | 0d | 2005-04-29 | Маст Дай, Сидорович | 88h |
| 1450 | 18.1 | **LevelDesign** | 11d? | 2005-03-14 | 2005-03-26 |  | -50d | 0d | 2005-01-27 |  |  |
| 1451 | 18.1.1 | **Stage 1** | 11d? | 2005-03-14 | 2005-03-26 |  | -50d | 0d |  |  |  |
| 1452 | 18.1.1.1 | List of Changes | 2d | 2005-03-14 | 2005-03-16 |  | -50d | 0d |  |  |  |
| 1453 | 18.1.1.2 | Changed Geometry | 1d? | 2005-03-16 | 2005-03-17 | 1452 | -50d | 0d |  |  |  |
| 1454 | 18.1.1.3 | Check List 1 | 1d? | 2005-03-17 | 2005-03-18 | 1453 | -50d | 0d |  |  |  |
| 1455 | 18.1.1.4 | Check List 2 | 1d? | 2005-03-18 | 2005-03-19 | 1454 | -50d | 0d |  |  |  |
| 1456 | 18.1.1.5 | Check List 3 | 1d? | 2005-03-19 | 2005-03-21 | 1455 | -50d | 0d |  |  |  |
| 1457 | 18.1.1.6 | Check List 4 | 1d? | 2005-03-21 | 2005-03-22 | 1456 | -50d | 0d |  |  |  |
| 1458 | 18.1.1.7 | Render Geometry | 1d? | 2005-03-22 | 2005-03-23 | 1457 | -50d | 0d |  |  |  |
| 1459 | 18.1.1.8 | Grass | 1d? | 2005-03-23 | 2005-03-24 | 1458 | -50d | 0d |  |  |  |
| 1460 | 18.1.1.9 | AI Maps | 1d? | 2005-03-24 | 2005-03-25 | 1459 | -50d | 0d |  |  |  |
| 1461 | 18.1.1.10 | Graphs | 1d? | 2005-03-25 | 2005-03-26 | 1460 | -50d | 0d |  |  |  |
| 1463 | 18.2 | **GameDesign** | 3d? | 2005-03-14 | 2005-03-17 |  | 37d |  |  |  |  |
| 1464 | 18.2.1 | **Secrets** | 3d? | 2005-03-14 | 2005-03-17 |  | 37d |  |  |  |  |
| 1465 | 18.2.1.1 | **Stage 1** | 3d? | 2005-03-14 | 2005-03-17 |  | 37d |  |  |  |  |
| 1466 | 18.2.1.1.1 | Design | 1d? | 2005-03-14 | 2005-03-15 |  | 37d | 0d |  |  |  |
| 1467 | 18.2.1.1.2 | Implementation | 1d? | 2005-03-15 | 2005-03-16 | 1466 | 37d | 0d |  |  |  |
| 1468 | 18.2.1.1.3 | Tuning | 1d? | 2005-03-16 | 2005-03-17 | 1467 | 37d |  |  |  |  |

| ID | WBS | Task | Duration | Start | Finish | Predecessors | Total slack | Free slack |
| --- | --- | --- | --- | --- | --- | --- | --- | --- |
| 1469 | 18.2.2 | **Smartterrains** | 3d? | 2005-03-14 | 2005-03-17 |  | 37d |  |
| 1470 | 18.2.2.1 | **Stage 1** | 3d? | 2005-03-14 | 2005-03-17 |  | 37d |  |
| 1471 | 18.2.2.1.1 | Design | 1d? | 2005-03-14 | 2005-03-15 |  | 37d | 0d |
| 1472 | 18.2.2.1.2 | Implementation | 1d? | 2005-03-15 | 2005-03-16 | 1471 | 37d | 0d |
| 1473 | 18.2.2.1.3 | Tuning | 1d? | 2005-03-16 | 2005-03-17 | 1472 | 37d |  |
| 1474 | 18.2.3 | **Monsters/Spawns** | 3d? | 2005-03-14 | 2005-03-17 |  | 37d |  |
| 1475 | 18.2.3.1 | **Stage 1** | 3d? | 2005-03-14 | 2005-03-17 |  | 37d |  |
| 1476 | 18.2.3.1.1 | Design | 1d? | 2005-03-14 | 2005-03-15 |  | 37d | 0d |
| 1477 | 18.2.3.1.2 | Implementation | 1d? | 2005-03-15 | 2005-03-16 | 1476 | 37d | 0d |
| 1478 | 18.2.3.1.3 | Tuning | 1d? | 2005-03-16 | 2005-03-17 | 1477 | 37d |  |
| 1479 | 18.2.4 | **Stalkers/Spawns** | 3d? | 2005-03-14 | 2005-03-17 |  | 37d |  |
| 1480 | 18.2.4.1 | **Stage 1** | 3d? | 2005-03-14 | 2005-03-17 |  | 37d |  |
| 1481 | 18.2.4.1.1 | Design | 1d? | 2005-03-14 | 2005-03-15 |  | 37d | 0d |
| 1482 | 18.2.4.1.2 | Implementation | 1d? | 2005-03-15 | 2005-03-16 | 1481 | 37d | 0d |
| 1483 | 18.2.4.1.3 | Tuning | 1d? | 2005-03-16 | 2005-03-17 | 1482 | 37d |  |
| 1484 | 18.2.5 | **Anomalies/Spawns** | 3d? | 2005-03-14 | 2005-03-17 |  | 37d |  |
| 1485 | 18.2.5.1 | **Stage 1** | 3d? | 2005-03-14 | 2005-03-17 |  | 37d |  |
| 1486 | 18.2.5.1.1 | Design | 1d? | 2005-03-14 | 2005-03-15 |  | 37d | 0d |
| 1487 | 18.2.5.1.2 | Implementation | 1d? | 2005-03-15 | 2005-03-16 | 1486 | 37d | 0d |
| 1488 | 18.2.5.1.3 | Tuning | 1d? | 2005-03-16 | 2005-03-17 | 1487 | 37d |  |
| 1489 | 18.2.6 | **Physicks** | 3d? | 2005-03-14 | 2005-03-17 |  | 37d |  |
| 1490 | 18.2.6.1 | **Stage 1** | 3d? | 2005-03-14 | 2005-03-17 |  | 37d |  |
| 1491 | 18.2.6.1.1 | Design | 1d? | 2005-03-14 | 2005-03-15 |  | 37d | 0d |
| 1492 | 18.2.6.1.2 | Implementation | 1d? | 2005-03-15 | 2005-03-16 | 1491 | 37d | 0d |
| 1493 | 18.2.6.1.3 | Tuning | 1d? | 2005-03-16 | 2005-03-17 | 1492 | 37d |  |

| ID | WBS | Task | Duration | Start | Finish | Predecessors | Total slack | Free slack |
| --- | --- | --- | --- | --- | --- | --- | --- | --- |
| 1495 | 18.3 | **Scripts** | 5d? | 2005-03-14 | 2005-03-19 |  | 35d |  |
| 1496 | 18.3.1 | **Script 1** | 5d? | 2005-03-14 | 2005-03-19 |  | 35d |  |
| 1497 | 18.3.1.1 | Scenario(text) | 1d? | 2005-03-14 | 2005-03-15 |  | 35d | 0d |
| 1498 | 18.3.1.2 | Постановка задач | 1d? | 2005-03-15 | 2005-03-16 | 1497 | 35d | 0d |
| 1499 | 18.3.1.3 | Implimentation | 1d? | 2005-03-16 | 2005-03-17 | 1498 | 35d | 0d |
| 1500 | 18.3.1.4 | Dilogs/VO/Icons/Objects/Animations | 1d? | 2005-03-17 | 2005-03-18 | 1499 | 35d | 0d |
| 1501 | 18.3.1.5 | Настройка | 1d? | 2005-03-18 | 2005-03-19 | 1500 | 35d |  |
| 1502 | 18.3.2 | **Script 2** | 5d? | 2005-03-14 | 2005-03-19 |  | 35d |  |
| 1503 | 18.3.2.1 | Scenario(text) | 1d? | 2005-03-14 | 2005-03-15 |  | 35d | 0d |
| 1504 | 18.3.2.2 | Постановка задач | 1d? | 2005-03-15 | 2005-03-16 | 1503 | 35d | 0d |
| 1505 | 18.3.2.3 | Implimentation | 1d? | 2005-03-16 | 2005-03-17 | 1504 | 35d | 0d |
| 1506 | 18.3.2.4 | Dilogs/VO/Icons/Objects/Animations | 1d? | 2005-03-17 | 2005-03-18 | 1505 | 35d | 0d |
| 1507 | 18.3.2.5 | Настройка | 1d? | 2005-03-18 | 2005-03-19 | 1506 | 35d |  |
| 1508 | 18.3.3 | **Script 3** | 5d? | 2005-03-14 | 2005-03-19 |  | 35d |  |
| 1509 | 18.3.3.1 | Scenario(text) | 1d? | 2005-03-14 | 2005-03-15 |  | 35d | 0d |
| 1510 | 18.3.3.2 | Постановка задач | 1d? | 2005-03-15 | 2005-03-16 | 1509 | 35d | 0d |
| 1511 | 18.3.3.3 | Implimentation | 1d? | 2005-03-16 | 2005-03-17 | 1510 | 35d | 0d |
| 1512 | 18.3.3.4 | Dilogs/VO/Icons/Objects/Animations | 1d? | 2005-03-17 | 2005-03-18 | 1511 | 35d | 0d |
| 1513 | 18.3.3.5 | Настройка | 1d? | 2005-03-18 | 2005-03-19 | 1512 | 35d |  |
| 1514 | 18.3.4 | **Script 4** | 5d? | 2005-03-14 | 2005-03-19 |  | 35d |  |
| 1515 | 18.3.4.1 | Scenario(text) | 1d? | 2005-03-14 | 2005-03-15 |  | 35d | 0d |
| 1516 | 18.3.4.2 | Постановка задач | 1d? | 2005-03-15 | 2005-03-16 | 1515 | 35d | 0d |
| 1517 | 18.3.4.3 | Implimentation | 1d? | 2005-03-16 | 2005-03-17 | 1516 | 35d | 0d |
| 1518 | 18.3.4.4 | Dilogs/VO/Icons/Objects/Animations | 1d? | 2005-03-17 | 2005-03-18 | 1517 | 35d | 0d |
| 1519 | 18.3.4.5 | Настройка | 1d? | 2005-03-18 | 2005-03-19 | 1518 | 35d |  |

| ID | WBS | Task | Duration | Start | Finish | Predecessors | Total slack | Free slack | Deadline | Resources | Work |
| --- | --- | --- | --- | --- | --- | --- | --- | --- | --- | --- | --- |
| 1520 | 18.3.5 | **Script 5** | 5d? | 2005-03-14 | 2005-03-19 |  | 35d |  |  |  |  |
| 1521 | 18.3.5.1 | Scenario(text) | 1d? | 2005-03-14 | 2005-03-15 |  | 35d | 0d |  |  |  |
| 1522 | 18.3.5.2 | Постановка задач | 1d? | 2005-03-15 | 2005-03-16 | 1521 | 35d | 0d |  |  |  |
| 1523 | 18.3.5.3 | Implimentation | 1d? | 2005-03-16 | 2005-03-17 | 1522 | 35d | 0d |  |  |  |
| 1524 | 18.3.5.4 | Dilogs/VO/Icons/Objects/Animations | 1d? | 2005-03-17 | 2005-03-18 | 1523 | 35d | 0d |  |  |  |
| 1525 | 18.3.5.5 | Настройка | 1d? | 2005-03-18 | 2005-03-19 | 1524 | 35d |  |  |  |  |
| 1530 | 19 | **15_Radar** | 11d? | 2005-01-24 | 2005-02-04 |  | 1.88d | 0d | 2005-03-01 | Лестат, Чугай | 88h |
| 1531 | 19.1 | **LevelDesign** | 11d? | 2005-01-24 | 2005-02-04 |  | 1.88d |  | 2005-02-07 |  |  |
| 1532 | 19.1.1 | **Stage 1** | 11d? | 2005-01-24 | 2005-02-04 |  | 1.88d |  |  |  |  |
| 1533 | 19.1.1.1 | List of Changes | 2d | 2005-01-24 | 2005-01-25 |  | 1.88d | 0d |  |  |  |
| 1534 | 19.1.1.2 | Changed Geometry | 1d? | 2005-01-26 | 2005-01-26 | 1533 | 1.88d | 0d |  |  |  |
| 1535 | 19.1.1.3 | Check List 1 | 1d? | 2005-01-27 | 2005-01-27 | 1534 | 1.88d | 0d |  |  |  |
| 1536 | 19.1.1.4 | Check List 2 | 1d? | 2005-01-28 | 2005-01-28 | 1535 | 1.88d | 0d |  |  |  |
| 1537 | 19.1.1.5 | Check List 3 | 1d? | 2005-01-29 | 2005-01-29 | 1536 | 1.88d | 0d |  |  |  |
| 1538 | 19.1.1.6 | Check List 4 | 1d? | 2005-01-31 | 2005-01-31 | 1537 | 1.88d | 0d |  |  |  |
| 1539 | 19.1.1.7 | Render Geometry | 1d? | 2005-02-01 | 2005-02-01 | 1538 | 1.88d | 0d |  |  |  |
| 1540 | 19.1.1.8 | Grass | 1d? | 2005-02-02 | 2005-02-02 | 1539 | 1.88d | 0d |  |  |  |
| 1541 | 19.1.1.9 | AI Maps | 1d? | 2005-02-03 | 2005-02-03 | 1540 | 1.88d | 0d |  |  |  |
| 1542 | 19.1.1.10 | Graphs | 1d? | 2005-02-04 | 2005-02-04 | 1541 | 1.88d |  |  |  |  |
| 1544 | 19.2 | **GameDesign** | 3d? | 2005-01-24 | 2005-01-26 |  | 17.88d |  |  |  |  |
| 1545 | 19.2.1 | **Secrets** | 3d? | 2005-01-24 | 2005-01-26 |  | 17.88d |  |  |  |  |
| 1546 | 19.2.1.1 | **Stage 1** | 3d? | 2005-01-24 | 2005-01-26 |  | 17.88d |  |  |  |  |
| 1547 | 19.2.1.1.1 | Design | 1d? | 2005-01-24 | 2005-01-24 |  | 17.88d | 0d |  |  |  |
| 1548 | 19.2.1.1.2 | Implementation | 1d? | 2005-01-25 | 2005-01-25 | 1547 | 17.88d | 0d |  |  |  |
| 1549 | 19.2.1.1.3 | Tuning | 1d? | 2005-01-26 | 2005-01-26 | 1548 | 17.88d |  |  |  |  |

| ID | WBS | Task | Duration | Start | Finish | Predecessors | Total slack | Free slack |
| --- | --- | --- | --- | --- | --- | --- | --- | --- |
| 1550 | 19.2.2 | **Smartterrains** | 3d? | 2005-01-24 | 2005-01-26 |  | 17.88d |  |
| 1551 | 19.2.2.1 | **Stage 1** | 3d? | 2005-01-24 | 2005-01-26 |  | 17.88d |  |
| 1552 | 19.2.2.1.1 | Design | 1d? | 2005-01-24 | 2005-01-24 |  | 17.88d | 0d |
| 1553 | 19.2.2.1.2 | Implementation | 1d? | 2005-01-25 | 2005-01-25 | 1552 | 17.88d | 0d |
| 1554 | 19.2.2.1.3 | Tuning | 1d? | 2005-01-26 | 2005-01-26 | 1553 | 17.88d |  |
| 1555 | 19.2.3 | **Monsters/Spawns** | 3d? | 2005-01-24 | 2005-01-26 |  | 17.88d |  |
| 1556 | 19.2.3.1 | **Stage 1** | 3d? | 2005-01-24 | 2005-01-26 |  | 17.88d |  |
| 1557 | 19.2.3.1.1 | Design | 1d? | 2005-01-24 | 2005-01-24 |  | 17.88d | 0d |
| 1558 | 19.2.3.1.2 | Implementation | 1d? | 2005-01-25 | 2005-01-25 | 1557 | 17.88d | 0d |
| 1559 | 19.2.3.1.3 | Tuning | 1d? | 2005-01-26 | 2005-01-26 | 1558 | 17.88d |  |
| 1560 | 19.2.4 | **Stalkers/Spawns** | 3d? | 2005-01-24 | 2005-01-26 |  | 17.88d |  |
| 1561 | 19.2.4.1 | **Stage 1** | 3d? | 2005-01-24 | 2005-01-26 |  | 17.88d |  |
| 1562 | 19.2.4.1.1 | Design | 1d? | 2005-01-24 | 2005-01-24 |  | 17.88d | 0d |
| 1563 | 19.2.4.1.2 | Implementation | 1d? | 2005-01-25 | 2005-01-25 | 1562 | 17.88d | 0d |
| 1564 | 19.2.4.1.3 | Tuning | 1d? | 2005-01-26 | 2005-01-26 | 1563 | 17.88d |  |
| 1565 | 19.2.5 | **Anomalies/Spawns** | 3d? | 2005-01-24 | 2005-01-26 |  | 17.88d |  |
| 1566 | 19.2.5.1 | **Stage 1** | 3d? | 2005-01-24 | 2005-01-26 |  | 17.88d |  |
| 1567 | 19.2.5.1.1 | Design | 1d? | 2005-01-24 | 2005-01-24 |  | 17.88d | 0d |
| 1568 | 19.2.5.1.2 | Implementation | 1d? | 2005-01-25 | 2005-01-25 | 1567 | 17.88d | 0d |
| 1569 | 19.2.5.1.3 | Tuning | 1d? | 2005-01-26 | 2005-01-26 | 1568 | 17.88d |  |
| 1570 | 19.2.6 | **Physicks** | 3d? | 2005-01-24 | 2005-01-26 |  | 17.88d |  |
| 1571 | 19.2.6.1 | **Stage 1** | 3d? | 2005-01-24 | 2005-01-26 |  | 17.88d |  |
| 1572 | 19.2.6.1.1 | Design | 1d? | 2005-01-24 | 2005-01-24 |  | 17.88d | 0d |
| 1573 | 19.2.6.1.2 | Implementation | 1d? | 2005-01-25 | 2005-01-25 | 1572 | 17.88d | 0d |
| 1574 | 19.2.6.1.3 | Tuning | 1d? | 2005-01-26 | 2005-01-26 | 1573 | 17.88d |  |

| ID | WBS | Task | Duration | Start | Finish | Predecessors | Total slack | Free slack |
| --- | --- | --- | --- | --- | --- | --- | --- | --- |
| 1576 | 19.3 | **Scripts** | 5d? | 2005-01-24 | 2005-01-28 |  | 15.88d |  |
| 1577 | 19.3.1 | **Script 1** | 5d? | 2005-01-24 | 2005-01-28 |  | 15.88d |  |
| 1578 | 19.3.1.1 | Scenario(text) | 1d? | 2005-01-24 | 2005-01-24 |  | 15.88d | 0d |
| 1579 | 19.3.1.2 | Постановка задач | 1d? | 2005-01-25 | 2005-01-25 | 1578 | 15.88d | 0d |
| 1580 | 19.3.1.3 | Implimentation | 1d? | 2005-01-26 | 2005-01-26 | 1579 | 15.88d | 0d |
| 1581 | 19.3.1.4 | Dilogs/VO/Icons/Objects/Animations | 1d? | 2005-01-27 | 2005-01-27 | 1580 | 15.88d | 0d |
| 1582 | 19.3.1.5 | Настройка | 1d? | 2005-01-28 | 2005-01-28 | 1581 | 15.88d |  |
| 1583 | 19.3.2 | **Script 2** | 5d? | 2005-01-24 | 2005-01-28 |  | 15.88d |  |
| 1584 | 19.3.2.1 | Scenario(text) | 1d? | 2005-01-24 | 2005-01-24 |  | 15.88d | 0d |
| 1585 | 19.3.2.2 | Постановка задач | 1d? | 2005-01-25 | 2005-01-25 | 1584 | 15.88d | 0d |
| 1586 | 19.3.2.3 | Implimentation | 1d? | 2005-01-26 | 2005-01-26 | 1585 | 15.88d | 0d |
| 1587 | 19.3.2.4 | Dilogs/VO/Icons/Objects/Animations | 1d? | 2005-01-27 | 2005-01-27 | 1586 | 15.88d | 0d |
| 1588 | 19.3.2.5 | Настройка | 1d? | 2005-01-28 | 2005-01-28 | 1587 | 15.88d |  |
| 1589 | 19.3.3 | **Script 3** | 5d? | 2005-01-24 | 2005-01-28 |  | 15.88d |  |
| 1590 | 19.3.3.1 | Scenario(text) | 1d? | 2005-01-24 | 2005-01-24 |  | 15.88d | 0d |
| 1591 | 19.3.3.2 | Постановка задач | 1d? | 2005-01-25 | 2005-01-25 | 1590 | 15.88d | 0d |
| 1592 | 19.3.3.3 | Implimentation | 1d? | 2005-01-26 | 2005-01-26 | 1591 | 15.88d | 0d |
| 1593 | 19.3.3.4 | Dilogs/VO/Icons/Objects/Animations | 1d? | 2005-01-27 | 2005-01-27 | 1592 | 15.88d | 0d |
| 1594 | 19.3.3.5 | Настройка | 1d? | 2005-01-28 | 2005-01-28 | 1593 | 15.88d |  |
| 1595 | 19.3.4 | **Script 4** | 5d? | 2005-01-24 | 2005-01-28 |  | 15.88d |  |
| 1596 | 19.3.4.1 | Scenario(text) | 1d? | 2005-01-24 | 2005-01-24 |  | 15.88d | 0d |
| 1597 | 19.3.4.2 | Постановка задач | 1d? | 2005-01-25 | 2005-01-25 | 1596 | 15.88d | 0d |
| 1598 | 19.3.4.3 | Implimentation | 1d? | 2005-01-26 | 2005-01-26 | 1597 | 15.88d | 0d |
| 1599 | 19.3.4.4 | Dilogs/VO/Icons/Objects/Animations | 1d? | 2005-01-27 | 2005-01-27 | 1598 | 15.88d | 0d |
| 1600 | 19.3.4.5 | Настройка | 1d? | 2005-01-28 | 2005-01-28 | 1599 | 15.88d |  |

| ID | WBS | Task | Duration | Start | Finish | Predecessors | Total slack | Free slack | Deadline | Resources | Work |
| --- | --- | --- | --- | --- | --- | --- | --- | --- | --- | --- | --- |
| 1601 | 19.3.5 | **Script 5** | 5d? | 2005-01-24 | 2005-01-28 |  | 15.88d |  |  |  |  |
| 1602 | 19.3.5.1 | Scenario(text) | 1d? | 2005-01-24 | 2005-01-24 |  | 15.88d | 0d |  |  |  |
| 1603 | 19.3.5.2 | Постановка задач | 1d? | 2005-01-25 | 2005-01-25 | 1602 | 15.88d | 0d |  |  |  |
| 1604 | 19.3.5.3 | Implimentation | 1d? | 2005-01-26 | 2005-01-26 | 1603 | 15.88d | 0d |  |  |  |
| 1605 | 19.3.5.4 | Dilogs/VO/Icons/Objects/Animations | 1d? | 2005-01-27 | 2005-01-27 | 1604 | 15.88d | 0d |  |  |  |
| 1606 | 19.3.5.5 | Настройка | 1d? | 2005-01-28 | 2005-01-28 | 1605 | 15.88d |  |  |  |  |
| 1609 | 20 | **12_Yantar_Underground** | 11d? | 2005-02-05 | 2005-02-17 | 1530 | 9.88d | 0d | 2005-03-15 | Лестат, Чугай | 88h |
| 1610 | 20.1 | **LevelDesign** | 11d? | 2005-02-05 | 2005-02-17 |  | 9.88d |  | 2005-03-01 |  |  |
| 1611 | 20.1.1 | **Stage 1** | 11d? | 2005-02-05 | 2005-02-17 |  | 9.88d |  |  |  |  |
| 1612 | 20.1.1.1 | List of Changes | 2d | 2005-02-05 | 2005-02-07 |  | 9.88d | 0d |  |  |  |
| 1613 | 20.1.1.2 | Changed Geometry | 1d? | 2005-02-08 | 2005-02-08 | 1612 | 9.88d | 0d |  |  |  |
| 1614 | 20.1.1.3 | Check List 1 | 1d? | 2005-02-09 | 2005-02-09 | 1613 | 9.88d | 0d |  |  |  |
| 1615 | 20.1.1.4 | Check List 2 | 1d? | 2005-02-10 | 2005-02-10 | 1614 | 9.88d | 0d |  |  |  |
| 1616 | 20.1.1.5 | Check List 3 | 1d? | 2005-02-11 | 2005-02-11 | 1615 | 9.88d | 0d |  |  |  |
| 1617 | 20.1.1.6 | Check List 4 | 1d? | 2005-02-12 | 2005-02-12 | 1616 | 9.88d | 0d |  |  |  |
| 1618 | 20.1.1.7 | Render Geometry | 1d? | 2005-02-14 | 2005-02-14 | 1617 | 9.88d | 0d |  |  |  |
| 1619 | 20.1.1.8 | Grass | 1d? | 2005-02-15 | 2005-02-15 | 1618 | 9.88d | 0d |  |  |  |
| 1620 | 20.1.1.9 | AI Maps | 1d? | 2005-02-16 | 2005-02-16 | 1619 | 9.88d | 0d |  |  |  |
| 1621 | 20.1.1.10 | Graphs | 1d? | 2005-02-17 | 2005-02-17 | 1620 | 9.88d |  |  |  |  |
| 1623 | 20.2 | **GameDesign** | 3d? | 2005-02-05 | 2005-02-08 |  | 18.88d |  |  |  |  |
| 1624 | 20.2.1 | **Secrets** | 3d? | 2005-02-05 | 2005-02-08 |  | 18.88d |  |  |  |  |
| 1625 | 20.2.1.1 | **Stage 1** | 3d? | 2005-02-05 | 2005-02-08 |  | 18.88d |  |  |  |  |
| 1626 | 20.2.1.1.1 | Design | 1d? | 2005-02-05 | 2005-02-05 |  | 18.88d | 0d |  |  |  |
| 1627 | 20.2.1.1.2 | Implementation | 1d? | 2005-02-07 | 2005-02-07 | 1626 | 18.88d | 0d |  |  |  |
| 1628 | 20.2.1.1.3 | Tuning | 1d? | 2005-02-08 | 2005-02-08 | 1627 | 18.88d |  |  |  |  |

| ID | WBS | Task | Duration | Start | Finish | Predecessors | Total slack | Free slack |
| --- | --- | --- | --- | --- | --- | --- | --- | --- |
| 1629 | 20.2.2 | **Smartterrains** | 3d? | 2005-02-05 | 2005-02-08 |  | 18.88d |  |
| 1630 | 20.2.2.1 | **Stage 1** | 3d? | 2005-02-05 | 2005-02-08 |  | 18.88d |  |
| 1631 | 20.2.2.1.1 | Design | 1d? | 2005-02-05 | 2005-02-05 |  | 18.88d | 0d |
| 1632 | 20.2.2.1.2 | Implementation | 1d? | 2005-02-07 | 2005-02-07 | 1631 | 18.88d | 0d |
| 1633 | 20.2.2.1.3 | Tuning | 1d? | 2005-02-08 | 2005-02-08 | 1632 | 18.88d |  |
| 1634 | 20.2.3 | **Monsters/Spawns** | 3d? | 2005-02-05 | 2005-02-08 |  | 18.88d |  |
| 1635 | 20.2.3.1 | **Stage 1** | 3d? | 2005-02-05 | 2005-02-08 |  | 18.88d |  |
| 1636 | 20.2.3.1.1 | Design | 1d? | 2005-02-05 | 2005-02-05 |  | 18.88d | 0d |
| 1637 | 20.2.3.1.2 | Implementation | 1d? | 2005-02-07 | 2005-02-07 | 1636 | 18.88d | 0d |
| 1638 | 20.2.3.1.3 | Tuning | 1d? | 2005-02-08 | 2005-02-08 | 1637 | 18.88d |  |
| 1639 | 20.2.4 | **Stalkers/Spawns** | 3d? | 2005-02-05 | 2005-02-08 |  | 18.88d |  |
| 1640 | 20.2.4.1 | **Stage 1** | 3d? | 2005-02-05 | 2005-02-08 |  | 18.88d |  |
| 1641 | 20.2.4.1.1 | Design | 1d? | 2005-02-05 | 2005-02-05 |  | 18.88d | 0d |
| 1642 | 20.2.4.1.2 | Implementation | 1d? | 2005-02-07 | 2005-02-07 | 1641 | 18.88d | 0d |
| 1643 | 20.2.4.1.3 | Tuning | 1d? | 2005-02-08 | 2005-02-08 | 1642 | 18.88d |  |
| 1644 | 20.2.5 | **Anomalies/Spawns** | 3d? | 2005-02-05 | 2005-02-08 |  | 18.88d |  |
| 1645 | 20.2.5.1 | **Stage 1** | 3d? | 2005-02-05 | 2005-02-08 |  | 18.88d |  |
| 1646 | 20.2.5.1.1 | Design | 1d? | 2005-02-05 | 2005-02-05 |  | 18.88d | 0d |
| 1647 | 20.2.5.1.2 | Implementation | 1d? | 2005-02-07 | 2005-02-07 | 1646 | 18.88d | 0d |
| 1648 | 20.2.5.1.3 | Tuning | 1d? | 2005-02-08 | 2005-02-08 | 1647 | 18.88d |  |
| 1649 | 20.2.6 | **Physicks** | 3d? | 2005-02-05 | 2005-02-08 |  | 18.88d |  |
| 1650 | 20.2.6.1 | **Stage 1** | 3d? | 2005-02-05 | 2005-02-08 |  | 18.88d |  |
| 1651 | 20.2.6.1.1 | Design | 1d? | 2005-02-05 | 2005-02-05 |  | 18.88d | 0d |
| 1652 | 20.2.6.1.2 | Implementation | 1d? | 2005-02-07 | 2005-02-07 | 1651 | 18.88d | 0d |
| 1653 | 20.2.6.1.3 | Tuning | 1d? | 2005-02-08 | 2005-02-08 | 1652 | 18.88d |  |

| ID | WBS | Task | Duration | Start | Finish | Predecessors | Total slack | Free slack |
| --- | --- | --- | --- | --- | --- | --- | --- | --- |
| 1655 | 20.3 | **Scripts** | 5d? | 2005-02-05 | 2005-02-10 |  | 16.88d |  |
| 1656 | 20.3.1 | **Script 1** | 5d? | 2005-02-05 | 2005-02-10 |  | 16.88d |  |
| 1657 | 20.3.1.1 | Scenario(text) | 1d? | 2005-02-05 | 2005-02-05 |  | 16.88d | 0d |
| 1658 | 20.3.1.2 | Постановка задач | 1d? | 2005-02-07 | 2005-02-07 | 1657 | 16.88d | 0d |
| 1659 | 20.3.1.3 | Implimentation | 1d? | 2005-02-08 | 2005-02-08 | 1658 | 16.88d | 0d |
| 1660 | 20.3.1.4 | Dilogs/VO/Icons/Objects/Animations | 1d? | 2005-02-09 | 2005-02-09 | 1659 | 16.88d | 0d |
| 1661 | 20.3.1.5 | Настройка | 1d? | 2005-02-10 | 2005-02-10 | 1660 | 16.88d |  |
| 1662 | 20.3.2 | **Script 2** | 5d? | 2005-02-05 | 2005-02-10 |  | 16.88d |  |
| 1663 | 20.3.2.1 | Scenario(text) | 1d? | 2005-02-05 | 2005-02-05 |  | 16.88d | 0d |
| 1664 | 20.3.2.2 | Постановка задач | 1d? | 2005-02-07 | 2005-02-07 | 1663 | 16.88d | 0d |
| 1665 | 20.3.2.3 | Implimentation | 1d? | 2005-02-08 | 2005-02-08 | 1664 | 16.88d | 0d |
| 1666 | 20.3.2.4 | Dilogs/VO/Icons/Objects/Animations | 1d? | 2005-02-09 | 2005-02-09 | 1665 | 16.88d | 0d |
| 1667 | 20.3.2.5 | Настройка | 1d? | 2005-02-10 | 2005-02-10 | 1666 | 16.88d |  |
| 1668 | 20.3.3 | **Script 3** | 5d? | 2005-02-05 | 2005-02-10 |  | 16.88d |  |
| 1669 | 20.3.3.1 | Scenario(text) | 1d? | 2005-02-05 | 2005-02-05 |  | 16.88d | 0d |
| 1670 | 20.3.3.2 | Постановка задач | 1d? | 2005-02-07 | 2005-02-07 | 1669 | 16.88d | 0d |
| 1671 | 20.3.3.3 | Implimentation | 1d? | 2005-02-08 | 2005-02-08 | 1670 | 16.88d | 0d |
| 1672 | 20.3.3.4 | Dilogs/VO/Icons/Objects/Animations | 1d? | 2005-02-09 | 2005-02-09 | 1671 | 16.88d | 0d |
| 1673 | 20.3.3.5 | Настройка | 1d? | 2005-02-10 | 2005-02-10 | 1672 | 16.88d |  |
| 1674 | 20.3.4 | **Script 4** | 5d? | 2005-02-05 | 2005-02-10 |  | 16.88d |  |
| 1675 | 20.3.4.1 | Scenario(text) | 1d? | 2005-02-05 | 2005-02-05 |  | 16.88d | 0d |
| 1676 | 20.3.4.2 | Постановка задач | 1d? | 2005-02-07 | 2005-02-07 | 1675 | 16.88d | 0d |
| 1677 | 20.3.4.3 | Implimentation | 1d? | 2005-02-08 | 2005-02-08 | 1676 | 16.88d | 0d |
| 1678 | 20.3.4.4 | Dilogs/VO/Icons/Objects/Animations | 1d? | 2005-02-09 | 2005-02-09 | 1677 | 16.88d | 0d |
| 1679 | 20.3.4.5 | Настройка | 1d? | 2005-02-10 | 2005-02-10 | 1678 | 16.88d |  |

| ID | WBS | Task | Duration | Start | Finish | Predecessors | Total slack | Free slack | Deadline | Resources | Work |
| --- | --- | --- | --- | --- | --- | --- | --- | --- | --- | --- | --- |
| 1680 | 20.3.5 | **Script 5** | 5d? | 2005-02-05 | 2005-02-10 |  | 16.88d |  |  |  |  |
| 1681 | 20.3.5.1 | Scenario(text) | 1d? | 2005-02-05 | 2005-02-05 |  | 16.88d | 0d |  |  |  |
| 1682 | 20.3.5.2 | Постановка задач | 1d? | 2005-02-07 | 2005-02-07 | 1681 | 16.88d | 0d |  |  |  |
| 1683 | 20.3.5.3 | Implimentation | 1d? | 2005-02-08 | 2005-02-08 | 1682 | 16.88d | 0d |  |  |  |
| 1684 | 20.3.5.4 | Dilogs/VO/Icons/Objects/Animations | 1d? | 2005-02-09 | 2005-02-09 | 1683 | 16.88d | 0d |  |  |  |
| 1685 | 20.3.5.5 | Настройка | 1d? | 2005-02-10 | 2005-02-10 | 1684 | 16.88d |  |  |  |  |
| 1688 | 21 | **14_Swamp** | 11d? | 2005-02-18 | 2005-03-02 | 1609 | 10.88d |  | 2005-04-15 | Лестат, Чугай | 88h |
| 1689 | 21.1 | **LevelDesign** | 11d? | 2005-02-18 | 2005-03-02 |  | 10.88d |  | 2005-03-15 |  |  |
| 1690 | 21.1.1 | **Stage 1** | 11d? | 2005-02-18 | 2005-03-02 |  | 10.88d |  |  |  |  |
| 1691 | 21.1.1.1 | List of Changes | 2d | 2005-02-18 | 2005-02-19 |  | 10.88d | 0d |  |  |  |
| 1692 | 21.1.1.2 | Changed Geometry | 1d? | 2005-02-21 | 2005-02-21 | 1691 | 10.88d | 0d |  |  |  |
| 1693 | 21.1.1.3 | Check List 1 | 1d? | 2005-02-22 | 2005-02-22 | 1692 | 10.88d | 0d |  |  |  |
| 1694 | 21.1.1.4 | Check List 2 | 1d? | 2005-02-23 | 2005-02-23 | 1693 | 10.88d | 0d |  |  |  |
| 1695 | 21.1.1.5 | Check List 3 | 1d? | 2005-02-24 | 2005-02-24 | 1694 | 10.88d | 0d |  |  |  |
| 1696 | 21.1.1.6 | Check List 4 | 1d? | 2005-02-25 | 2005-02-25 | 1695 | 10.88d | 0d |  |  |  |
| 1697 | 21.1.1.7 | Render Geometry | 1d? | 2005-02-26 | 2005-02-26 | 1696 | 10.88d | 0d |  |  |  |
| 1698 | 21.1.1.8 | Grass | 1d? | 2005-02-28 | 2005-02-28 | 1697 | 10.88d | 0d |  |  |  |
| 1699 | 21.1.1.9 | AI Maps | 1d? | 2005-03-01 | 2005-03-01 | 1698 | 10.88d | 0d |  |  |  |
| 1700 | 21.1.1.10 | Graphs | 1d? | 2005-03-02 | 2005-03-02 | 1699 | 10.88d |  |  |  |  |
| 1702 | 21.2 | **GameDesign** | 3d? | 2005-02-18 | 2005-02-21 |  | 45.88d |  |  |  |  |
| 1703 | 21.2.1 | **Secrets** | 3d? | 2005-02-18 | 2005-02-21 |  | 45.88d |  |  |  |  |
| 1704 | 21.2.1.1 | **Stage 1** | 3d? | 2005-02-18 | 2005-02-21 |  | 45.88d |  |  |  |  |
| 1705 | 21.2.1.1.1 | Design | 1d? | 2005-02-18 | 2005-02-18 |  | 45.88d | 0d |  |  |  |
| 1706 | 21.2.1.1.2 | Implementation | 1d? | 2005-02-19 | 2005-02-19 | 1705 | 45.88d | 0d |  |  |  |
| 1707 | 21.2.1.1.3 | Tuning | 1d? | 2005-02-21 | 2005-02-21 | 1706 | 45.88d |  |  |  |  |

| ID | WBS | Task | Duration | Start | Finish | Predecessors | Total slack | Free slack |
| --- | --- | --- | --- | --- | --- | --- | --- | --- |
| 1708 | 21.2.2 | **Smartterrains** | 3d? | 2005-02-18 | 2005-02-21 |  | 45.88d |  |
| 1709 | 21.2.2.1 | **Stage 1** | 3d? | 2005-02-18 | 2005-02-21 |  | 45.88d |  |
| 1710 | 21.2.2.1.1 | Design | 1d? | 2005-02-18 | 2005-02-18 |  | 45.88d | 0d |
| 1711 | 21.2.2.1.2 | Implementation | 1d? | 2005-02-19 | 2005-02-19 | 1710 | 45.88d | 0d |
| 1712 | 21.2.2.1.3 | Tuning | 1d? | 2005-02-21 | 2005-02-21 | 1711 | 45.88d |  |
| 1713 | 21.2.3 | **Monsters/Spawns** | 3d? | 2005-02-18 | 2005-02-21 |  | 45.88d |  |
| 1714 | 21.2.3.1 | **Stage 1** | 3d? | 2005-02-18 | 2005-02-21 |  | 45.88d |  |
| 1715 | 21.2.3.1.1 | Design | 1d? | 2005-02-18 | 2005-02-18 |  | 45.88d | 0d |
| 1716 | 21.2.3.1.2 | Implementation | 1d? | 2005-02-19 | 2005-02-19 | 1715 | 45.88d | 0d |
| 1717 | 21.2.3.1.3 | Tuning | 1d? | 2005-02-21 | 2005-02-21 | 1716 | 45.88d |  |
| 1718 | 21.2.4 | **Stalkers/Spawns** | 3d? | 2005-02-18 | 2005-02-21 |  | 45.88d |  |
| 1719 | 21.2.4.1 | **Stage 1** | 3d? | 2005-02-18 | 2005-02-21 |  | 45.88d |  |
| 1720 | 21.2.4.1.1 | Design | 1d? | 2005-02-18 | 2005-02-18 |  | 45.88d | 0d |
| 1721 | 21.2.4.1.2 | Implementation | 1d? | 2005-02-19 | 2005-02-19 | 1720 | 45.88d | 0d |
| 1722 | 21.2.4.1.3 | Tuning | 1d? | 2005-02-21 | 2005-02-21 | 1721 | 45.88d |  |
| 1723 | 21.2.5 | **Anomalies/Spawns** | 3d? | 2005-02-18 | 2005-02-21 |  | 45.88d |  |
| 1724 | 21.2.5.1 | **Stage 1** | 3d? | 2005-02-18 | 2005-02-21 |  | 45.88d |  |
| 1725 | 21.2.5.1.1 | Design | 1d? | 2005-02-18 | 2005-02-18 |  | 45.88d | 0d |
| 1726 | 21.2.5.1.2 | Implementation | 1d? | 2005-02-19 | 2005-02-19 | 1725 | 45.88d | 0d |
| 1727 | 21.2.5.1.3 | Tuning | 1d? | 2005-02-21 | 2005-02-21 | 1726 | 45.88d |  |
| 1728 | 21.2.6 | **Physicks** | 3d? | 2005-02-18 | 2005-02-21 |  | 45.88d |  |
| 1729 | 21.2.6.1 | **Stage 1** | 3d? | 2005-02-18 | 2005-02-21 |  | 45.88d |  |
| 1730 | 21.2.6.1.1 | Design | 1d? | 2005-02-18 | 2005-02-18 |  | 45.88d | 0d |
| 1731 | 21.2.6.1.2 | Implementation | 1d? | 2005-02-19 | 2005-02-19 | 1730 | 45.88d | 0d |
| 1732 | 21.2.6.1.3 | Tuning | 1d? | 2005-02-21 | 2005-02-21 | 1731 | 45.88d |  |

| ID | WBS | Task | Duration | Start | Finish | Predecessors | Total slack | Free slack |
| --- | --- | --- | --- | --- | --- | --- | --- | --- |
| 1734 | 21.3 | **Scripts** | 5d? | 2005-02-18 | 2005-02-23 |  | 43.88d |  |
| 1735 | 21.3.1 | **Script 1** | 5d? | 2005-02-18 | 2005-02-23 |  | 43.88d |  |
| 1736 | 21.3.1.1 | Scenario(text) | 1d? | 2005-02-18 | 2005-02-18 |  | 43.88d | 0d |
| 1737 | 21.3.1.2 | Постановка задач | 1d? | 2005-02-19 | 2005-02-19 | 1736 | 43.88d | 0d |
| 1738 | 21.3.1.3 | Implimentation | 1d? | 2005-02-21 | 2005-02-21 | 1737 | 43.88d | 0d |
| 1739 | 21.3.1.4 | Dilogs/VO/Icons/Objects/Animations | 1d? | 2005-02-22 | 2005-02-22 | 1738 | 43.88d | 0d |
| 1740 | 21.3.1.5 | Настройка | 1d? | 2005-02-23 | 2005-02-23 | 1739 | 43.88d |  |
| 1741 | 21.3.2 | **Script 2** | 5d? | 2005-02-18 | 2005-02-23 |  | 43.88d |  |
| 1742 | 21.3.2.1 | Scenario(text) | 1d? | 2005-02-18 | 2005-02-18 |  | 43.88d | 0d |
| 1743 | 21.3.2.2 | Постановка задач | 1d? | 2005-02-19 | 2005-02-19 | 1742 | 43.88d | 0d |
| 1744 | 21.3.2.3 | Implimentation | 1d? | 2005-02-21 | 2005-02-21 | 1743 | 43.88d | 0d |
| 1745 | 21.3.2.4 | Dilogs/VO/Icons/Objects/Animations | 1d? | 2005-02-22 | 2005-02-22 | 1744 | 43.88d | 0d |
| 1746 | 21.3.2.5 | Настройка | 1d? | 2005-02-23 | 2005-02-23 | 1745 | 43.88d |  |
| 1747 | 21.3.3 | **Script 3** | 5d? | 2005-02-18 | 2005-02-23 |  | 43.88d |  |
| 1748 | 21.3.3.1 | Scenario(text) | 1d? | 2005-02-18 | 2005-02-18 |  | 43.88d | 0d |
| 1749 | 21.3.3.2 | Постановка задач | 1d? | 2005-02-19 | 2005-02-19 | 1748 | 43.88d | 0d |
| 1750 | 21.3.3.3 | Implimentation | 1d? | 2005-02-21 | 2005-02-21 | 1749 | 43.88d | 0d |
| 1751 | 21.3.3.4 | Dilogs/VO/Icons/Objects/Animations | 1d? | 2005-02-22 | 2005-02-22 | 1750 | 43.88d | 0d |
| 1752 | 21.3.3.5 | Настройка | 1d? | 2005-02-23 | 2005-02-23 | 1751 | 43.88d |  |
| 1753 | 21.3.4 | **Script 4** | 5d? | 2005-02-18 | 2005-02-23 |  | 43.88d |  |
| 1754 | 21.3.4.1 | Scenario(text) | 1d? | 2005-02-18 | 2005-02-18 |  | 43.88d | 0d |
| 1755 | 21.3.4.2 | Постановка задач | 1d? | 2005-02-19 | 2005-02-19 | 1754 | 43.88d | 0d |
| 1756 | 21.3.4.3 | Implimentation | 1d? | 2005-02-21 | 2005-02-21 | 1755 | 43.88d | 0d |
| 1757 | 21.3.4.4 | Dilogs/VO/Icons/Objects/Animations | 1d? | 2005-02-22 | 2005-02-22 | 1756 | 43.88d | 0d |
| 1758 | 21.3.4.5 | Настройка | 1d? | 2005-02-23 | 2005-02-23 | 1757 | 43.88d |  |

| ID | WBS | Task | Duration | Start | Finish | Predecessors | Total slack | Free slack |
| --- | --- | --- | --- | --- | --- | --- | --- | --- |
| 1759 | 21.3.5 | **Script 5** | 5d? | 2005-02-18 | 2005-02-23 |  | 43.88d |  |
| 1760 | 21.3.5.1 | Scenario(text) | 1d? | 2005-02-18 | 2005-02-18 |  | 43.88d | 0d |
| 1761 | 21.3.5.2 | Постановка задач | 1d? | 2005-02-19 | 2005-02-19 | 1760 | 43.88d | 0d |
| 1762 | 21.3.5.3 | Implimentation | 1d? | 2005-02-21 | 2005-02-21 | 1761 | 43.88d | 0d |
| 1763 | 21.3.5.4 | Dilogs/VO/Icons/Objects/Animations | 1d? | 2005-02-22 | 2005-02-22 | 1762 | 43.88d | 0d |
| 1764 | 21.3.5.5 | Настройка | 1d? | 2005-02-23 | 2005-02-23 | 1763 | 43.88d |  |
| 1779 | 22 | **21_Generators** | 11d? | 2005-01-24 | 2005-02-04 |  | 44d |  |
| 1780 | 22.1 | **LevelDesign** | 11d? | 2005-01-24 | 2005-02-04 |  | 44d |  |
| 1781 | 22.1.1 | **Stage 1** | 11d? | 2005-01-24 | 2005-02-04 |  | 44d |  |
| 1782 | 22.1.1.1 | List of Changes | 2d | 2005-01-24 | 2005-01-25 |  | 44d | 0d |
| 1783 | 22.1.1.2 | Changed Geometry | 1d? | 2005-01-26 | 2005-01-26 | 1782 | 44d | 0d |
| 1784 | 22.1.1.3 | Check List 1 | 1d? | 2005-01-27 | 2005-01-27 | 1783 | 44d | 0d |
| 1785 | 22.1.1.4 | Check List 2 | 1d? | 2005-01-28 | 2005-01-28 | 1784 | 44d | 0d |
| 1786 | 22.1.1.5 | Check List 3 | 1d? | 2005-01-29 | 2005-01-29 | 1785 | 44d | 0d |
| 1787 | 22.1.1.6 | Check List 4 | 1d? | 2005-01-31 | 2005-01-31 | 1786 | 44d | 0d |
| 1788 | 22.1.1.7 | Render Geometry | 1d? | 2005-02-01 | 2005-02-01 | 1787 | 44d | 0d |
| 1789 | 22.1.1.8 | Grass | 1d? | 2005-02-02 | 2005-02-02 | 1788 | 44d | 0d |
| 1790 | 22.1.1.9 | AI Maps | 1d? | 2005-02-03 | 2005-02-03 | 1789 | 44d | 0d |
| 1791 | 22.1.1.10 | Graphs | 1d? | 2005-02-04 | 2005-02-04 | 1790 | 44d |  |
| 1793 | 22.2 | **GameDesign** | 3d? | 2005-01-24 | 2005-01-26 |  | 52d |  |
| 1794 | 22.2.1 | **Secrets** | 3d? | 2005-01-24 | 2005-01-26 |  | 52d |  |
| 1795 | 22.2.1.1 | **Stage 1** | 3d? | 2005-01-24 | 2005-01-26 |  | 52d |  |
| 1796 | 22.2.1.1.1 | Design | 1d? | 2005-01-24 | 2005-01-24 |  | 52d | 0d |
| 1797 | 22.2.1.1.2 | Implementation | 1d? | 2005-01-25 | 2005-01-25 | 1796 | 52d | 0d |
| 1798 | 22.2.1.1.3 | Tuning | 1d? | 2005-01-26 | 2005-01-26 | 1797 | 52d |  |

| ID | WBS | Task | Duration | Start | Finish | Predecessors | Total slack | Free slack |
| --- | --- | --- | --- | --- | --- | --- | --- | --- |
| 1799 | 22.2.2 | **Smartterrains** | 3d? | 2005-01-24 | 2005-01-26 |  | 52d |  |
| 1800 | 22.2.2.1 | **Stage 1** | 3d? | 2005-01-24 | 2005-01-26 |  | 52d |  |
| 1801 | 22.2.2.1.1 | Design | 1d? | 2005-01-24 | 2005-01-24 |  | 52d | 0d |
| 1802 | 22.2.2.1.2 | Implementation | 1d? | 2005-01-25 | 2005-01-25 | 1801 | 52d | 0d |
| 1803 | 22.2.2.1.3 | Tuning | 1d? | 2005-01-26 | 2005-01-26 | 1802 | 52d |  |
| 1804 | 22.2.3 | **Monsters/Spawns** | 3d? | 2005-01-24 | 2005-01-26 |  | 52d |  |
| 1805 | 22.2.3.1 | **Stage 1** | 3d? | 2005-01-24 | 2005-01-26 |  | 52d |  |
| 1806 | 22.2.3.1.1 | Design | 1d? | 2005-01-24 | 2005-01-24 |  | 52d | 0d |
| 1807 | 22.2.3.1.2 | Implementation | 1d? | 2005-01-25 | 2005-01-25 | 1806 | 52d | 0d |
| 1808 | 22.2.3.1.3 | Tuning | 1d? | 2005-01-26 | 2005-01-26 | 1807 | 52d |  |
| 1809 | 22.2.4 | **Stalkers/Spawns** | 3d? | 2005-01-24 | 2005-01-26 |  | 52d |  |
| 1810 | 22.2.4.1 | **Stage 1** | 3d? | 2005-01-24 | 2005-01-26 |  | 52d |  |
| 1811 | 22.2.4.1.1 | Design | 1d? | 2005-01-24 | 2005-01-24 |  | 52d | 0d |
| 1812 | 22.2.4.1.2 | Implementation | 1d? | 2005-01-25 | 2005-01-25 | 1811 | 52d | 0d |
| 1813 | 22.2.4.1.3 | Tuning | 1d? | 2005-01-26 | 2005-01-26 | 1812 | 52d |  |
| 1814 | 22.2.5 | **Anomalies/Spawns** | 3d? | 2005-01-24 | 2005-01-26 |  | 52d |  |
| 1815 | 22.2.5.1 | **Stage 1** | 3d? | 2005-01-24 | 2005-01-26 |  | 52d |  |
| 1816 | 22.2.5.1.1 | Design | 1d? | 2005-01-24 | 2005-01-24 |  | 52d | 0d |
| 1817 | 22.2.5.1.2 | Implementation | 1d? | 2005-01-25 | 2005-01-25 | 1816 | 52d | 0d |
| 1818 | 22.2.5.1.3 | Tuning | 1d? | 2005-01-26 | 2005-01-26 | 1817 | 52d |  |
| 1819 | 22.2.6 | **Physicks** | 3d? | 2005-01-24 | 2005-01-26 |  | 52d |  |
| 1820 | 22.2.6.1 | **Stage 1** | 3d? | 2005-01-24 | 2005-01-26 |  | 52d |  |
| 1821 | 22.2.6.1.1 | Design | 1d? | 2005-01-24 | 2005-01-24 |  | 52d | 0d |
| 1822 | 22.2.6.1.2 | Implementation | 1d? | 2005-01-25 | 2005-01-25 | 1821 | 52d | 0d |
| 1823 | 22.2.6.1.3 | Tuning | 1d? | 2005-01-26 | 2005-01-26 | 1822 | 52d |  |

| ID | WBS | Task | Duration | Start | Finish | Predecessors | Total slack | Free slack |
| --- | --- | --- | --- | --- | --- | --- | --- | --- |
| 1825 | 22.3 | **Scripts** | 5d? | 2005-01-24 | 2005-01-28 |  | 50d |  |
| 1826 | 22.3.1 | **Script 1** | 5d? | 2005-01-24 | 2005-01-28 |  | 50d |  |
| 1827 | 22.3.1.1 | Scenario(text) | 1d? | 2005-01-24 | 2005-01-24 |  | 50d | 0d |
| 1828 | 22.3.1.2 | Постановка задач | 1d? | 2005-01-25 | 2005-01-25 | 1827 | 50d | 0d |
| 1829 | 22.3.1.3 | Implimentation | 1d? | 2005-01-26 | 2005-01-26 | 1828 | 50d | 0d |
| 1830 | 22.3.1.4 | Dilogs/VO/Icons/Objects/Animations | 1d? | 2005-01-27 | 2005-01-27 | 1829 | 50d | 0d |
| 1831 | 22.3.1.5 | Настройка | 1d? | 2005-01-28 | 2005-01-28 | 1830 | 50d |  |
| 1832 | 22.3.2 | **Script 2** | 5d? | 2005-01-24 | 2005-01-28 |  | 50d |  |
| 1833 | 22.3.2.1 | Scenario(text) | 1d? | 2005-01-24 | 2005-01-24 |  | 50d | 0d |
| 1834 | 22.3.2.2 | Постановка задач | 1d? | 2005-01-25 | 2005-01-25 | 1833 | 50d | 0d |
| 1835 | 22.3.2.3 | Implimentation | 1d? | 2005-01-26 | 2005-01-26 | 1834 | 50d | 0d |
| 1836 | 22.3.2.4 | Dilogs/VO/Icons/Objects/Animations | 1d? | 2005-01-27 | 2005-01-27 | 1835 | 50d | 0d |
| 1837 | 22.3.2.5 | Настройка | 1d? | 2005-01-28 | 2005-01-28 | 1836 | 50d |  |
| 1838 | 22.3.3 | **Script 3** | 5d? | 2005-01-24 | 2005-01-28 |  | 50d |  |
| 1839 | 22.3.3.1 | Scenario(text) | 1d? | 2005-01-24 | 2005-01-24 |  | 50d | 0d |
| 1840 | 22.3.3.2 | Постановка задач | 1d? | 2005-01-25 | 2005-01-25 | 1839 | 50d | 0d |
| 1841 | 22.3.3.3 | Implimentation | 1d? | 2005-01-26 | 2005-01-26 | 1840 | 50d | 0d |
| 1842 | 22.3.3.4 | Dilogs/VO/Icons/Objects/Animations | 1d? | 2005-01-27 | 2005-01-27 | 1841 | 50d | 0d |
| 1843 | 22.3.3.5 | Настройка | 1d? | 2005-01-28 | 2005-01-28 | 1842 | 50d |  |
| 1844 | 22.3.4 | **Script 4** | 5d? | 2005-01-24 | 2005-01-28 |  | 50d |  |
| 1845 | 22.3.4.1 | Scenario(text) | 1d? | 2005-01-24 | 2005-01-24 |  | 50d | 0d |
| 1846 | 22.3.4.2 | Постановка задач | 1d? | 2005-01-25 | 2005-01-25 | 1845 | 50d | 0d |
| 1847 | 22.3.4.3 | Implimentation | 1d? | 2005-01-26 | 2005-01-26 | 1846 | 50d | 0d |
| 1848 | 22.3.4.4 | Dilogs/VO/Icons/Objects/Animations | 1d? | 2005-01-27 | 2005-01-27 | 1847 | 50d | 0d |
| 1849 | 22.3.4.5 | Настройка | 1d? | 2005-01-28 | 2005-01-28 | 1848 | 50d |  |

| ID | WBS | Task | Duration | Start | Finish | Predecessors | Total slack | Free slack |
| --- | --- | --- | --- | --- | --- | --- | --- | --- |
| 1850 | 22.3.5 | **Script 5** | 5d? | 2005-01-24 | 2005-01-28 |  | 50d |  |
| 1851 | 22.3.5.1 | Scenario(text) | 1d? | 2005-01-24 | 2005-01-24 |  | 50d | 0d |
| 1852 | 22.3.5.2 | Постановка задач | 1d? | 2005-01-25 | 2005-01-25 | 1851 | 50d | 0d |
| 1853 | 22.3.5.3 | Implimentation | 1d? | 2005-01-26 | 2005-01-26 | 1852 | 50d | 0d |
| 1854 | 22.3.5.4 | Dilogs/VO/Icons/Objects/Animations | 1d? | 2005-01-27 | 2005-01-27 | 1853 | 50d | 0d |
| 1855 | 22.3.5.5 | Настройка | 1d? | 2005-01-28 | 2005-01-28 | 1854 | 50d |  |
